# Factories Low-process Unit Hafr Al Batin

How a schedule from Primavera P6 changed from version to version. A marks actual dates.

## Version 1 (data date 2025-11-27, saved 2026-09-20, file HFR1-05-003 Baseline.xml)

| ID | WBS | Task | Duration | Start | Finish | Predecessors |
| --- | --- | --- | --- | --- | --- | --- |
|  | 1 | **Project Milestones** |  | 2025-11-27 | 2026-09-26 |  |
|  | 2 | **Project milestones** |  | 2025-11-27 | 2026-09-26 |  |
| HFR1-05-2980 |  | Project Start | 0d | 2025-11-27 | 2025-11-27 |  |
| HFR1-05-2985 |  | Project Finish | 0d | 2026-09-26 | 2026-09-26 | HFR1-05-4720 FF |
|  | 1 | **Contratual milestones** |  | 2025-12-28 | 2026-09-26 |  |
| HFR1-05-7890 |  | Baseline Schedule Approval | 0d | 2025-12-28 | 2025-12-28 | HFR1-05-7900 FF |
| HFR1-05-8890 |  | Completion Mobilization | 0d | 2025-12-28 | 2025-12-28 | HFR1-05-6060, HFR1-05-6050, HFR1-05-6040, HFR1-05-6030, HFR1-05-7910, HFR1-05-6860, HFR1-05-7890, HFR1-05-3110, HFR1-05-5690, HFR1-05-3010, HFR1-05-6850, HFR1-05-3170, HFR1-05-3210, HFR1-05-2930, HFR1-05-2940, HFR1-05-6070, HFR1-05-7900 |
| HFR1-05-2990 |  | Completion of Engneering and Material | 0d | 2026-01-27 | 2026-01-27 | HFR1-05-8850 FF, HFR1-05-8830 FF, HFR1-05-7530 FF, HFR1-05-8790 FF, HFR1-05-8810 FF, HFR1-05-8820 FF |
| HFR1-05-3390 |  | Main Buildings Structure Completed | 0d | 2026-05-31 | 2026-05-31 | HFR1-05-1370 FF, HFR1-05-1380 FF, HFR1-05-1390 FF, HFR1-05-1400 FF, HFR1-05-1410 FF, HFR1-05-1420 FF, HFR1-05-2540, HFR1-05-2480, HFR1-05-2460, HFR1-05-2500, HFR1-05-2490, HFR1-05-2450 |
| HFR1-05-4380 |  | Procurement Complete | 0d | 2026-07-22 | 2026-07-22 | HFR1-05-5760 FF |
| HFR1-05-4620 |  | Main Buildings Architectural Completed | 0d | 2026-07-22 | 2026-07-22 | HFR1-05-2790, HFR1-05-3390, HFR1-05-4380, HFR1-05-2790 FF |
| HFR1-05-4400 |  | Mosque Works Completed | 0d | 2026-07-27 | 2026-07-27 | HFR1-05-4360 FF, HFR1-05-9750, HFR1-05-9720, HFR1-05-4020, HFR1-05-3950, HFR1-05-4120, HFR1-05-4130, HFR1-05-3490, HFR1-05-3860, HFR1-05-4230, HFR1-05-4240, HFR1-05-4220, HFR1-05-3870, HFR1-05-3520, HFR1-05-4180, HFR1-05-3970, HFR1-05-4090, HFR1-05-4070, HFR1-05-4000, HFR1-05-4160, HFR1-05-4080, HFR1-05-3640, HFR1-05-3760, HFR1-05-3710, HFR1-05-4010, HFR1-05-3880, HFR1-05-3890, HFR1-05-3720, HFR1-05-3770, HFR1-05-4280, HFR1-05-4350, HFR1-05-4170, HFR1-05-4270, HFR1-05-4300, HFR1-05-4250, HFR1-05-4360, HFR1-05-4290, HFR1-05-4340, HFR1-05-3830, HFR1-05-3930, HFR1-05-2280, HFR1-05-2290, HFR1-05-2320, HFR1-05-2300, HFR1-05-2310, HFR1-05-9610, HFR1-05-9600, HFR1-05-9590, HFR1-05-3390, HFR1-05-4380, HFR1-05-9670 FF, HFR1-05-3370 FF |
| HFR1-05-4590 |  | Site Works & External Networks Completed | 0d | 2026-09-12 | 2026-09-12 | HFR1-05-4550 FF, HFR1-05-4550 SF, HFR1-05-4480 FF, HFR1-05-3780, HFR1-05-3390, HFR1-05-4480, HFR1-05-4570, HFR1-05-1910, HFR1-05-1900, HFR1-05-4380, HFR1-05-3060, HFR1-05-3070, HFR1-05-3450, HFR1-05-3140, HFR1-05-3150, HFR1-05-3320, HFR1-05-3410, HFR1-05-3330, HFR1-05-3510, HFR1-05-3530, HFR1-05-3590, HFR1-05-3600, HFR1-05-3620, HFR1-05-3800, HFR1-05-4150, HFR1-05-3680, HFR1-05-3740, HFR1-05-3420, HFR1-05-3470, HFR1-05-4200, HFR1-05-3820, HFR1-05-3940, HFR1-05-4110, HFR1-05-4190 |
| HFR1-05-4650 |  | Main Buildings MEP Completed | 0d | 2026-09-26 | 2026-09-26 | HFR1-05-1800 FF, HFR1-05-2910 FF, HFR1-05-2100 FF, HFR1-05-3830, HFR1-05-3930, HFR1-05-3650, HFR1-05-4040, HFR1-05-4050, HFR1-05-4310, HFR1-05-3660, HFR1-05-3730, HFR1-05-3790, HFR1-05-3560, HFR1-05-3780, HFR1-05-3910, HFR1-05-3840, HFR1-05-4030, HFR1-05-3060, HFR1-05-3070, HFR1-05-3450, HFR1-05-3140, HFR1-05-3150, HFR1-05-3320, HFR1-05-3410, HFR1-05-3330, HFR1-05-3510, HFR1-05-3530, HFR1-05-3590, HFR1-05-3600, HFR1-05-3620, HFR1-05-3800, HFR1-05-4150, HFR1-05-3680, HFR1-05-3740, HFR1-05-3420, HFR1-05-3470, HFR1-05-4200, HFR1-05-3390, HFR1-05-4380 |
| HFR1-05-4660 |  | All Testing & Commissioning Completed | 0d | 2026-09-26 | 2026-09-26 | HFR1-05-4420 FF, HFR1-05-4430 FF, HFR1-05-4600 FF, HFR1-05-4630 FF, HFR1-05-9600, HFR1-05-4030, HFR1-05-4040, HFR1-05-4310, HFR1-05-4200, HFR1-05-4540, HFR1-05-3740, HFR1-05-4420, HFR1-05-4630, HFR1-05-3390, HFR1-05-4620, HFR1-05-4400 |
| HFR1-05-4670 |  | Substantial Completion (Ready for Handing Over) | 0d | 2026-09-26 | 2026-09-26 | HFR1-05-4700 FF, HFR1-05-4690 FF, HFR1-05-4680 FF, HFR1-05-3830, HFR1-05-3930, HFR1-05-4540, HFR1-05-3140, HFR1-05-3150, HFR1-05-3410, HFR1-05-3450, HFR1-05-4150, HFR1-05-3740, HFR1-05-4420, HFR1-05-4630, HFR1-05-2990 |
| HFR1-05-4720 |  | Completion Milestone | 0d | 2026-09-26 | 2026-09-26 | HFR1-05-4700 FF, HFR1-05-4690 FF, HFR1-05-4680 FF, HFR1-05-2500, HFR1-05-4540, HFR1-05-3740, HFR1-05-4420, HFR1-05-4630, HFR1-05-4670, HFR1-05-3390, HFR1-05-4590, HFR1-05-4650, HFR1-05-4620, HFR1-05-4660, HFR1-05-4400, HFR1-05-3050, HFR1-05-3270, HFR1-05-4570, HFR1-05-1250, HFR1-05-2990, HFR1-05-8890, HFR1-05-1950, HFR1-05-4700 |
|  | 6 | **Mobilization** |  | 2025-11-27 | 2025-12-28 |  |
|  | 1 | **Site Facilities & Offices** |  | 2025-11-27 | 2025-12-28 |  |
| HFR1-05-3110 |  | Mobilzation Equpment and Manpower | 8d | 2025-11-27 | 2025-12-06 | HFR1-05-2980 SS |
| HFR1-05-5690 |  | Installation of Site Offices | 8d | 2025-12-07 | 2025-12-15 | HFR1-05-3110 |
| HFR1-05-7910 |  | Setup of Stores / Warehouses | 12d | 2025-12-15 | 2025-12-28 | HFR1-05-6070 |
| HFR1-05-6860 |  | Temporary Power Supply -Water Supply & Piping | 8d | 2025-12-16 | 2025-12-24 | HFR1-05-5690 |
|  | 2 | **Premilinary Submittals** |  | 2025-11-27 | 2025-12-21 |  |
| HFR1-05-2930 |  | Preparation & Submittal of Quality Control Plan | 9d | 2025-11-27 | 2025-12-07 | HFR1-05-2980 SS |
| HFR1-05-2940 |  | Preparation & Submittal of Master Layout / Site Layout | 9d | 2025-11-27 | 2025-12-07 | HFR1-05-2980 SS |
| HFR1-05-3010 |  | Preparation & Submittal of Staff Plan | 9d | 2025-11-27 | 2025-12-07 | HFR1-05-2980 SS |
| HFR1-05-3170 |  | Preparation & Submittal of Risk Plan | 9d | 2025-11-27 | 2025-12-07 | HFR1-05-2980 SS |
| HFR1-05-3210 |  | Preparation & Submittal of Project Execution Plan | 9d | 2025-11-27 | 2025-12-07 | HFR1-05-2980 SS |
| HFR1-05-6850 |  | Preparation & Submittal of Baseline Schedule | 12d | 2025-12-08 | 2025-12-21 | HFR1-05-2930, HFR1-05-2980 SS |
|  | 3 | **Premilinary Approvals** |  | 2025-12-08 | 2025-12-28 |  |
| HFR1-05-6030 |  | Approval of Risk Plan | 6d | 2025-12-08 | 2025-12-14 | HFR1-05-3170 |
| HFR1-05-6040 |  | Approval of Project Execution Plan | 6d | 2025-12-08 | 2025-12-14 | HFR1-05-3210 |
| HFR1-05-6050 |  | Approval of Quality Control Plan | 6d | 2025-12-08 | 2025-12-14 | HFR1-05-2930 |
| HFR1-05-6060 |  | Approval of Master Layout / Site Layout | 6d | 2025-12-08 | 2025-12-14 | HFR1-05-2940 |
| HFR1-05-6070 |  | Approval of Staff Plan | 6d | 2025-12-08 | 2025-12-14 | HFR1-05-3010 |
| HFR1-05-7900 |  | Approval of Baseline schedule | 6d | 2025-12-22 | 2025-12-28 | HFR1-05-6850 |
|  | 4 | **Engineering** |  | 2025-12-07 | 2026-01-28 |  |
|  | 2 | **Shop Drawings** |  | 2025-12-07 | 2025-12-29 |  |
|  | 1 | **Shop Drawings Submittal** |  | 2025-12-07 | 2025-12-17 |  |
|  | 1 | **Shop Drawings Submittal for Road Works** |  | 2025-12-07 | 2025-12-17 |  |
| HFR1-05-3220 |  | Shop DWG Submittal for Topographic Survey | 10d | 2025-12-07 | 2025-12-17 | HFR1-05-3110, HFR1-05-2980 SS |
| HFR1-05-6080 |  | Shop DWG Submittal for Road Layout Plan | 10d | 2025-12-07 | 2025-12-17 | HFR1-05-2980 SS, HFR1-05-3110 |
| HFR1-05-6090 |  | Shop DWG Submittal for Typical Cross Section | 10d | 2025-12-07 | 2025-12-17 | HFR1-05-2980 SS, HFR1-05-3110 |
| HFR1-05-6100 |  | Shop DWG Submittal for Road Setting Out | 10d | 2025-12-07 | 2025-12-17 | HFR1-05-2980 SS, HFR1-05-3110 |
| HFR1-05-6110 |  | Shop DWG Submittal for Road Profiles | 10d | 2025-12-07 | 2025-12-17 | HFR1-05-2980 SS, HFR1-05-3110 |
| HFR1-05-6120 |  | Shop DWG Submittal for Grading Layout Plan | 10d | 2025-12-07 | 2025-12-17 | HFR1-05-2980 SS, HFR1-05-3110 |
| HFR1-05-6130 |  | Shop DWG Submittal for Curb Setting Out Points | 10d | 2025-12-07 | 2025-12-17 | HFR1-05-2980 SS, HFR1-05-3110 |
| HFR1-05-6140 |  | Shop DWG Submittal for Signing & Marking Layout Plan | 10d | 2025-12-07 | 2025-12-17 | HFR1-05-2980 SS, HFR1-05-3110 |
| HFR1-05-6150 |  | Shop DWG Submittal for Standards Details | 10d | 2025-12-07 | 2025-12-17 | HFR1-05-2980 SS, HFR1-05-3110 |
|  | 3 | **Shop Drawings Submittal for Potable Water Network** |  | 2025-12-07 | 2025-12-17 |  |
| HFR1-05-6210 |  | Shop DWG Submittal for Potable Water Plans | 10d | 2025-12-07 | 2025-12-17 | HFR1-05-3110 |
| HFR1-05-7830 |  | Shop DWG Submittal for Potable Water Profiles | 10d | 2025-12-07 | 2025-12-17 | HFR1-05-3110 |
| HFR1-05-7840 |  | Shop DWG Submittal for Potable Water Standard Details | 10d | 2025-12-07 | 2025-12-17 | HFR1-05-3110 |
|  | 7 | **Shop Drawings Submittal for Sewer Water Network** |  | 2025-12-07 | 2025-12-17 |  |
| HFR1-05-6220 |  | Shop DWG Submittal for Sewer Network Plans | 10d | 2025-12-07 | 2025-12-17 | HFR1-05-3110 |
| HFR1-05-7850 |  | Shop DWG Submittal for Sewer Network Profiles | 10d | 2025-12-07 | 2025-12-17 | HFR1-05-3110 |
| HFR1-05-7860 |  | Shop DWG Submittal for Sewer Network Standard Details | 10d | 2025-12-07 | 2025-12-17 | HFR1-05-3110 |
|  | 10 | **Shop Drawings Submittal for Earthing System** |  | 2025-12-07 | 2025-12-17 |  |
| HFR1-05-7620 |  | Shop DWG Submittal for Earthing System | 10d | 2025-12-07 | 2025-12-17 | HFR1-05-3110 |
|  | 11 | **Shop Drawings Submittal for Road Lighting** |  | 2025-12-07 | 2025-12-17 |  |
| HFR1-05-7630 |  | Shop DWG Submittal for Street Lighting General Arrangement | 10d | 2025-12-07 | 2025-12-17 | HFR1-05-3110 |
| HFR1-05-7640 |  | Shop DWG Submittal for Street Lighting Network Layout | 10d | 2025-12-07 | 2025-12-17 | HFR1-05-3110 |
| HFR1-05-7650 |  | Shop DWG Submittal for Street Lighting Details | 10d | 2025-12-07 | 2025-12-17 | HFR1-05-3110 |
| HFR1-05-7660 |  | Shop DWG Submittal for Street Lighting Single Line Diagram | 10d | 2025-12-07 | 2025-12-17 | HFR1-05-3110 |
|  | 12 | **Shop Drawings Submittal for Hungers** |  | 2025-12-07 | 2025-12-17 |  |
| HFR1-05-7790 |  | Shop DWG Submittal for the Hungers - Civil Works | 10d | 2025-12-07 | 2025-12-17 | HFR1-05-3110 |
| HFR1-05-7800 |  | Shop DWG Submittal for the Hungers - Mechanical Works | 10d | 2025-12-07 | 2025-12-17 | HFR1-05-3110 |
| HFR1-05-7810 |  | Shop DWG Submittal for the Hungers - Finishing Works | 10d | 2025-12-07 | 2025-12-17 | HFR1-05-3110 |
| HFR1-05-7820 |  | Shop DWG Submittal for the Hungers - Electrical Works | 10d | 2025-12-07 | 2025-12-17 | HFR1-05-3110 |

| ID | WBS | Task | Duration | Start | Finish | Predecessors |
| --- | --- | --- | --- | --- | --- | --- |
|  | 9 | **Shop Drawings Submittal for Prayer Room** |  | 2025-12-07 | 2025-12-17 |  |
| HFR1-05-7750 |  | Shop DWG Submittal for the Prayer Room - Civil Works | 10d | 2025-12-07 | 2025-12-17 | HFR1-05-3110 |
| HFR1-05-7760 |  | Shop DWG Submittal for the Prayer Room - Mechanical Works | 10d | 2025-12-07 | 2025-12-17 | HFR1-05-3110 |
| HFR1-05-7770 |  | Shop DWG Submittal for the Prayer Room - Finishing Works | 10d | 2025-12-07 | 2025-12-17 | HFR1-05-3110 |
| HFR1-05-7780 |  | Shop DWG Submittal for the Prayer Room - Electrical Works | 10d | 2025-12-07 | 2025-12-17 | HFR1-05-3110 |
|  | 6 | **Shop Drawings Submittal for Septic Tank** |  | 2025-12-07 | 2025-12-17 |  |
| HFR1-05-7710 |  | Shop DWG Submittal for the Septic Tank - Civil Works | 10d | 2025-12-07 | 2025-12-17 | HFR1-05-3110 |
| HFR1-05-7720 |  | Shop DWG Submittal for the Septic Tank - Mechanical Works | 10d | 2025-12-07 | 2025-12-17 | HFR1-05-3110 |
| HFR1-05-7730 |  | Shop DWG Submittal for the Septic Tank - Finishing Works | 10d | 2025-12-07 | 2025-12-17 | HFR1-05-3110 |
| HFR1-05-7740 |  | Shop DWG Submittal for the Septic Tank - Electrical Works | 10d | 2025-12-07 | 2025-12-17 | HFR1-05-3110 |
|  | 5 | **Shop Drawings Submittal for GRB Tank** |  | 2025-12-07 | 2025-12-17 |  |
| HFR1-05-7670 |  | Shop DWG Submittal for the GRB - Civil Works | 10d | 2025-12-07 | 2025-12-17 | HFR1-05-3110 |
| HFR1-05-7680 |  | Shop DWG Submittal for the GRB - Mechanical Works | 10d | 2025-12-07 | 2025-12-17 | HFR1-05-3110 |
| HFR1-05-7690 |  | Shop DWG Submittal for the GRB - Finishing Works | 10d | 2025-12-07 | 2025-12-17 | HFR1-05-3110 |
| HFR1-05-7700 |  | Shop DWG Submittal for the GRB - Electrical Works | 10d | 2025-12-07 | 2025-12-17 | HFR1-05-3110 |
|  | 4 | **Shop Drawings Submittal for Pump Room** |  | 2025-12-07 | 2025-12-15 |  |
| HFR1-05-8580 |  | Shop DWG Submittal for the Pump - Civil Works | 8d | 2025-12-07 | 2025-12-15 | HFR1-05-3110 |
| HFR1-05-8590 |  | Shop DWG Submittal for the Pump - Mechanical Works | 8d | 2025-12-07 | 2025-12-15 | HFR1-05-3110 |
| HFR1-05-8600 |  | Shop DWG Submittal for the Pump - Finishing Works | 8d | 2025-12-07 | 2025-12-15 | HFR1-05-3110 |
| HFR1-05-8610 |  | Shop DWG Submittal for the Pump - Electrical Works | 8d | 2025-12-07 | 2025-12-15 | HFR1-05-3110 |
|  | 2 | **Shop Drawings Approval** |  | 2025-12-16 | 2025-12-29 |  |
|  | 1 | **Shop Drawings Approval for Road Works** |  | 2025-12-18 | 2025-12-29 |  |
| HFR1-05-6160 |  | Shop DWG Approval for Topographic Survey | 10d | 2025-12-18 | 2025-12-29 | HFR1-05-3220 |
| HFR1-05-7540 |  | Shop DWG Approval for Road Layout Plan | 7d | 2025-12-18 | 2025-12-25 | HFR1-05-6080 |
| HFR1-05-7550 |  | Shop DWG Approval for Typical Cross Section | 7d | 2025-12-18 | 2025-12-25 | HFR1-05-6090 |
| HFR1-05-7560 |  | Shop DWG Approval for Road Setting Out | 7d | 2025-12-18 | 2025-12-25 | HFR1-05-6100 |
| HFR1-05-7570 |  | Shop DWG Approval for Road Profiles | 7d | 2025-12-18 | 2025-12-25 | HFR1-05-6110 |
| HFR1-05-7580 |  | Shop DWG Approval for Grading Layout Plan | 7d | 2025-12-18 | 2025-12-25 | HFR1-05-6120 |
| HFR1-05-7590 |  | Shop DWG Approval for Curb Setting Out Points | 7d | 2025-12-18 | 2025-12-25 | HFR1-05-6130 |
| HFR1-05-7600 |  | Shop DWG Approval for Signing & Marking Layout Plan | 7d | 2025-12-18 | 2025-12-25 | HFR1-05-6140 |
| HFR1-05-7610 |  | Shop DWG Approval for Standards Details | 7d | 2025-12-18 | 2025-12-25 | HFR1-05-6150 |
|  | 9 | **Shop Drawings Submittal for Potable Water Network** |  | 2025-12-18 | 2025-12-29 |  |
| HFR1-05-7870 |  | Shop DWG Approval for Potable Water Plans | 10d | 2025-12-18 | 2025-12-29 | HFR1-05-6210 |
| HFR1-05-8820 |  | Shop DWG Approval for Potable Water Profiles | 10d | 2025-12-18 | 2025-12-29 | HFR1-05-7830 |
| HFR1-05-8830 |  | Shop DWG Approval for Potable Water Standard Details | 10d | 2025-12-18 | 2025-12-29 | HFR1-05-7840 |
|  | 12 | **Shop Drawings Submittal for Sewer Water Network** |  | 2025-12-18 | 2025-12-29 |  |
| HFR1-05-7880 |  | Shop DWG Approval for Sewer Network Plans | 10d | 2025-12-18 | 2025-12-29 | HFR1-05-6220 |
| HFR1-05-8840 |  | Shop DWG Approval for Sewer Network Profiles | 10d | 2025-12-18 | 2025-12-29 | HFR1-05-7850 |
| HFR1-05-8850 |  | Shop DWG Approval for Sewer Network Standard Details | 10d | 2025-12-18 | 2025-12-29 | HFR1-05-7860 |
|  | 10 | **Shop Drawings Approval for Earthing System** |  | 2025-12-18 | 2025-12-25 |  |
| HFR1-05-8490 |  | Shop DWG Approval for Earthing System By SEC | 7d | 2025-12-18 | 2025-12-25 | HFR1-05-7620 |
|  | 11 | **Shop Drawings Approval for Road Lighting** |  | 2025-12-18 | 2025-12-25 |  |
| HFR1-05-8500 |  | Shop DWG Approval for Street Lighting General Arrangement By SEC | 7d | 2025-12-18 | 2025-12-25 | HFR1-05-7630 |
| HFR1-05-8510 |  | Shop DWG Approval for Street Lighting Network Layout By SEC | 7d | 2025-12-18 | 2025-12-25 | HFR1-05-7640 |
| HFR1-05-8520 |  | Shop DWG Approval for Street Lighting Details By SEC | 7d | 2025-12-18 | 2025-12-25 | HFR1-05-7650 |
| HFR1-05-8530 |  | Shop DWG Approval for Street Lighting Single Line Diagram By SEC | 7d | 2025-12-18 | 2025-12-25 | HFR1-05-7660 |
|  | 6 | **Shop Drawings Approval for Hungers** |  | 2025-12-18 | 2025-12-25 |  |
| HFR1-05-8700 |  | Shop DWG Approval for the Hungers - Civil Works | 7d | 2025-12-18 | 2025-12-25 | HFR1-05-7790 |
| HFR1-05-8710 |  | Shop DWG Approval for the Hungers - Mechanical Works | 7d | 2025-12-18 | 2025-12-25 | HFR1-05-7800 |
| HFR1-05-8720 |  | Shop DWG Approval for the Hungers - Finishing Works | 7d | 2025-12-18 | 2025-12-25 | HFR1-05-7810 |
| HFR1-05-8730 |  | Shop DWG Approval for the Hungers - Electrical Works | 7d | 2025-12-18 | 2025-12-25 | HFR1-05-7820 |
|  | 5 | **Shop Drawings Approval for Prayer Room** |  | 2025-12-18 | 2025-12-25 |  |
| HFR1-05-8660 |  | Shop DWG Approval for the Prayer Room - Civil Works | 7d | 2025-12-18 | 2025-12-25 | HFR1-05-7750 |
| HFR1-05-8670 |  | Shop DWG Approval for the Prayer Room - Mechanical Works | 7d | 2025-12-18 | 2025-12-25 | HFR1-05-7760 |
| HFR1-05-8680 |  | Shop DWG Approval for the Prayer Room - Finishing Works | 7d | 2025-12-18 | 2025-12-25 | HFR1-05-7770 |
| HFR1-05-8690 |  | Shop DWG Approval for the Prayer Room - Electrical Works | 7d | 2025-12-18 | 2025-12-25 | HFR1-05-7780 |
|  | 4 | **Shop Drawings Approval for Septic Tank** |  | 2025-12-18 | 2025-12-25 |  |
| HFR1-05-8620 |  | Shop DWG Approval for the Septic Tank - Civil Works | 7d | 2025-12-18 | 2025-12-25 | HFR1-05-7710 |
| HFR1-05-8630 |  | Shop DWG Approval for the Septic Tank - Mechanical Works | 7d | 2025-12-18 | 2025-12-25 | HFR1-05-7720 |
| HFR1-05-8640 |  | Shop DWG Approval for the Septic Tank - Finishing Works | 7d | 2025-12-18 | 2025-12-25 | HFR1-05-7730 |
| HFR1-05-8650 |  | Shop DWG Approval for the Septic Tank - Electrical Works | 7d | 2025-12-18 | 2025-12-25 | HFR1-05-7740 |
|  | 7 | **Shop Drawings Approval for GRB Tank** |  | 2025-12-18 | 2025-12-25 |  |
| HFR1-05-8540 |  | Shop DWG Approval for the GRB - Civil Works | 7d | 2025-12-18 | 2025-12-25 | HFR1-05-7670 |
| HFR1-05-8550 |  | Shop DWG Approval for the GRB - Mechanical Works | 7d | 2025-12-18 | 2025-12-25 | HFR1-05-7680 |
| HFR1-05-8560 |  | Shop DWG Approval for the GRB - Finishing Works | 7d | 2025-12-18 | 2025-12-25 | HFR1-05-7690 |
| HFR1-05-8570 |  | Shop DWG Approval for the GRB - Electrical Works | 7d | 2025-12-18 | 2025-12-25 | HFR1-05-7700 |
|  | 3 | **Shop Drawings Approval for Pump Room** |  | 2025-12-16 | 2025-12-24 |  |
| HFR1-05-9020 |  | Shop DWG Approval for the Pump Room - Civil Works | 8d | 2025-12-16 | 2025-12-24 | HFR1-05-8580 |
| HFR1-05-9030 |  | Shop DWG Approval for the Pump Room - Mechanical Works | 8d | 2025-12-16 | 2025-12-24 | HFR1-05-8590 |
| HFR1-05-9040 |  | Shop DWG Approval for the Pump Room - Finishing Works | 8d | 2025-12-16 | 2025-12-24 | HFR1-05-8600 |

| ID | WBS | Task | Duration | Start | Finish | Predecessors |
| --- | --- | --- | --- | --- | --- | --- |
| HFR1-05-9050 |  | Shop DWG Approval for the Pump Room - Electrical Works | 8d | 2025-12-16 | 2025-12-24 | HFR1-05-8610 |
|  | 3 | **Method Statements** |  | 2025-12-25 | 2026-01-11 |  |
|  | 1 | **Method Statements Submittal** |  | 2025-12-25 | 2025-12-31 |  |
| HFR1-05-3230 |  | Preparation & Submission of Method Statement for Earthworks | 6d | 2025-12-25 | 2025-12-31 | HFR1-05-9020 |
| HFR1-05-3250 |  | Preparation & Submission of Method Statement for Concrete Works | 6d | 2025-12-25 | 2025-12-31 | HFR1-05-9020 |
| HFR1-05-3260 |  | Preparation & Submission of Method Statement for Waterproofing Works | 6d | 2025-12-25 | 2025-12-31 | HFR1-05-9020 |
| HFR1-05-3280 |  | Preparation & Submission of Method Statement for Asphalt | 6d | 2025-12-25 | 2025-12-31 | HFR1-05-9020 |
| HFR1-05-4970 |  | Preparation & Submission of Method Statement for Epoxy Coating | 6d | 2025-12-25 | 2025-12-31 | HFR1-05-9020 |
| HFR1-05-4980 |  | Preparation & Submission of Method Statement for Metals | 6d | 2025-12-25 | 2025-12-31 | HFR1-05-9020 |
| HFR1-05-4990 |  | Preparation & Submission of Method Statement for Doors & Windows | 6d | 2025-12-25 | 2025-12-31 | HFR1-05-9020, HFR1-05-8610, HFR1-05-7700, HFR1-05-7740, HFR1-05-7780, HFR1-05-7820, HFR1-05-7690 |
|  | 2 | **Method Statements Approval** |  | 2026-01-01 | 2026-01-07 |  |
| HFR1-05-6170 |  | Approval of Method Statement for Earthworks | 6d | 2026-01-01 | 2026-01-07 | HFR1-05-3230 |
| HFR1-05-6180 |  | Approval of Method Statement for Concrete Works | 6d | 2026-01-01 | 2026-01-07 | HFR1-05-3250 |
| HFR1-05-6190 |  | Approval of Method Statement for Waterproofing Works | 6d | 2026-01-01 | 2026-01-07 | HFR1-05-3260 |
| HFR1-05-6200 |  | Approval of Method Statement for Asphalt | 6d | 2026-01-01 | 2026-01-07 | HFR1-05-3280 |
| HFR1-05-6230 |  | Approval of Method Statement for Epoxy Coating | 6d | 2026-01-01 | 2026-01-07 | HFR1-05-4970 |
| HFR1-05-6240 |  | Approval of Method Statement for Metals | 6d | 2026-01-01 | 2026-01-07 | HFR1-05-4980 |
| HFR1-05-6250 |  | Approval of Method Statement for Doors & Windows | 6d | 2026-01-01 | 2026-01-07 | HFR1-05-4990 |
|  | 3 | **Method Statements Staging Time** |  | 2026-01-08 | 2026-01-11 |  |
| HFR1-05-6920 |  | Staging Time of Method Statement for Earthworks | 3d | 2026-01-08 | 2026-01-11 | HFR1-05-6170 |
| HFR1-05-6930 |  | Staging Time of Method Statement for Concrete Works | 3d | 2026-01-08 | 2026-01-11 | HFR1-05-6180 |
| HFR1-05-6940 |  | Staging Time of Method Statement for Waterproofing Works | 3d | 2026-01-08 | 2026-01-11 | HFR1-05-6190 |
| HFR1-05-6950 |  | Staging Time of Method Statement for Asphalt | 3d | 2026-01-08 | 2026-01-11 | HFR1-05-6200 |
| HFR1-05-7510 |  | Staging Time of Method Statement for Epoxy Coating | 3d | 2026-01-08 | 2026-01-11 | HFR1-05-6230 |
| HFR1-05-7520 |  | Staging Time of Method Statement for Metals | 3d | 2026-01-08 | 2026-01-11 | HFR1-05-6240 |
| HFR1-05-7530 |  | Staging Time of Method Statement for Doors & Windows | 3d | 2026-01-08 | 2026-01-11 | HFR1-05-6250 |
|  | 4 | **Pre-qualification and Material** |  | 2025-12-25 | 2026-01-28 |  |
|  | 2 | **Pre-qualification** |  | 2025-12-25 | 2026-01-14 |  |
|  | 1 | **Road Works - Civil** |  | 2025-12-25 | 2026-01-14 |  |
|  | 1 | **Steel Reinforcement** |  | 2025-12-25 | 2026-01-07 |  |
| HFR1-05-3290 |  | Pre-Qualification Submittal for Steel Reinforcement | 6d | 2025-12-25 | 2025-12-31 | HFR1-05-9020 |
| HFR1-05-5040 |  | Pre-Qualification Approval for Steel Reinforcement | 6d | 2026-01-01 | 2026-01-07 | HFR1-05-3290 |
|  | 2 | **Ready Mixed Concrete** |  | 2025-12-25 | 2026-01-07 |  |
| HFR1-05-5050 |  | Pre-Qualification Submittal for Ready Mixed Concrete | 6d | 2025-12-25 | 2025-12-31 | HFR1-05-9020 |
| HFR1-05-6270 |  | Pre-Qualification Approval for Ready Mixed Concrete | 6d | 2026-01-01 | 2026-01-07 | HFR1-05-5050 |
|  | 3 | **Water Proofing** |  | 2025-12-25 | 2026-01-07 |  |
| HFR1-05-6280 |  | Pre-Qualification Submittal for Water Proofing | 6d | 2025-12-25 | 2025-12-31 | HFR1-05-9020 |
| HFR1-05-6910 |  | Pre-Qualification Approval for Water Proofing | 6d | 2026-01-01 | 2026-01-07 | HFR1-05-6280 |
|  | 4 | **Aggregate Base Course** |  | 2025-12-25 | 2026-01-07 |  |
| HFR1-05-6260 |  | Pre-Qualification Submittal for Aggregate Base Cource | 6d | 2025-12-25 | 2025-12-31 | HFR1-05-9020 |
| HFR1-05-6870 |  | Pre-Qualification Approval for Aggregate Base Cource | 6d | 2026-01-01 | 2026-01-07 | HFR1-05-6260 |
|  | 5 | **Bituminous Base & Wearing Course** |  | 2025-12-25 | 2026-01-07 |  |
| HFR1-05-6880 |  | Pre-Qualification Submittal for Bituminous Base & Wearing Cource | 6d | 2025-12-25 | 2025-12-31 | HFR1-05-9020 |
| HFR1-05-7920 |  | Pre-Qualification Approval for Bituminous & Wearing Cource | 6d | 2026-01-01 | 2026-01-07 | HFR1-05-6880 |
|  | 7 | **Precast Concrete Kerb** |  | 2025-12-25 | 2026-01-07 |  |
| HFR1-05-6890 |  | Pre-Qualification Submittal for Precast Concrete Kerb | 6d | 2025-12-25 | 2025-12-31 | HFR1-05-9020 |
| HFR1-05-7930 |  | Pre-Qualification Approval for Precast Concrete Kerb | 6d | 2026-01-01 | 2026-01-07 | HFR1-05-6890 |
|  | 8 | **Interlocking Block Pavers** |  | 2025-12-25 | 2026-01-07 |  |
| HFR1-05-6900 |  | Pre-Qualification Submittal for Interlocking Block Pavers | 6d | 2025-12-25 | 2025-12-31 | HFR1-05-9020 |
| HFR1-05-7940 |  | Pre-Qualification Approval for Interlocking Block Pavers | 6d | 2026-01-01 | 2026-01-07 | HFR1-05-6900 |
|  | 9 | **Pavement Markings** |  | 2025-12-25 | 2026-01-14 |  |
| HFR1-05-7950 |  | Pre-Qualification Submittal for Pavement Markings | 6d | 2025-12-25 | 2025-12-31 | HFR1-05-9020 |
| HFR1-05-8470 |  | Pre-Qualification Approval for Pavement Markings | 6d | 2026-01-08 | 2026-01-14 | HFR1-05-7950, HFR1-05-6870 |
|  | 10 | **Traffic Signs** |  | 2025-12-25 | 2026-01-07 |  |
| HFR1-05-8480 |  | Pre-Qualification Submittal for Traffic Signs | 6d | 2025-12-25 | 2025-12-31 | HFR1-05-9020 |
| HFR1-05-8920 |  | Pre-Qualification Approval for Traffic Signs | 6d | 2026-01-01 | 2026-01-07 | HFR1-05-8480 |
|  | 2 | **Potable Water Network** |  | 2025-12-25 | 2026-01-07 |  |
|  | 1 | **HDPE Pipes** |  | 2025-12-25 | 2026-01-07 |  |
| HFR1-05-4910 |  | Pre-Qualification Submittal for HDPE Pipes | 6d | 2025-12-25 | 2025-12-31 | HFR1-05-9020 |
| HFR1-05-5600 |  | Pre-Qualification Approval for HDPE Pipes | 6d | 2026-01-01 | 2026-01-07 | HFR1-05-4910 |
|  | 2 | **Valves** |  | 2025-12-25 | 2026-01-07 |  |
| HFR1-05-5610 |  | Pre-Qualification Submittal for Valves | 6d | 2025-12-25 | 2025-12-31 | HFR1-05-9020 |
| HFR1-05-6800 |  | Pre-Qualification Approval for Valves | 6d | 2026-01-01 | 2026-01-07 | HFR1-05-5610 |
|  | 3 | **Sewer Water Network** |  | 2025-12-25 | 2026-01-07 |  |
|  | 1 | **GRP Pipes** |  | 2025-12-25 | 2026-01-07 |  |
| HFR1-05-4920 |  | Pre-Qualification Submittal for GRP Pipes | 6d | 2025-12-25 | 2025-12-31 | HFR1-05-9020 |
| HFR1-05-5620 |  | Pre-Qualification Approval for GRP Pipes | 6d | 2026-01-01 | 2026-01-07 | HFR1-05-4920 |
|  | 2 | **Manholes** |  | 2025-12-25 | 2026-01-07 |  |
| HFR1-05-5630 |  | Pre-Qualification Submittal for Manholes | 6d | 2025-12-25 | 2025-12-31 | HFR1-05-9020 |
| HFR1-05-6810 |  | Pre-Qualification Approval for Manholes | 6d | 2026-01-01 | 2026-01-07 | HFR1-05-5630 |

| ID | WBS | Task | Duration | Start | Finish | Predecessors |
| --- | --- | --- | --- | --- | --- | --- |
|  | 7 | **Civil Works - Buildings** |  | 2025-12-25 | 2026-01-14 |  |
|  | 2 | **Steel Reinforcement** |  | 2025-12-25 | 2026-01-07 |  |
| HFR1-05-3340 |  | Pre-Qualification Submittal for Steel Reinforcement | 6d | 2025-12-25 | 2025-12-31 | HFR1-05-9020 |
| HFR1-05-5370 |  | Pre-Qualification Approval for Steel Reinforcement | 6d | 2026-01-01 | 2026-01-07 | HFR1-05-3340 |
|  | 1 | **Ready Mix Concrete** |  | 2025-12-25 | 2026-01-07 |  |
| HFR1-05-5360 |  | Pre-Qualification Submittal for Ready Mix Concrete | 6d | 2025-12-25 | 2025-12-31 | HFR1-05-9020 |
| HFR1-05-6600 |  | Pre-Qualification Approval for Ready Mix Concrete | 6d | 2026-01-01 | 2026-01-07 | HFR1-05-5360 |
|  | 3 | **Masonry** |  | 2025-12-25 | 2026-01-07 |  |
| HFR1-05-5380 |  | Pre-Qualification Submittal for Masonry | 6d | 2025-12-25 | 2025-12-31 | HFR1-05-9020 |
| HFR1-05-6610 |  | Pre-Qualification Approval for Masonry | 6d | 2026-01-01 | 2026-01-07 | HFR1-05-5380 |
|  | 4 | **Steel Structure** |  | 2025-12-25 | 2026-01-07 |  |
| HFR1-05-5390 |  | Pre-Qualification Submittal for Steel Structure | 6d | 2025-12-25 | 2025-12-31 | HFR1-05-9020 |
| HFR1-05-6620 |  | Pre-Qualification Approval for Steel Structure | 6d | 2026-01-01 | 2026-01-07 | HFR1-05-5390 |
|  | 5 | **Thermal & Moisture Protection** |  | 2025-12-25 | 2026-01-07 |  |
| HFR1-05-5400 |  | Pre-Qualification Submittal for Thermal & Moisture Protection | 6d | 2025-12-25 | 2025-12-31 | HFR1-05-9020 |
| HFR1-05-6630 |  | Pre-Qualification Approval for Thermal & Moisture Protection | 6d | 2026-01-01 | 2026-01-07 | HFR1-05-5400 |
|  | 6 | **Water Proofing System** |  | 2025-12-25 | 2026-01-07 |  |
| HFR1-05-5410 |  | Pre-Qualification Submittal for Water Proofing System | 6d | 2025-12-25 | 2025-12-31 | HFR1-05-9020 |
| HFR1-05-6640 |  | Pre-Qualification Approval for Water Proofing System | 6d | 2026-01-01 | 2026-01-07 | HFR1-05-5410 |
|  | 7 | **Doors & Windows** |  | 2025-12-25 | 2026-01-07 |  |
| HFR1-05-5450 |  | Pre-Qualification Submittal for Doors & Windows | 6d | 2025-12-25 | 2025-12-31 | HFR1-05-9020 |
| HFR1-05-6680 |  | Pre-Qualification Approval for Doors & Windows | 6d | 2026-01-01 | 2026-01-07 | HFR1-05-5450 |
|  | 8 | **Floor Finishes** |  | 2025-12-25 | 2026-01-07 |  |
| HFR1-05-5420 |  | Pre-Qualification Submittal for Floor Finishes | 6d | 2025-12-25 | 2025-12-31 | HFR1-05-9020 |
| HFR1-05-6650 |  | Pre-Qualification Approval for Floor Finishes | 6d | 2026-01-01 | 2026-01-07 | HFR1-05-5420 |
|  | 9 | **Wall Finishes** |  | 2025-12-25 | 2026-01-07 |  |
| HFR1-05-5460 |  | Pre-Qualification Submittal for Wall Finishes | 6d | 2025-12-25 | 2025-12-31 | HFR1-05-9020 |
| HFR1-05-6690 |  | Pre-Qualification Approval for Wall Finishes | 6d | 2026-01-01 | 2026-01-07 | HFR1-05-5460 |
|  | 10 | **Ceiling Finishes** |  | 2026-01-01 | 2026-01-14 |  |
| HFR1-05-5470 |  | Pre-Qualification Submittal for Ceiling Finishes | 6d | 2026-01-01 | 2026-01-07 | HFR1-05-5460 |
| HFR1-05-6700 |  | Pre-Qualification Approval for Ceiling Finishes | 6d | 2026-01-08 | 2026-01-14 | HFR1-05-5470 |
|  | 11 | **Fittings** |  | 2026-01-01 | 2026-01-14 |  |
| HFR1-05-5430 |  | Pre-Qualification Submittal for Fittings | 6d | 2026-01-01 | 2026-01-07 | HFR1-05-5460 |
| HFR1-05-6660 |  | Pre-Qualification Approval for Fittings | 6d | 2026-01-08 | 2026-01-14 | HFR1-05-5430 |
|  | 12 | **Signages** |  | 2026-01-01 | 2026-01-14 |  |
| HFR1-05-5440 |  | Pre-Qualification Submittal for Signages | 6d | 2026-01-01 | 2026-01-07 | HFR1-05-5460 |
| HFR1-05-6670 |  | Pre-Qualification Approval for Signages | 6d | 2026-01-08 | 2026-01-14 | HFR1-05-5440 |
|  | 13 | **Logo** |  | 2026-01-01 | 2026-01-14 |  |
| HFR1-05-5510 |  | Pre-Qualification Submittal for Logo | 6d | 2026-01-01 | 2026-01-07 | HFR1-05-5460 |
| HFR1-05-6740 |  | Pre-Qualification Approval for Logo | 6d | 2026-01-08 | 2026-01-14 | HFR1-05-5510 |
|  | 14 | **Pre Engineered Structures** |  | 2026-01-01 | 2026-01-14 |  |
| HFR1-05-5480 |  | Pre-Qualification Submittal for Pre Engineered Structure | 6d | 2026-01-01 | 2026-01-07 | HFR1-05-5460 |
| HFR1-05-6710 |  | Pre-Qualification Approval for Pre Engineered Structure | 6d | 2026-01-08 | 2026-01-14 | HFR1-05-5480 |
|  | 15 | **Steel Fence** |  | 2026-01-01 | 2026-01-14 |  |
| HFR1-05-5490 |  | Pre-Qualification Submittal for Steel Fences | 6d | 2026-01-01 | 2026-01-07 | HFR1-05-5460 |
| HFR1-05-6720 |  | Pre-Qualification Approval for Steel Fences | 6d | 2026-01-08 | 2026-01-14 | HFR1-05-5490 |
|  | 16 | **Gates** |  | 2026-01-01 | 2026-01-14 |  |
| HFR1-05-5500 |  | Pre-Qualification Submittal for Gates | 6d | 2026-01-01 | 2026-01-07 | HFR1-05-5460 |
| HFR1-05-6730 |  | Pre-Qualification Approval for Gates | 6d | 2026-01-08 | 2026-01-14 | HFR1-05-5500 |
|  | 17 | **Pump Shed** |  | 2026-01-01 | 2026-01-14 |  |
| HFR1-05-5520 |  | Pre-Qualification Submittal for Pump Shed | 6d | 2026-01-01 | 2026-01-07 | HFR1-05-5460 |
| HFR1-05-6750 |  | Pre-Qualification Approval for Pump Shed | 6d | 2026-01-08 | 2026-01-14 | HFR1-05-5520 |
|  | 5 | **Mechanical - Buildings** |  | 2026-01-01 | 2026-01-14 |  |
|  | 2 | **Fire Fighting System** |  | 2026-01-01 | 2026-01-14 |  |
| HFR1-05-3300 |  | Pre-Qualification Submittal for Fire Fighting System | 6d | 2026-01-01 | 2026-01-07 | HFR1-05-5460 |
| HFR1-05-5070 |  | Pre-Qualification Approval for Fire Fighting System | 6d | 2026-01-08 | 2026-01-14 | HFR1-05-3300 |
|  | 1 | **HDPE Pipes** |  | 2026-01-01 | 2026-01-14 |  |
| HFR1-05-5060 |  | Pre-Qualification Submittal for HDPE Pipes | 6d | 2026-01-01 | 2026-01-07 | HFR1-05-5460 |
| HFR1-05-6290 |  | Pre-Qualification Approval for HDPE Pipes | 6d | 2026-01-08 | 2026-01-14 | HFR1-05-5060 |
|  | 3 | **Valves** |  | 2026-01-01 | 2026-01-14 |  |
| HFR1-05-5080 |  | Pre-Qualification Submittal for Valves | 6d | 2026-01-01 | 2026-01-07 | HFR1-05-5460 |
| HFR1-05-6300 |  | Pre-Qualification Approval for Valves | 6d | 2026-01-08 | 2026-01-14 | HFR1-05-5080 |
|  | 4 | **GRP pipes** |  | 2026-01-01 | 2026-01-14 |  |
| HFR1-05-5090 |  | Pre-Qualification Submittal for GRP Pipes | 6d | 2026-01-01 | 2026-01-07 | HFR1-05-5460 |
| HFR1-05-6310 |  | Pre-Qualification Approval for GRP Pipes | 6d | 2026-01-08 | 2026-01-14 | HFR1-05-5090 |
|  | 5 | **Manholes** |  | 2026-01-01 | 2026-01-14 |  |
| HFR1-05-5100 |  | Pre-Qualification Submittal for Manholes | 6d | 2026-01-01 | 2026-01-07 | HFR1-05-5460 |
| HFR1-05-6320 |  | Pre-Qualification Approval for Manholes | 6d | 2026-01-08 | 2026-01-14 | HFR1-05-5100 |
|  | 6 | **Fire Protectional System** |  | 2026-01-01 | 2026-01-14 |  |
| HFR1-05-5110 |  | Pre-Qualification Submittal for Fire Protection System | 6d | 2026-01-01 | 2026-01-07 | HFR1-05-5460 |

| ID | WBS | Task | Duration | Start | Finish | Predecessors |
| --- | --- | --- | --- | --- | --- | --- |
| HFR1-05-6330 |  | Pre-Qualification Approval for Fire Protection System | 6d | 2026-01-08 | 2026-01-14 | HFR1-05-5110 |
|  | 7 | **Water Supply System** |  | 2026-01-01 | 2026-01-14 |  |
| HFR1-05-5150 |  | Pre-Qualification Submittal for Water Supply System | 6d | 2026-01-01 | 2026-01-07 | HFR1-05-5460 |
| HFR1-05-6370 |  | Pre-Qualification Approval for Water Supply System | 6d | 2026-01-08 | 2026-01-14 | HFR1-05-5150 |
|  | 8 | **Upvc Pipes** |  | 2026-01-01 | 2026-01-14 |  |
| HFR1-05-5120 |  | Pre-Qualification Submittal for UPVC Pipes | 6d | 2026-01-01 | 2026-01-07 | HFR1-05-5460 |
| HFR1-05-6340 |  | Pre-Qualification Approval for UPVC Pipes | 6d | 2026-01-08 | 2026-01-14 | HFR1-05-5120 |
|  | 9 | **Roof Vent Caps** |  | 2026-01-01 | 2026-01-14 |  |
| HFR1-05-5160 |  | Pre-Qualification Submittal for Roof Vent Caps | 6d | 2026-01-01 | 2026-01-07 | HFR1-05-5460 |
| HFR1-05-6380 |  | Pre-Qualification Approval for Roof Vent Caps | 6d | 2026-01-08 | 2026-01-14 | HFR1-05-5160 |
|  | 10 | **Floor Drains** |  | 2026-01-01 | 2026-01-14 |  |
| HFR1-05-5170 |  | Pre-Qualification Submittal for Floor Drains | 6d | 2026-01-01 | 2026-01-07 | HFR1-05-5460 |
| HFR1-05-6390 |  | Pre-Qualification Approval for Floor Drains | 6d | 2026-01-08 | 2026-01-14 | HFR1-05-5170 |
|  | 11 | **Electric Water Heater** |  | 2026-01-01 | 2026-01-14 |  |
| HFR1-05-5130 |  | Pre-Qualification Submittal for Electric Water Heater | 6d | 2026-01-01 | 2026-01-07 | HFR1-05-5460 |
| HFR1-05-6350 |  | Pre-Qualification Approval for Electric Water Heater | 6d | 2026-01-08 | 2026-01-14 | HFR1-05-5130 |
|  | 12 | **Heating,Ventilation & Air Conditioning** |  | 2026-01-01 | 2026-01-14 |  |
| HFR1-05-5140 |  | Pre-Qualification Submittal for Heating,Ventilation & Air Conditioning | 6d | 2026-01-01 | 2026-01-07 | HFR1-05-5460 |
| HFR1-05-6360 |  | Pre-Qualification Approval for Heating,Ventilation & Air Conditioning | 6d | 2026-01-08 | 2026-01-14 | HFR1-05-5140 |
|  | 6 | **Electrical - Buildings** |  | 2026-01-01 | 2026-01-14 |  |
|  | 2 | **Telecome Manholes & Handholes** |  | 2026-01-01 | 2026-01-14 |  |
| HFR1-05-3310 |  | Pre-Qualification Submittal for Telecome Manholes & handholes | 6d | 2026-01-01 | 2026-01-07 | HFR1-05-5460 |
| HFR1-05-5190 |  | Pre-Qualification Approval for Telecome Manholes & handholes | 6d | 2026-01-08 | 2026-01-14 | HFR1-05-3310 |
|  | 1 | **Electrical manholes** |  | 2026-01-01 | 2026-01-14 |  |
| HFR1-05-5180 |  | Pre-Qualification Submittal for Manholes | 6d | 2026-01-01 | 2026-01-07 | HFR1-05-5460 |
| HFR1-05-6400 |  | Pre-Qualification Approval for Manholes | 6d | 2026-01-08 | 2026-01-14 | HFR1-05-5180 |
|  | 3 | **Street Lighting Manholes** |  | 2026-01-01 | 2026-01-14 |  |
| HFR1-05-5200 |  | Pre-Qualification Submittal for Street Lighting Manholes | 6d | 2026-01-01 | 2026-01-07 | HFR1-05-5460 |
| HFR1-05-6410 |  | Pre-Qualification Approval for Street Lighting Manholes | 6d | 2026-01-08 | 2026-01-14 | HFR1-05-5200 |
|  | 4 | **Duct Banks** |  | 2026-01-01 | 2026-01-14 |  |
| HFR1-05-5210 |  | Pre-Qualification Submittal for Duct Bank | 6d | 2026-01-01 | 2026-01-07 | HFR1-05-5460 |
| HFR1-05-6420 |  | Pre-Qualification Approval for Duct Bank | 6d | 2026-01-08 | 2026-01-14 | HFR1-05-5210 |
|  | 5 | **Feeder Pillers** |  | 2026-01-01 | 2026-01-14 |  |
| HFR1-05-5220 |  | Pre-Qualification Submittal for Feeder Pillers | 6d | 2026-01-01 | 2026-01-07 | HFR1-05-5460 |
| HFR1-05-6430 |  | Pre-Qualification Approval for Feeder Pillers | 6d | 2026-01-08 | 2026-01-14 | HFR1-05-5220 |
|  | 6 | **Street Lighting Poles** |  | 2026-01-01 | 2026-01-14 |  |
| HFR1-05-5230 |  | Pre-Qualification Submittal for Street Lighting Poles | 6d | 2026-01-01 | 2026-01-07 | HFR1-05-5460 |
| HFR1-05-6440 |  | Pre-Qualification Approval for Street Lighting Poles | 6d | 2026-01-08 | 2026-01-14 | HFR1-05-5230 |
|  | 7 | **Street Lighting Luminaires** |  | 2026-01-01 | 2026-01-14 |  |
| HFR1-05-5270 |  | Pre-Qualification Submittal for Street Lighting Luminaires | 6d | 2026-01-01 | 2026-01-07 | HFR1-05-5460 |
| HFR1-05-6480 |  | Pre-Qualification Approval for Street Lighting Luminaires | 6d | 2026-01-08 | 2026-01-14 | HFR1-05-5270 |
|  | 8 | **Low Voltage Cables** |  | 2026-01-01 | 2026-01-14 |  |
| HFR1-05-5240 |  | Pre-Qualification Submittal for Low Voltage Cables | 6d | 2026-01-01 | 2026-01-07 | HFR1-05-5460 |
| HFR1-05-6450 |  | Pre-Qualification Approval for Low Voltage Cables | 6d | 2026-01-08 | 2026-01-14 | HFR1-05-5240 |
|  | 9 | **LED Lighting Fixtures** |  | 2026-01-01 | 2026-01-14 |  |
| HFR1-05-5280 |  | Pre-Qualification Submittal for LED Lighting Fixtures | 6d | 2026-01-01 | 2026-01-07 | HFR1-05-5460 |
| HFR1-05-6490 |  | Pre-Qualification Approval for LED Lighting Fixtures | 6d | 2026-01-08 | 2026-01-14 | HFR1-05-5280 |
|  | 10 | **Power Panel** |  | 2026-01-01 | 2026-01-14 |  |
| HFR1-05-5290 |  | Pre-Qualification Submittal for Power Panel | 6d | 2026-01-01 | 2026-01-07 | HFR1-05-5460 |
| HFR1-05-6500 |  | Pre-Qualification Approval for Power Panel | 6d | 2026-01-08 | 2026-01-14 | HFR1-05-5290 |
|  | 11 | **Control Panels** |  | 2026-01-01 | 2026-01-14 |  |
| HFR1-05-5250 |  | Pre-Qualification Submittal for Control Panels | 6d | 2026-01-01 | 2026-01-07 | HFR1-05-5460 |
| HFR1-05-6460 |  | Pre-Qualification Approval for Control Panels | 6d | 2026-01-08 | 2026-01-14 | HFR1-05-5250 |
|  | 12 | **Isolator & Disconnecting Switches** |  | 2026-01-01 | 2026-01-14 |  |
| HFR1-05-5260 |  | Pre-Qualification Submittal for Isolator & Disconnecting Switches | 6d | 2026-01-01 | 2026-01-07 | HFR1-05-5460 |
| HFR1-05-6470 |  | Pre-Qualification Approval for Isolator & Disconnecting Switches | 6d | 2026-01-08 | 2026-01-14 | HFR1-05-5260 |
|  | 13 | **Cable Trays** |  | 2026-01-01 | 2026-01-14 |  |
| HFR1-05-5330 |  | Pre-Qualification Submittal for Cable Trays | 6d | 2026-01-01 | 2026-01-07 | HFR1-05-5460 |
| HFR1-05-6540 |  | Pre-Qualification Approval for Cable Trays | 6d | 2026-01-08 | 2026-01-14 | HFR1-05-5330 |
|  | 14 | **KWHM** |  | 2026-01-01 | 2026-01-14 |  |
| HFR1-05-5300 |  | Pre-Qualification Submittal for KWHM | 6d | 2026-01-01 | 2026-01-07 | HFR1-05-5460 |
| HFR1-05-6510 |  | Pre-Qualification Approval for KWHM | 6d | 2026-01-08 | 2026-01-14 | HFR1-05-5300 |
|  | 15 | **Safety Disconnect Switches** |  | 2026-01-01 | 2026-01-14 |  |
| HFR1-05-5310 |  | Pre-Qualification Submittal for Safety Disconnects Switches | 6d | 2026-01-01 | 2026-01-07 | HFR1-05-5460 |
| HFR1-05-6520 |  | Pre-Qualification Approval for Safety Disconnects Switches | 6d | 2026-01-08 | 2026-01-14 | HFR1-05-5310 |
|  | 16 | **Telecom & Data System** |  | 2026-01-01 | 2026-01-14 |  |
| HFR1-05-5320 |  | Pre-Qualification Submittal for Telecome & Data System | 6d | 2026-01-01 | 2026-01-07 | HFR1-05-5460 |
| HFR1-05-6530 |  | Pre-Qualification Approval for Telecome & Data System | 6d | 2026-01-08 | 2026-01-14 | HFR1-05-5320 |
|  | 17 | **Grounding System** |  | 2026-01-01 | 2026-01-14 |  |
| HFR1-05-5350 |  | Pre-Qualification Submittal for Grounding System | 6d | 2026-01-01 | 2026-01-07 | HFR1-05-5460 |

| ID | WBS | Task | Duration | Start | Finish | Predecessors |
| --- | --- | --- | --- | --- | --- | --- |
| HFR1-05-6590 |  | Pre-Qualification Approval for Grounding System | 6d | 2026-01-08 | 2026-01-14 | HFR1-05-5350 |
|  | 18 | **Lightning Protection System** |  | 2026-01-01 | 2026-01-14 |  |
| HFR1-05-5340 |  | Pre-Qualification Submittal for Lightning Protection System | 6d | 2026-01-01 | 2026-01-07 | HFR1-05-5460 |
| HFR1-05-6580 |  | Pre-Qualification Approval for Lightning Protection System | 6d | 2026-01-08 | 2026-01-14 | HFR1-05-5340 |
|  | 19 | **Fire Alarm System** |  | 2026-01-01 | 2026-01-14 |  |
| HFR1-05-6560 |  | Pre-Qualification Submittal for Fire Alarm System | 6d | 2026-01-01 | 2026-01-07 | HFR1-05-5460 |
| HFR1-05-6970 |  | Pre-Qualification Approval for Fire Alarm System | 6d | 2026-01-08 | 2026-01-14 | HFR1-05-6560 |
|  | 20 | **Solar Power Plant** |  | 2026-01-01 | 2026-01-14 |  |
| HFR1-05-6570 |  | Pre-Qualification Submittal for Solar Power Plant | 6d | 2026-01-01 | 2026-01-07 | HFR1-05-5460 |
| HFR1-05-6980 |  | Pre-Qualification Approval for Solar Power Plant | 6d | 2026-01-08 | 2026-01-14 | HFR1-05-6570 |
|  | 21 | **Skylight Fixtures** |  | 2026-01-01 | 2026-01-14 |  |
| HFR1-05-6550 |  | Pre-Qualification Submittal for Skylight Fixtures | 6d | 2026-01-01 | 2026-01-07 | HFR1-05-5460 |
| HFR1-05-6960 |  | Pre-Qualification Approval for Skylight Fixtures | 6d | 2026-01-08 | 2026-01-14 | HFR1-05-6550 |
|  | 3 | **Material Submittal** |  | 2026-01-08 | 2026-01-28 |  |
|  | 1 | **Road Works - Civil** |  | 2026-01-08 | 2026-01-27 |  |
|  | 1 | **Steel Reinforcement** |  | 2026-01-08 | 2026-01-21 |  |
| HFR1-05-6760 |  | Material Submittal for Steel Reinforcement | 6d | 2026-01-08 | 2026-01-14 | HFR1-05-5040 |
| HFR1-05-6990 |  | Material Approval for Steel Reinforcement | 6d | 2026-01-15 | 2026-01-21 | HFR1-05-6760, HFR1-05-6810 |
|  | 2 | **Ready Mixed Concrete** |  | 2026-01-08 | 2026-01-21 |  |
| HFR1-05-7000 |  | Material Submittal for Ready Mixed Concrete | 6d | 2026-01-08 | 2026-01-14 | HFR1-05-6270 |
| HFR1-05-7970 |  | Material Approval for Ready Mixed Concrete | 6d | 2026-01-15 | 2026-01-21 | HFR1-05-7000 |
|  | 3 | **Water Proofing** |  | 2026-01-08 | 2026-01-21 |  |
| HFR1-05-7980 |  | Material Submittal for Water Proofing | 6d | 2026-01-08 | 2026-01-14 | HFR1-05-6910 |
| HFR1-05-8780 |  | Material Approval for Water Proofing | 6d | 2026-01-15 | 2026-01-21 | HFR1-05-7980 |
|  | 4 | **Aggregate Base Course** |  | 2026-01-08 | 2026-01-21 |  |
| HFR1-05-7960 |  | Material Submittal for Aggregate Base Cource | 6d | 2026-01-08 | 2026-01-14 | HFR1-05-6870 |
| HFR1-05-8740 |  | Material Approval for Aggregate Base Cource | 6d | 2026-01-15 | 2026-01-21 | HFR1-05-7960 |
|  | 5 | **Bituminous Base & Wearing Course** |  | 2026-01-08 | 2026-01-21 |  |
| HFR1-05-8750 |  | Material Submittal for Bituminous Base & Wearing Cource | 6d | 2026-01-08 | 2026-01-14 | HFR1-05-7920 |
| HFR1-05-8930 |  | Material Approval for Bituminous & Wearing Cource | 6d | 2026-01-15 | 2026-01-21 | HFR1-05-8750 |
|  | 7 | **Precast Concrete Kerb** |  | 2026-01-08 | 2026-01-21 |  |
| HFR1-05-8760 |  | Material Submittal for Precast Concrete Kerb | 6d | 2026-01-08 | 2026-01-14 | HFR1-05-7930 |
| HFR1-05-8940 |  | Material Approval for Precast Concrete Kerb | 6d | 2026-01-15 | 2026-01-21 | HFR1-05-8760 |
|  | 8 | **Interlocking Block Pavers** |  | 2026-01-08 | 2026-01-21 |  |
| HFR1-05-8770 |  | Material Submittal for Interlocking Block Pavers | 6d | 2026-01-08 | 2026-01-14 | HFR1-05-7940 |
| HFR1-05-8950 |  | Material Approval for Interlocking Block Pavers | 6d | 2026-01-15 | 2026-01-21 | HFR1-05-8770 |
|  | 9 | **Pavement Markings** |  | 2026-01-15 | 2026-01-27 |  |
| HFR1-05-8960 |  | Material Submittal for Pavement Markings | 5d | 2026-01-15 | 2026-01-20 | HFR1-05-8470 |
| HFR1-05-9070 |  | Material Approval for Pavement Markings | 6d | 2026-01-21 | 2026-01-27 | HFR1-05-8960 |
|  | 10 | **Traffic Signs** |  | 2026-01-08 | 2026-01-20 |  |
| HFR1-05-9080 |  | Material Submittal for Traffic Signs | 5d | 2026-01-08 | 2026-01-13 | HFR1-05-8920 |
| HFR1-05-9180 |  | Material Approval for Traffic Signs | 6d | 2026-01-14 | 2026-01-20 | HFR1-05-9080 |
|  | 2 | **Potable Water Network** |  | 2026-01-08 | 2026-01-28 |  |
|  | 1 | **HDPE Pipes** |  | 2026-01-08 | 2026-01-21 |  |
| HFR1-05-5640 |  | Material Submittal for HDPE Pipes | 6d | 2026-01-08 | 2026-01-14 | HFR1-05-5600, HFR1-05-4910 |
| HFR1-05-6820 |  | Material Approval for HDPE Pipes | 6d | 2026-01-15 | 2026-01-21 | HFR1-05-5640 |
|  | 2 | **Valves** |  | 2026-01-15 | 2026-01-28 |  |
| HFR1-05-6830 |  | Material Submittal for Valves | 6d | 2026-01-15 | 2026-01-21 | HFR1-05-6800, HFR1-05-5640, HFR1-05-5610 |
| HFR1-05-7480 |  | Material Approval for Valves | 6d | 2026-01-22 | 2026-01-28 | HFR1-05-6830 |
|  | 3 | **Sewer Water Network** |  | 2026-01-08 | 2026-01-27 |  |
|  | 1 | **GRP Pipes** |  | 2026-01-08 | 2026-01-21 |  |
| HFR1-05-6840 |  | Material Submittal for GRP Pipes | 6d | 2026-01-08 | 2026-01-14 | HFR1-05-5620 |
| HFR1-05-7490 |  | Material Approval for GRP Pipes | 6d | 2026-01-15 | 2026-01-21 | HFR1-05-6840 |
|  | 2 | **Manholes** |  | 2026-01-15 | 2026-01-27 |  |
| HFR1-05-7500 |  | Material Submittal for Manholes | 5d | 2026-01-15 | 2026-01-20 | HFR1-05-6840, HFR1-05-6810 |
| HFR1-05-8460 |  | Material Approval for Manholes | 6d | 2026-01-21 | 2026-01-27 | HFR1-05-7500 |
|  | 7 | **Civil Works - Buildings** |  | 2026-01-08 | 2026-01-27 |  |
|  | 2 | **Steel Reinforcement** |  | 2026-01-08 | 2026-01-21 |  |
| HFR1-05-6790 |  | Material Submittal for Steel Reinforcement | 6d | 2026-01-08 | 2026-01-14 | HFR1-05-5370 |
| HFR1-05-7320 |  | Material Approval for Steel Reinforcement | 6d | 2026-01-15 | 2026-01-21 | HFR1-05-6790 |
|  | 1 | **Ready Mix Concrete** |  | 2026-01-15 | 2026-01-27 |  |
| HFR1-05-7310 |  | Material Submittal for Ready Mix Concrete | 5d | 2026-01-15 | 2026-01-20 | HFR1-05-6790, HFR1-05-6600 |
| HFR1-05-8300 |  | Material Approval for Ready Mix Concrete | 6d | 2026-01-21 | 2026-01-27 | HFR1-05-7310 |
|  | 3 | **Masonry** |  | 2026-01-15 | 2026-01-27 |  |
| HFR1-05-7330 |  | Material Submittal for Masonry | 5d | 2026-01-15 | 2026-01-20 | HFR1-05-6790, HFR1-05-6610 |
| HFR1-05-8310 |  | Material Approval for Masonry | 6d | 2026-01-21 | 2026-01-27 | HFR1-05-7330 |
|  | 4 | **Steel Structure** |  | 2026-01-15 | 2026-01-27 |  |
| HFR1-05-7340 |  | Material Submittal for Steel Structure | 5d | 2026-01-15 | 2026-01-20 | HFR1-05-6790, HFR1-05-6620 |
| HFR1-05-8320 |  | Material Approval for Steel Structure | 6d | 2026-01-21 | 2026-01-27 | HFR1-05-7340 |
|  | 5 | **Thermal & Moisture Protection** |  | 2026-01-15 | 2026-01-27 |  |

| ID | WBS | Task | Duration | Start | Finish | Predecessors |
| --- | --- | --- | --- | --- | --- | --- |
| HFR1-05-7350 |  | Material Submittal for Thermal & Moisture Protection | 5d | 2026-01-15 | 2026-01-20 | HFR1-05-6790, HFR1-05-6630 |
| HFR1-05-8330 |  | Material Approval for Thermal & Moisture Protection | 6d | 2026-01-21 | 2026-01-27 | HFR1-05-7350 |
|  | 6 | **Water Proofing System** |  | 2026-01-15 | 2026-01-27 |  |
| HFR1-05-7360 |  | Material Submittal for Water Proofing System | 5d | 2026-01-15 | 2026-01-20 | HFR1-05-6790, HFR1-05-6640 |
| HFR1-05-8340 |  | Material Approval for Water Proofing System | 6d | 2026-01-21 | 2026-01-27 | HFR1-05-7360 |
|  | 7 | **Doors & Windows** |  | 2026-01-15 | 2026-01-27 |  |
| HFR1-05-7400 |  | Material Submittal for Doors & Windows | 5d | 2026-01-15 | 2026-01-20 | HFR1-05-6790, HFR1-05-6680 |
| HFR1-05-8380 |  | Material Approval for Doors & Windows | 6d | 2026-01-21 | 2026-01-27 | HFR1-05-7400 |
|  | 8 | **Floor Finishes** |  | 2026-01-15 | 2026-01-27 |  |
| HFR1-05-7370 |  | Material Submittal for Floor Finishes | 5d | 2026-01-15 | 2026-01-20 | HFR1-05-6790, HFR1-05-6650 |
| HFR1-05-8350 |  | Material Approval for Floor Finishes | 6d | 2026-01-21 | 2026-01-27 | HFR1-05-7370 |
|  | 9 | **Wall Finishes** |  | 2026-01-15 | 2026-01-27 |  |
| HFR1-05-7410 |  | Material Submittal for Wall Finishes | 5d | 2026-01-15 | 2026-01-20 | HFR1-05-6790, HFR1-05-6690 |
| HFR1-05-8390 |  | Material Approval for Wall Finishes | 6d | 2026-01-21 | 2026-01-27 | HFR1-05-7410 |
|  | 10 | **Ceiling Finishes** |  | 2026-01-15 | 2026-01-27 |  |
| HFR1-05-7420 |  | Material Submittal for Ceiling Finishes | 5d | 2026-01-15 | 2026-01-20 | HFR1-05-6790, HFR1-05-6700 |
| HFR1-05-8400 |  | Material Approval for Ceiling Finishes | 6d | 2026-01-21 | 2026-01-27 | HFR1-05-7420 |
|  | 11 | **Fittings** |  | 2026-01-15 | 2026-01-27 |  |
| HFR1-05-7380 |  | Material Submittal for Fittings | 5d | 2026-01-15 | 2026-01-20 | HFR1-05-6790, HFR1-05-6660 |
| HFR1-05-8360 |  | Material Approval for Fittings | 6d | 2026-01-21 | 2026-01-27 | HFR1-05-7380 |
|  | 12 | **Signages** |  | 2026-01-15 | 2026-01-27 |  |
| HFR1-05-7390 |  | Material Submittal for Signages | 5d | 2026-01-15 | 2026-01-20 | HFR1-05-6790, HFR1-05-6670 |
| HFR1-05-8370 |  | Material Approval for Signages | 6d | 2026-01-21 | 2026-01-27 | HFR1-05-7390 |
|  | 13 | **Logo** |  | 2026-01-15 | 2026-01-27 |  |
| HFR1-05-7460 |  | Material Submittal for Logo | 5d | 2026-01-15 | 2026-01-20 | HFR1-05-6790, HFR1-05-6740 |
| HFR1-05-8440 |  | Material Approval for Logo | 6d | 2026-01-21 | 2026-01-27 | HFR1-05-7460 |
|  | 14 | **Pre Engineered Structures** |  | 2026-01-15 | 2026-01-27 |  |
| HFR1-05-7430 |  | Material Submittal for Pre Engineered Structure | 5d | 2026-01-15 | 2026-01-20 | HFR1-05-6790, HFR1-05-6710 |
| HFR1-05-8410 |  | Material Approval for Pre Engineered Structure | 6d | 2026-01-21 | 2026-01-27 | HFR1-05-7430 |
|  | 15 | **Steel Fence** |  | 2026-01-15 | 2026-01-27 |  |
| HFR1-05-7440 |  | Material Submittal for Steel Fences | 5d | 2026-01-15 | 2026-01-20 | HFR1-05-6790, HFR1-05-6720 |
| HFR1-05-8420 |  | Material Approval for Steel Fences | 6d | 2026-01-21 | 2026-01-27 | HFR1-05-7440 |
|  | 16 | **Gates** |  | 2026-01-15 | 2026-01-27 |  |
| HFR1-05-7450 |  | Material Submittal for Gates | 5d | 2026-01-15 | 2026-01-20 | HFR1-05-6790, HFR1-05-6730 |
| HFR1-05-8430 |  | Material Approval for Gates | 6d | 2026-01-21 | 2026-01-27 | HFR1-05-7450 |
|  | 17 | **Pump Shed** |  | 2026-01-15 | 2026-01-27 |  |
| HFR1-05-7470 |  | Material Submittal for Pump Shed | 5d | 2026-01-15 | 2026-01-20 | HFR1-05-6790, HFR1-05-6750 |
| HFR1-05-8450 |  | Material Approval for Pump Shed | 6d | 2026-01-21 | 2026-01-27 | HFR1-05-7470 |
|  | 5 | **Mechanical - Buildings** |  | 2026-01-15 | 2026-01-27 |  |
|  | 2 | **Fire Fighting System** |  | 2026-01-15 | 2026-01-27 |  |
| HFR1-05-6770 |  | Material Submittal for Fire Fighting System | 5d | 2026-01-15 | 2026-01-20 | HFR1-05-5070 |
| HFR1-05-7020 |  | Material Approval for Fire Fighting System | 6d | 2026-01-21 | 2026-01-27 | HFR1-05-6770 |
|  | 1 | **HDPE Pipes** |  | 2026-01-15 | 2026-01-27 |  |
| HFR1-05-7010 |  | Material Submittal for HDPE Pipes | 5d | 2026-01-15 | 2026-01-20 | HFR1-05-6290 |
| HFR1-05-7990 |  | Material Approval for HDPE Pipes | 6d | 2026-01-21 | 2026-01-27 | HFR1-05-7010 |
|  | 3 | **Valves** |  | 2026-01-15 | 2026-01-27 |  |
| HFR1-05-7030 |  | Material Submittal for Valves | 5d | 2026-01-15 | 2026-01-20 | HFR1-05-6300 |
| HFR1-05-8000 |  | Material Approval for Valves | 6d | 2026-01-21 | 2026-01-27 | HFR1-05-7030 |
|  | 4 | **GRP pipes** |  | 2026-01-15 | 2026-01-27 |  |
| HFR1-05-7040 |  | Material Submittal for GRP Pipes | 5d | 2026-01-15 | 2026-01-20 | HFR1-05-6310 |
| HFR1-05-8010 |  | Material Approval for GRP Pipes | 6d | 2026-01-21 | 2026-01-27 | HFR1-05-7040 |
|  | 5 | **Manholes** |  | 2026-01-15 | 2026-01-27 |  |
| HFR1-05-7050 |  | Material Submittal for Manholes | 5d | 2026-01-15 | 2026-01-20 | HFR1-05-6320 |
| HFR1-05-8020 |  | Material Approval for Manholes | 6d | 2026-01-21 | 2026-01-27 | HFR1-05-7050 |
|  | 6 | **Fire Protectional System** |  | 2026-01-15 | 2026-01-27 |  |
| HFR1-05-7060 |  | Material Submittal for Fire Protection System | 5d | 2026-01-15 | 2026-01-20 | HFR1-05-6330 |
| HFR1-05-8030 |  | Material Approval for Fire Protection System | 6d | 2026-01-21 | 2026-01-27 | HFR1-05-7060 |
|  | 7 | **Water Supply System** |  | 2026-01-15 | 2026-01-27 |  |
| HFR1-05-7100 |  | Material Submittal for Water Supply System | 5d | 2026-01-15 | 2026-01-20 | HFR1-05-6370 |
| HFR1-05-8070 |  | Material Approval for Water Supply System | 6d | 2026-01-21 | 2026-01-27 | HFR1-05-7100 |
|  | 8 | **Upvc Pipes** |  | 2026-01-15 | 2026-01-27 |  |
| HFR1-05-7070 |  | Material Submittal for UPVC Pipes | 5d | 2026-01-15 | 2026-01-20 | HFR1-05-6340 |
| HFR1-05-8040 |  | Material Approval for UPVC Pipes | 6d | 2026-01-21 | 2026-01-27 | HFR1-05-7070 |
|  | 9 | **Roof Vent Caps** |  | 2026-01-15 | 2026-01-27 |  |
| HFR1-05-7110 |  | Material Submittal for Roof Vent Caps | 5d | 2026-01-15 | 2026-01-20 | HFR1-05-6380 |
| HFR1-05-8080 |  | Material Approval for Roof Vent Caps | 6d | 2026-01-21 | 2026-01-27 | HFR1-05-7110 |
|  | 10 | **Floor Drains** |  | 2026-01-15 | 2026-01-27 |  |
| HFR1-05-7120 |  | Material Submittal for Floor Drains | 5d | 2026-01-15 | 2026-01-20 | HFR1-05-6390 |
| HFR1-05-8090 |  | Material Approval for Floor Drains | 6d | 2026-01-21 | 2026-01-27 | HFR1-05-7120 |
|  | 11 | **Electric Water Heater** |  | 2026-01-15 | 2026-01-27 |  |

| ID | WBS | Task | Duration | Start | Finish | Predecessors |
| --- | --- | --- | --- | --- | --- | --- |
| HFR1-05-7080 |  | Material Submittal for Electric Water Heater | 5d | 2026-01-15 | 2026-01-20 | HFR1-05-6350 |
| HFR1-05-8050 |  | Material Approval for Electric Water Heater | 6d | 2026-01-21 | 2026-01-27 | HFR1-05-7080 |
|  | 12 | **Heating,Ventilation & Air Conditioning** |  | 2026-01-15 | 2026-01-27 |  |
| HFR1-05-7090 |  | Material Submittal for Heating,Ventilation & Air Conditioning | 5d | 2026-01-15 | 2026-01-20 | HFR1-05-6360 |
| HFR1-05-8060 |  | Material Approval for Heating,Ventilation & Air Conditioning | 6d | 2026-01-21 | 2026-01-27 | HFR1-05-7090 |
|  | 6 | **Electrical - Buildings** |  | 2026-01-15 | 2026-01-27 |  |
|  | 2 | **Telecome Manholes & Handholes** |  | 2026-01-15 | 2026-01-27 |  |
| HFR1-05-6780 |  | Material Submittal for Telecome Manholes & handholes | 5d | 2026-01-15 | 2026-01-20 | HFR1-05-5190 |
| HFR1-05-7140 |  | Material Approval for Telecome Manholes & handholes | 6d | 2026-01-21 | 2026-01-27 | HFR1-05-6780 |
|  | 1 | **Electrical manholes** |  | 2026-01-15 | 2026-01-27 |  |
| HFR1-05-7130 |  | Material Submittal for Manholes | 5d | 2026-01-15 | 2026-01-20 | HFR1-05-6400 |
| HFR1-05-8100 |  | Material Approval for Manholes | 6d | 2026-01-21 | 2026-01-27 | HFR1-05-7130 |
|  | 3 | **Street Lighting Manholes** |  | 2026-01-15 | 2026-01-27 |  |
| HFR1-05-7150 |  | Material Submittal for Street Lighting Manholes | 5d | 2026-01-15 | 2026-01-20 | HFR1-05-6410 |
| HFR1-05-8110 |  | Material Approval for Street Lighting Manholes | 6d | 2026-01-21 | 2026-01-27 | HFR1-05-7150 |
|  | 4 | **Duct Banks** |  | 2026-01-15 | 2026-01-27 |  |
| HFR1-05-7160 |  | Material Submittal for Duct Bank | 5d | 2026-01-15 | 2026-01-20 | HFR1-05-6420 |
| HFR1-05-8120 |  | Material Approval for Duct Bank | 6d | 2026-01-21 | 2026-01-27 | HFR1-05-7160 |
|  | 5 | **Feeder Pillers** |  | 2026-01-15 | 2026-01-27 |  |
| HFR1-05-7170 |  | Material Submittal for Feeder Pillers | 5d | 2026-01-15 | 2026-01-20 | HFR1-05-6430 |
| HFR1-05-8130 |  | Material Approval for Feeder Pillers | 6d | 2026-01-21 | 2026-01-27 | HFR1-05-7170 |
|  | 6 | **Street Lighting Poles** |  | 2026-01-15 | 2026-01-27 |  |
| HFR1-05-7180 |  | Material Submittal for Street Lighting Poles | 5d | 2026-01-15 | 2026-01-20 | HFR1-05-6440 |
| HFR1-05-8140 |  | Material Approval for Street Lighting Poles | 6d | 2026-01-21 | 2026-01-27 | HFR1-05-7180 |
|  | 7 | **Street Lighting Luminaires** |  | 2026-01-15 | 2026-01-27 |  |
| HFR1-05-7220 |  | Material Submittal for Street Lighting Luminaires | 5d | 2026-01-15 | 2026-01-20 | HFR1-05-6480 |
| HFR1-05-8180 |  | Material Approval for Street Lighting Luminaires | 6d | 2026-01-21 | 2026-01-27 | HFR1-05-7220 |
|  | 8 | **Low Voltage Cables** |  | 2026-01-15 | 2026-01-27 |  |
| HFR1-05-7190 |  | Material Submittal for Low Voltage Cables | 5d | 2026-01-15 | 2026-01-20 | HFR1-05-6450 |
| HFR1-05-8150 |  | Material Approval for Low Voltage Cables | 6d | 2026-01-21 | 2026-01-27 | HFR1-05-7190 |
|  | 9 | **LED Lighting Fixtures** |  | 2026-01-15 | 2026-01-27 |  |
| HFR1-05-7230 |  | Material Submittal for LED Lighting Fixtures | 5d | 2026-01-15 | 2026-01-20 | HFR1-05-6490 |
| HFR1-05-8190 |  | Material Approval for LED Lighting Fixtures | 6d | 2026-01-21 | 2026-01-27 | HFR1-05-7230 |
|  | 10 | **Power Panel** |  | 2026-01-15 | 2026-01-27 |  |
| HFR1-05-7240 |  | Material Submittal for Power Panel | 5d | 2026-01-15 | 2026-01-20 | HFR1-05-6500 |
| HFR1-05-8200 |  | Material Approval for Power Panel | 6d | 2026-01-21 | 2026-01-27 | HFR1-05-7240 |
|  | 11 | **Control Panels** |  | 2026-01-15 | 2026-01-27 |  |
| HFR1-05-7200 |  | Material Submittal for Control Panels | 5d | 2026-01-15 | 2026-01-20 | HFR1-05-6460 |
| HFR1-05-8160 |  | Material Approval for Control Panels | 6d | 2026-01-21 | 2026-01-27 | HFR1-05-7200 |
|  | 12 | **Isolator & Disconnecting Switches** |  | 2026-01-15 | 2026-01-27 |  |
| HFR1-05-7210 |  | Material Submittal for Isolator & Disconnecting Switches | 5d | 2026-01-15 | 2026-01-20 | HFR1-05-6470 |
| HFR1-05-8170 |  | Material Approval for Isolator & Disconnecting Switches | 6d | 2026-01-21 | 2026-01-27 | HFR1-05-7210 |
|  | 13 | **Cable Trays** |  | 2026-01-15 | 2026-01-27 |  |
| HFR1-05-7280 |  | Material Submittal for Cable Trays | 5d | 2026-01-15 | 2026-01-20 | HFR1-05-6540 |
| HFR1-05-8240 |  | Material Approval for Cable Trays | 6d | 2026-01-21 | 2026-01-27 | HFR1-05-7280 |
|  | 14 | **KWHM** |  | 2026-01-15 | 2026-01-27 |  |
| HFR1-05-7250 |  | Material Submittal for KWHM | 5d | 2026-01-15 | 2026-01-20 | HFR1-05-6510 |
| HFR1-05-8210 |  | Material Approval for KWHM | 6d | 2026-01-21 | 2026-01-27 | HFR1-05-7250 |
|  | 15 | **Safety Disconnect Switches** |  | 2026-01-15 | 2026-01-27 |  |
| HFR1-05-7260 |  | Material Submittal for Safety Disconnects Switches | 5d | 2026-01-15 | 2026-01-20 | HFR1-05-6520 |
| HFR1-05-8220 |  | Material Approval for Safety Disconnects Switches | 6d | 2026-01-21 | 2026-01-27 | HFR1-05-7260 |
|  | 16 | **Telecom & Data System** |  | 2026-01-15 | 2026-01-27 |  |
| HFR1-05-7270 |  | Material Submittal for Telecome & Data System | 5d | 2026-01-15 | 2026-01-20 | HFR1-05-6530 |
| HFR1-05-8230 |  | Material Approval for Telecome & Data System | 6d | 2026-01-21 | 2026-01-27 | HFR1-05-7270 |
|  | 17 | **Grounding System** |  | 2026-01-15 | 2026-01-27 |  |
| HFR1-05-7300 |  | Material Submittal for Grounding System | 5d | 2026-01-15 | 2026-01-20 | HFR1-05-6590 |
| HFR1-05-8290 |  | Material Approval for Grounding System | 6d | 2026-01-21 | 2026-01-27 | HFR1-05-7300 |
|  | 18 | **Lightning Protection System** |  | 2026-01-15 | 2026-01-27 |  |
| HFR1-05-7290 |  | Material Submittal for Lightning Protection System | 5d | 2026-01-15 | 2026-01-20 | HFR1-05-6580 |
| HFR1-05-8280 |  | Material Approval for Lightning Protection System | 6d | 2026-01-21 | 2026-01-27 | HFR1-05-7290 |
|  | 19 | **Fire Alarm System** |  | 2026-01-15 | 2026-01-27 |  |
| HFR1-05-8260 |  | Material Submittal for Fire Alarm System | 5d | 2026-01-15 | 2026-01-20 | HFR1-05-6970 |
| HFR1-05-8800 |  | Material Approval for Fire Alarm System | 6d | 2026-01-21 | 2026-01-27 | HFR1-05-8260 |
|  | 20 | **Solar Power Plant** |  | 2026-01-15 | 2026-01-27 |  |
| HFR1-05-8270 |  | Material Submittal for Solar Power Plant | 5d | 2026-01-15 | 2026-01-20 | HFR1-05-6980 |
| HFR1-05-8810 |  | Material Approval for Solar Power Plant | 6d | 2026-01-21 | 2026-01-27 | HFR1-05-8270 |
|  | 21 | **Skylight Fixtures** |  | 2026-01-15 | 2026-01-27 |  |
| HFR1-05-8250 |  | Material Submittal for Skylight Fixtures | 5d | 2026-01-15 | 2026-01-20 | HFR1-05-6960 |
| HFR1-05-8790 |  | Material Approval for Skylight Fixtures | 6d | 2026-01-21 | 2026-01-27 | HFR1-05-8250 |
|  | 5 | **Procurement** |  | 2026-01-15 | 2026-07-22 |  |

| ID | WBS | Task | Duration | Start | Finish | Predecessors |
| --- | --- | --- | --- | --- | --- | --- |
|  | 2 | **Short Lead Item** |  | 2026-01-15 | 2026-07-22 |  |
|  | 1 | **Road Works - Civil** |  | 2026-01-15 | 2026-07-22 |  |
|  | 1 | **Steel Reinforcement** |  | 2026-01-15 | 2026-02-11 |  |
| HFR1-05-3350 |  | PO for Steel Reinforcement | 6d | 2026-01-15 | 2026-01-21 | HFR1-05-6990 SS |
| HFR1-05-5530 |  | Material Fabrication for Steel Reinforcement | 6d | 2026-01-22 | 2026-01-28 | HFR1-05-3350 |
| HFR1-05-8860 |  | Material Delivery for Steel Reinforcement | 12d | 2026-01-29 | 2026-02-11 | HFR1-05-5530 |
|  | 2 | **Ready Mixed Concrete** |  | 2026-01-15 | 2026-02-04 |  |
| HFR1-05-3360 |  | PO for Ready Mixed Concrete | 8d | 2026-01-15 | 2026-01-24 | HFR1-05-7970 SS |
| HFR1-05-5700 |  | Material Delivery for Ready Mixed Concrete | 10d | 2026-01-25 | 2026-02-04 | HFR1-05-3360 |
|  | 3 | **Water Proofing** |  | 2026-01-22 | 2026-04-01 |  |
| HFR1-05-3400 |  | PO for Water Proofing | 6d | 2026-01-22 | 2026-01-28 | HFR1-05-8780 |
| HFR1-05-5540 |  | Material Fabrication for Water Proofing | 25d | 2026-01-29 | 2026-02-28 | HFR1-05-3400, HFR1-05-8200, HFR1-05-8170, HFR1-05-8410, HFR1-05-8380 |
| HFR1-05-8990 |  | Material Delivery for Water Proofing | 25d | 2026-03-01 | 2026-04-01 | HFR1-05-5540 |
|  | 4 | **Aggregate Base Course** |  | 2026-01-22 | 2026-02-11 |  |
| HFR1-05-3430 |  | PO for Aggregate Base Course | 6d | 2026-01-22 | 2026-01-28 | HFR1-05-8740 |
| HFR1-05-5570 |  | Material Delivery for Aggregate Base Course | 12d | 2026-01-29 | 2026-02-11 | HFR1-05-3430 |
|  | 5 | **Bituminous Base & Wearing Course** |  | 2026-01-22 | 2026-06-10 |  |
| HFR1-05-3460 |  | PO for Bituminous Base & Wearing Cource | 6d | 2026-01-22 | 2026-01-28 | HFR1-05-8930 |
| HFR1-05-5550 |  | Material Delivery to the Site | 37d | 2026-04-26 | 2026-06-10 | HFR1-05-3460 FS+70d |
|  | 7 | **Precast Concrete Kerb** |  | 2026-01-22 | 2026-06-17 |  |
| HFR1-05-3500 |  | PO for Precast Concrete Kerb | 6d | 2026-01-22 | 2026-01-28 | HFR1-05-8940 |
| HFR1-05-5560 |  | Material Fabrication for Precast Concrete Kerb | 38d | 2026-03-22 | 2026-05-04 | HFR1-05-3500 FS+40d |
| HFR1-05-9110 |  | Material Delivery for Precast Concrete Kerb | 35d | 2026-05-05 | 2026-06-17 | HFR1-05-5560 |
|  | 8 | **Interlocking Block Pavers** |  | 2026-03-05 | 2026-07-01 |  |
| HFR1-05-3550 |  | PO for Interlocking Block Pavers | 4d | 2026-03-05 | 2026-03-09 | HFR1-05-8950 FS+35d, HFR1-05-5700, HFR1-05-8860 |
| HFR1-05-5000 |  | Material Fabrication for Interlocking Block Pavers | 37d | 2026-04-06 | 2026-05-18 | HFR1-05-3550 FS+20d |
| HFR1-05-9060 |  | Material Delivery for Interlocking Block Pavers | 35d | 2026-05-19 | 2026-07-01 | HFR1-05-5000 |
|  | 9 | **Pavement Markings** |  | 2026-03-11 | 2026-07-12 |  |
| HFR1-05-3570 |  | PO for Pavement Markings | 5d | 2026-03-11 | 2026-03-16 | HFR1-05-9070 FS+35d |
| HFR1-05-5020 |  | Material Fabrication for Pavement Markings | 40d | 2026-04-07 | 2026-05-23 | HFR1-05-8990, HFR1-05-3570 FS+15d |
| HFR1-05-9130 |  | Material Delivery for Pavement Markings | 40d | 2026-05-24 | 2026-07-12 | HFR1-05-5020 |
|  | 10 | **Traffic Signs** |  | 2026-03-16 | 2026-07-22 |  |
| HFR1-05-2920 |  | PO for Traffic Signs | 5d | 2026-03-16 | 2026-03-24 | HFR1-05-9180 FS+45d |
| HFR1-05-5010 |  | Material Fabrication for Traffic Signs | 75d | 2026-03-25 | 2026-06-23 | HFR1-05-2920 |
| HFR1-05-5760 |  | Material Delivery for Traffic Signs | 25d | 2026-06-24 | 2026-07-22 | HFR1-05-5010, HFR1-05-9110, HFR1-05-5550 |
|  | 2 | **Potable Water Network** |  | 2026-01-22 | 2026-03-17 |  |
|  | 1 | **HDPE Pipes** |  | 2026-01-22 | 2026-03-17 |  |
| HFR1-05-4930 |  | PO for HDPE Pipes | 6d | 2026-01-22 | 2026-01-28 | HFR1-05-6820 |
| HFR1-05-5650 |  | Material Fabrication for HDPE Pipes | 25d | 2026-01-29 | 2026-02-28 | HFR1-05-4930 |
| HFR1-05-8970 |  | Material Delivery for HDPE Pipes | 15d | 2026-03-01 | 2026-03-17 | HFR1-05-5650 |
|  | 2 | **Valves** |  | 2026-01-22 | 2026-03-17 |  |
| HFR1-05-4940 |  | PO for Valves | 6d | 2026-01-22 | 2026-01-28 | HFR1-05-7480 SS |
| HFR1-05-5660 |  | Material Fabrication for Valves | 25d | 2026-01-29 | 2026-02-28 | HFR1-05-4940 |
| HFR1-05-8980 |  | Material Delivery for Valves | 15d | 2026-03-01 | 2026-03-17 | HFR1-05-5660 |
|  | 3 | **Sewer Water Network** |  | 2026-01-15 | 2026-03-31 |  |
|  | 1 | **GRP Pipes** |  | 2026-01-15 | 2026-03-25 |  |
| HFR1-05-4950 |  | PO for GRP Pipes | 6d | 2026-01-15 | 2026-01-21 | HFR1-05-7490 SS |
| HFR1-05-5670 |  | Material Fabrication for GRP Pipes | 25d | 2026-01-22 | 2026-02-19 | HFR1-05-4950 |
| HFR1-05-8870 |  | Material Delivery for GRP Pipes | 25d | 2026-02-21 | 2026-03-25 | HFR1-05-5670 |
|  | 2 | **Manholes** |  | 2026-01-21 | 2026-03-31 |  |
| HFR1-05-4960 |  | PO for Manholes | 6d | 2026-01-21 | 2026-01-27 | HFR1-05-8460 SS |
| HFR1-05-5680 |  | Material Fabrication for Manholes | 25d | 2026-01-28 | 2026-02-26 | HFR1-05-4960 |
| HFR1-05-8880 |  | Material Delivery for Manholes | 25d | 2026-02-28 | 2026-03-31 | HFR1-05-5680 |
|  | 7 | **Civil Works - Buildings** |  | 2026-01-15 | 2026-07-12 |  |
|  | 2 | **Steel Reinforcement** |  | 2026-01-15 | 2026-01-28 |  |
| HFR1-05-3630 |  | PO for Steel Reinforcement | 3d | 2026-01-15 | 2026-01-18 | HFR1-05-7320 SS |
| HFR1-05-5580 |  | Material Fabrication for Steel Reinforcement | 4d | 2026-01-19 | 2026-01-22 | HFR1-05-3630 |
| HFR1-05-9160 |  | Material Delivery for Steel Reinforcement | 5d | 2026-01-24 | 2026-01-28 | HFR1-05-5580 |
|  | 1 | **Ready Mix Concrete** |  | 2026-01-21 | 2026-02-04 |  |
| HFR1-05-3670 |  | PO for Ready Mix Concrete | 5d | 2026-01-21 | 2026-01-26 | HFR1-05-8300 SS |
| HFR1-05-3700 |  | Material Delivery for Ready Mix Concrete | 8d | 2026-01-27 | 2026-02-04 | HFR1-05-3670 |
|  | 3 | **Masonry** |  | 2026-01-21 | 2026-02-04 |  |
| HFR1-05-3750 |  | PO for Masonry | 5d | 2026-01-21 | 2026-01-26 | HFR1-05-8310 SS |
| HFR1-05-3850 |  | Material Delivery for Masonry | 8d | 2026-01-27 | 2026-02-04 | HFR1-05-3750 |
|  | 5 | **Thermal & Moisture Protection** |  | 2026-01-21 | 2026-02-09 |  |
| HFR1-05-3920 |  | PO for Thermal & Moisture Protection | 5d | 2026-01-21 | 2026-01-26 | HFR1-05-8330 SS |
| HFR1-05-5030 |  | Material Fabrication for Thermal & Moisture Protection | 6d | 2026-01-27 | 2026-02-02 | HFR1-05-3920 |
| HFR1-05-9140 |  | Material Delivery for Thermal & Moisture Protection | 6d | 2026-02-03 | 2026-02-09 | HFR1-05-5030 |
|  | 6 | **Water Proofing System** |  | 2026-01-21 | 2026-02-07 |  |
| HFR1-05-3960 |  | PO for Water Proofing System | 3d | 2026-01-21 | 2026-01-24 | HFR1-05-8340 SS |

| ID | WBS | Task | Duration | Start | Finish | Predecessors |
| --- | --- | --- | --- | --- | --- | --- |
| HFR1-05-5710 |  | Material Fabrication for Water Proofing System | 6d | 2026-01-25 | 2026-01-31 | HFR1-05-3960 |
| HFR1-05-9090 |  | Material Delivery for Water Proofing System | 6d | 2026-02-01 | 2026-02-07 | HFR1-05-5710 |
|  | 8 | **Floor Finishes** |  | 2026-01-21 | 2026-02-07 |  |
| HFR1-05-4060 |  | PO for Floor Finishes | 3d | 2026-01-21 | 2026-01-24 | HFR1-05-8350 SS |
| HFR1-05-5590 |  | Material Fabrication for Floor Finishes | 6d | 2026-01-25 | 2026-01-31 | HFR1-05-4060 |
| HFR1-05-9170 |  | Material Delivery for Floor Finishes | 6d | 2026-02-01 | 2026-02-07 | HFR1-05-5590 |
|  | 9 | **Wall Finishes** |  | 2026-01-21 | 2026-02-07 |  |
| HFR1-05-4100 |  | PO for Wall Finishes | 3d | 2026-01-21 | 2026-01-24 | HFR1-05-8390 SS |
| HFR1-05-5720 |  | Material Fabrication for Wall Finishes | 6d | 2026-01-25 | 2026-01-31 | HFR1-05-4100 |
| HFR1-05-9100 |  | Material Delivery for Wall Finishes | 6d | 2026-02-01 | 2026-02-07 | HFR1-05-5720 |
|  | 10 | **Ceiling Finishes** |  | 2026-01-28 | 2026-06-16 |  |
| HFR1-05-4210 |  | PO for Ceiling Finishes | 8d | 2026-01-28 | 2026-02-05 | HFR1-05-8400 |
| HFR1-05-5730 |  | Material Fabrication for Ceiling Finishes | 45d | 2026-02-25 | 2026-04-21 | HFR1-05-4210 FS+15d, HFR1-05-9170, HFR1-05-9090, HFR1-05-9140 |
| HFR1-05-9370 |  | Material Delivery for Ceiling Finishes | 45d | 2026-04-22 | 2026-06-16 | HFR1-05-5730 |
|  | 12 | **Signages** |  | 2026-01-28 | 2026-06-16 |  |
| HFR1-05-4260 |  | PO for Signages | 8d | 2026-01-28 | 2026-02-05 | HFR1-05-8370 |
| HFR1-05-5740 |  | Material Fabrication for Signages | 45d | 2026-02-25 | 2026-04-21 | HFR1-05-9100, HFR1-05-4260 FS+15d |
| HFR1-05-9380 |  | Material Delivery for Signages | 45d | 2026-04-22 | 2026-06-16 | HFR1-05-5740, HFR1-05-8980, HFR1-05-8970 |
|  | 13 | **Logo** |  | 2026-01-28 | 2026-06-16 |  |
| HFR1-05-4330 |  | PO for Logo | 8d | 2026-01-28 | 2026-02-05 | HFR1-05-8440 |
| HFR1-05-5750 |  | Material Fabrication for Logo | 45d | 2026-02-25 | 2026-04-21 | HFR1-05-3850, HFR1-05-4330 FS+15d |
| HFR1-05-9390 |  | Material Delivery for Logo | 45d | 2026-04-22 | 2026-06-16 | HFR1-05-5750 |
|  | 15 | **Steel Fence** |  | 2026-01-28 | 2026-06-11 |  |
| HFR1-05-4370 |  | PO for Steel Fence | 8d | 2026-01-28 | 2026-02-05 | HFR1-05-8420 |
| HFR1-05-5770 |  | Material Fabrication for Steel Fence | 25d | 2026-04-12 | 2026-05-10 | HFR1-05-4370 FS+51d, HFR1-05-8980, HFR1-05-8970 |
| HFR1-05-9190 |  | Material Delivery for Steel Fence | 25d | 2026-05-11 | 2026-06-11 | HFR1-05-5770 |
|  | 16 | **Gates** |  | 2026-01-28 | 2026-07-12 |  |
| HFR1-05-4410 |  | PO for Gates | 8d | 2026-01-28 | 2026-02-05 | HFR1-05-8430 |
| HFR1-05-5780 |  | Material Fabrication for Gates | 42d | 2026-04-11 | 2026-06-01 | HFR1-05-4410 FS+50d |
| HFR1-05-9310 |  | Material Delivery for Gates | 35d | 2026-06-02 | 2026-07-12 | HFR1-05-5780 |
|  | 17 | **Pump Shed** |  | 2026-01-28 | 2026-06-17 |  |
| HFR1-05-4450 |  | PO for GatesPump Shed | 8d | 2026-01-28 | 2026-02-05 | HFR1-05-8450 |
| HFR1-05-5790 |  | Material Fabrication for Gates Pump Shed | 30d | 2026-04-12 | 2026-05-16 | HFR1-05-4450 FS+51d |
| HFR1-05-9200 |  | Material Delivery for Gates Pump Shed | 25d | 2026-05-17 | 2026-06-17 | HFR1-05-5790 |
|  | 5 | **Mechanical - Buildings** |  | 2026-01-28 | 2026-06-14 |  |
|  | 1 | **HDPE Pipes** |  | 2026-01-28 | 2026-03-07 |  |
| HFR1-05-4490 |  | PO for HDPE Pipes | 8d | 2026-01-28 | 2026-02-05 | HFR1-05-7020 |
| HFR1-05-5800 |  | Material Fabrication for HDPE Pipes | 12d | 2026-02-07 | 2026-02-19 | HFR1-05-4490 |
| HFR1-05-9150 |  | Material Delivery for HDPE Pipes | 12d | 2026-02-21 | 2026-03-07 | HFR1-05-5800 |
|  | 4 | **GRP pipes** |  | 2026-01-28 | 2026-02-28 |  |
| HFR1-05-4580 |  | PO for GRP pipes | 8d | 2026-01-28 | 2026-02-05 | HFR1-05-7990, HFR1-05-8010 |
| HFR1-05-5810 |  | Material Fabrication for GRP pipes | 12d | 2026-02-07 | 2026-02-19 | HFR1-05-4580 |
| HFR1-05-9210 |  | Material Delivery for GRP pipes | 6d | 2026-02-21 | 2026-02-28 | HFR1-05-5810 |
|  | 5 | **Manholes** |  | 2026-01-28 | 2026-02-28 |  |
| HFR1-05-4610 |  | PO for Manholes | 8d | 2026-01-28 | 2026-02-05 | HFR1-05-8020 |
| HFR1-05-5820 |  | Material Fabrication for Manholes | 12d | 2026-02-07 | 2026-02-19 | HFR1-05-4610 |
| HFR1-05-9220 |  | Material Delivery for Manholes | 6d | 2026-02-21 | 2026-02-28 | HFR1-05-5820 |
|  | 7 | **Water Supply System** |  | 2026-01-28 | 2026-02-28 |  |
| HFR1-05-4640 |  | PO for Water Supply System | 8d | 2026-01-28 | 2026-02-05 | HFR1-05-8070 |
| HFR1-05-5830 |  | Material Fabrication for Water Supply System | 12d | 2026-02-07 | 2026-02-19 | HFR1-05-4640 |
| HFR1-05-9230 |  | Material Delivery for Water Supply System | 6d | 2026-02-21 | 2026-02-28 | HFR1-05-5830 |
|  | 8 | **Upvc Pipes** |  | 2026-01-28 | 2026-02-28 |  |
| HFR1-05-4710 |  | PO for Upvc Pipes | 8d | 2026-01-28 | 2026-02-05 | HFR1-05-8040 |
| HFR1-05-5840 |  | Material Fabrication for Upvc Pipes | 12d | 2026-02-07 | 2026-02-19 | HFR1-05-4710 |
| HFR1-05-9240 |  | Material Delivery for Upvc Pipes | 6d | 2026-02-21 | 2026-02-28 | HFR1-05-5840 |
|  | 9 | **Roof Vent Caps** |  | 2026-01-28 | 2026-06-14 |  |
| HFR1-05-4730 |  | PO for Roof Vent Caps | 8d | 2026-01-28 | 2026-02-05 | HFR1-05-8080 |
| HFR1-05-5850 |  | Material Fabrication for Roof Vent Caps | 27d | 2026-04-11 | 2026-05-11 | HFR1-05-4730 FS+50d |
| HFR1-05-8900 |  | Material Delivery for Roof Vent Caps | 26d | 2026-05-12 | 2026-06-14 | HFR1-05-5850 |
|  | 10 | **Floor Drains** |  | 2026-01-28 | 2026-06-13 |  |
| HFR1-05-4740 |  | PO for Floor Drains | 8d | 2026-01-28 | 2026-02-05 | HFR1-05-8090 |
| HFR1-05-5860 |  | Material Fabrication for Floor Drains | 27d | 2026-03-30 | 2026-04-29 | HFR1-05-4740 FS+40d, HFR1-05-9150 |
| HFR1-05-8910 |  | Material Delivery for Floor Drains | 35d | 2026-04-30 | 2026-06-13 | HFR1-05-5860 |
|  | 6 | **Electrical - Buildings** |  | 2026-01-21 | 2026-07-09 |  |
|  | 2 | **Telecome Manholes & Handholes** |  | 2026-01-28 | 2026-03-05 |  |
| HFR1-05-4750 |  | PO for Telecome Manholes & Handholes | 8d | 2026-01-28 | 2026-02-05 | HFR1-05-7140 |
| HFR1-05-5870 |  | Material Fabrication for Telecome Manholes & Handholes | 15d | 2026-02-07 | 2026-02-24 | HFR1-05-4750 |
| HFR1-05-9000 |  | Material Delivery for Telecome Manholes & Handholes | 8d | 2026-02-25 | 2026-03-05 | HFR1-05-5870 |
|  | 1 | **Electrical manholes** |  | 2026-01-28 | 2026-03-07 |  |
| HFR1-05-4760 |  | PO for Electrical manholes | 8d | 2026-01-28 | 2026-02-05 | HFR1-05-8100 |

| ID | WBS | Task | Duration | Start | Finish | Predecessors |
| --- | --- | --- | --- | --- | --- | --- |
| HFR1-05-5880 |  | Material Fabrication for Electrical manholes | 15d | 2026-02-07 | 2026-02-24 | HFR1-05-4760 |
| HFR1-05-9250 |  | Material Delivery for Electrical manholes | 9d | 2026-02-25 | 2026-03-07 | HFR1-05-5880 |
|  | 3 | **Street Lighting Manholes** |  | 2026-01-28 | 2026-03-05 |  |
| HFR1-05-4770 |  | PO for Street Lighting Manholes | 8d | 2026-01-28 | 2026-02-05 | HFR1-05-8110 |
| HFR1-05-5890 |  | Material Fabrication for Street Lighting Manholes | 15d | 2026-02-07 | 2026-02-24 | HFR1-05-4770 |
| HFR1-05-9260 |  | Material Delivery for Street Lighting Manholes | 8d | 2026-02-25 | 2026-03-05 | HFR1-05-5890 |
|  | 4 | **Duct Banks** |  | 2026-01-28 | 2026-03-07 |  |
| HFR1-05-4780 |  | PO for Duct Banks | 8d | 2026-01-28 | 2026-02-05 | HFR1-05-8120 |
| HFR1-05-5900 |  | Material Fabrication for Duct Banks | 15d | 2026-02-07 | 2026-02-24 | HFR1-05-4780 |
| HFR1-05-9340 |  | Material Delivery for Duct Banks | 9d | 2026-02-25 | 2026-03-07 | HFR1-05-5900 |
|  | 16 | **Telecom & Data System** |  | 2026-01-28 | 2026-07-09 |  |
| HFR1-05-4790 |  | PO for Telecom & Data System | 8d | 2026-01-28 | 2026-02-05 | HFR1-05-8230 |
| HFR1-05-5910 |  | Material Fabrication for Telecom & Data System | 45d | 2026-04-05 | 2026-05-30 | HFR1-05-4790 FS+45d, HFR1-05-9260 |
| HFR1-05-9400 |  | Material Delivery for Telecom & Data System | 35d | 2026-05-31 | 2026-07-09 | HFR1-05-5910 |
|  | 17 | **Grounding System** |  | 2026-01-21 | 2026-02-10 |  |
| HFR1-05-4800 |  | PO for Grounding System | 4d | 2026-01-21 | 2026-01-25 | HFR1-05-8290 SS |
| HFR1-05-5920 |  | Material Fabrication for Grounding System | 7d | 2026-01-26 | 2026-02-02 | HFR1-05-4800 |
| HFR1-05-9010 |  | Material Delivery for Grounding System | 7d | 2026-02-03 | 2026-02-10 | HFR1-05-5920 |
|  | 1 | **Long Lead Item** |  | 2026-01-28 | 2026-07-18 |  |
|  | 7 | **Civil Works - Buildings** |  | 2026-01-28 | 2026-06-30 |  |
|  | 4 | **Steel Structure** |  | 2026-01-28 | 2026-04-13 |  |
| HFR1-05-1000 |  | PO for Steel Structure | 8d | 2026-01-28 | 2026-02-05 | HFR1-05-8320 |
| HFR1-05-1240 |  | Material Fabrication for Steel Structure | 23d | 2026-02-07 | 2026-03-05 | HFR1-05-1000 |
| HFR1-05-1300 |  | Material Delivery for Steel Structure | 22d | 2026-03-07 | 2026-04-04 | HFR1-05-9010, HFR1-05-1240, HFR1-05-9240, HFR1-05-9230, HFR1-05-9220, HFR1-05-9210 |
| HFR1-05-1580 |  | Staging Time For Steel Structure | 8d | 2026-04-05 | 2026-04-13 | HFR1-05-9340, HFR1-05-9260, HFR1-05-9250, HFR1-05-9000, HFR1-05-9240, HFR1-05-9230, HFR1-05-9220, HFR1-05-9210, HFR1-05-9150, HFR1-05-1300 |
|  | 7 | **Doors & Windows** |  | 2026-01-28 | 2026-06-15 |  |
| HFR1-05-2370 |  | PO for Doors & Windows | 8d | 2026-01-28 | 2026-02-05 | HFR1-05-8380 |
| HFR1-05-2380 |  | Material Fabrication for Doors & Windows | 52d | 2026-02-07 | 2026-04-12 | HFR1-05-2370 |
| HFR1-05-2960 |  | Material Delivery for Doors & Windows | 45d | 2026-04-13 | 2026-06-07 | HFR1-05-2380 |
| HFR1-05-3180 |  | Staging Time For Doors & Windows | 7d | 2026-06-08 | 2026-06-15 | HFR1-05-2960 |
|  | 11 | **Fittings** |  | 2026-01-28 | 2026-06-30 |  |
| HFR1-05-2390 |  | PO for Fittings | 8d | 2026-01-28 | 2026-02-05 | HFR1-05-8360 |
| HFR1-05-2400 |  | Material Fabrication for Fittings | 54d | 2026-02-07 | 2026-04-14 | HFR1-05-2390 |
| HFR1-05-2410 |  | Material Delivery for Fittings | 56d | 2026-04-15 | 2026-06-22 | HFR1-05-2400 |
| HFR1-05-2420 |  | Staging Time For Fittings | 7d | 2026-06-23 | 2026-06-30 | HFR1-05-2410 |
|  | 14 | **Pre Engineered Structures** |  | 2026-01-28 | 2026-03-28 |  |
| HFR1-05-9770 |  | PO for Pre Engineered Structures | 8d | 2026-01-28 | 2026-02-05 | HFR1-05-8410 |
| HFR1-05-9780 |  | Material Fabrication for Pre Engineered Structures | 17d | 2026-02-07 | 2026-02-26 | HFR1-05-9770 |
| HFR1-05-9790 |  | Material Delivery for Pre Engineered Structures | 15d | 2026-02-28 | 2026-03-16 | HFR1-05-9780 |
| HFR1-05-9800 |  | Staging Time For Pre Engineered Structures | 7d | 2026-03-17 | 2026-03-28 | HFR1-05-9790 |
|  | 5 | **Mechanical - Buildings** |  | 2026-01-28 | 2026-07-11 |  |
|  | 2 | **Fire Fighting System** |  | 2026-01-28 | 2026-06-18 |  |
| HFR1-05-4810 |  | PO for Fire Fighting System | 8d | 2026-01-28 | 2026-02-05 | HFR1-05-7020 |
| HFR1-05-5930 |  | Material Fabrication for Fire Fighting System | 45d | 2026-02-18 | 2026-04-15 | HFR1-05-4810 FS+10d |
| HFR1-05-9120 |  | Material Delivery for Fire Fighting System | 45d | 2026-04-16 | 2026-06-10 | HFR1-05-5930 |
| HFR1-05-9890 |  | Staging Time For Fire Fighting System | 7d | 2026-06-11 | 2026-06-18 | HFR1-05-9120, HFR1-05-3390 |
|  | 3 | **Valves** |  | 2026-01-28 | 2026-06-16 |  |
| HFR1-05-9550 |  | PO for Valves | 8d | 2026-01-28 | 2026-02-05 | HFR1-05-8000 |
| HFR1-05-9560 |  | Material Fabrication for Valves | 37d | 2026-03-09 | 2026-04-23 | HFR1-05-9550 FS+25d |
| HFR1-05-9570 |  | Material Delivery for Valves | 35d | 2026-04-25 | 2026-06-07 | HFR1-05-9560 |
| HFR1-05-9580 |  | Staging Time For Valves | 8d | 2026-06-08 | 2026-06-16 | HFR1-05-9570, HFR1-05-3390 |
|  | 6 | **Fire Protectional System** |  | 2026-01-28 | 2026-06-23 |  |
| HFR1-05-9510 |  | PO for Fire Protectional System | 8d | 2026-01-28 | 2026-02-05 | HFR1-05-8030 |
| HFR1-05-9520 |  | Material Fabrication for Fire Protectional System | 34d | 2026-03-09 | 2026-04-20 | HFR1-05-9510 FS+25d |
| HFR1-05-9530 |  | Material Delivery for Fire Protectional System | 45d | 2026-04-21 | 2026-06-15 | HFR1-05-9520 |
| HFR1-05-9540 |  | Staging Time For Fire Protectional System | 7d | 2026-06-16 | 2026-06-23 | HFR1-05-9530 |
|  | 11 | **Electric Water Heater** |  | 2026-01-28 | 2026-07-06 |  |
| HFR1-05-9620 |  | PO for Electric Water Heater | 8d | 2026-01-28 | 2026-02-05 | HFR1-05-8050 |
| HFR1-05-9630 |  | Material Fabrication for Electric Water Heater | 45d | 2026-03-09 | 2026-05-03 | HFR1-05-9620 FS+25d, HFR1-05-9340, HFR1-05-9260, HFR1-05-9250, HFR1-05-9000 |
| HFR1-05-9640 |  | Material Delivery for Electric Water Heater | 45d | 2026-05-04 | 2026-06-28 | HFR1-05-9630 |
| HFR1-05-9650 |  | Staging Time For Electric Water Heater | 7d | 2026-06-29 | 2026-07-06 | HFR1-05-9640, HFR1-05-8910, HFR1-05-8900, HFR1-05-9390, HFR1-05-9380, HFR1-05-9370, HFR1-05-9890 |
|  | 12 | **Heating,Ventilation & Air Conditioning** |  | 2026-01-28 | 2026-07-11 |  |
| HFR1-05-9940 |  | PO for Heating,Ventilation & Air Conditioning | 8d | 2026-01-28 | 2026-02-05 | HFR1-05-8060 |
| HFR1-05-9950 |  | Material Fabrication for Heating,Ventilation & Air Conditioning | 52d | 2026-03-17 | 2026-05-19 | HFR1-05-9940 FS+32d |
| HFR1-05-9960 |  | Material Delivery for Heating,Ventilation & Air Conditioning | 35d | 2026-05-20 | 2026-07-02 | HFR1-05-9950 |
| HFR1-05-9970 |  | Staging Time For Heating,Ventilation & Air Conditioning | 7d | 2026-07-04 | 2026-07-11 | HFR1-05-9960, HFR1-05-9540 |
|  | 2 | **Electrical - Buildings** |  | 2026-01-28 | 2026-07-18 |  |
|  | 5 | **Feeder Pillers** |  | 2026-01-28 | 2026-07-15 |  |
| HFR1-05-9980 |  | PO for Feeder Pillers | 8d | 2026-01-28 | 2026-02-05 | HFR1-05-8130 |
| HFR1-05-9990 |  | Material Fabrication for Feeder Pillers | 46d | 2026-03-09 | 2026-05-04 | HFR1-05-5570, HFR1-05-9980 FS+25d |

| ID | WBS | Task | Duration | Start | Finish | Predecessors |
| --- | --- | --- | --- | --- | --- | --- |
| HFR1-05-10000 |  | Material Delivery for Feeder Pillers | 52d | 2026-05-05 | 2026-07-07 | HFR1-05-9990 |
| HFR1-05-10010 |  | Staging Time For Feeder Pillers | 7d | 2026-07-08 | 2026-07-15 | HFR1-05-10000 |
|  | 6 | **Street Lighting Poles** |  | 2026-01-28 | 2026-07-18 |  |
| HFR1-05-2330 |  | PO for Street Lighting Poles | 8d | 2026-01-28 | 2026-02-05 | HFR1-05-8140 |
| HFR1-05-2340 |  | Material Fabrication for Street Lighting Poles | 45d | 2026-03-09 | 2026-05-03 | HFR1-05-2330 FS+25d |
| HFR1-05-2350 |  | Material Delivery for Street Lighting Poles | 55d | 2026-05-04 | 2026-07-09 | HFR1-05-2340 |
| HFR1-05-2360 |  | Staging Time For Street Lighting Poles | 7d | 2026-07-11 | 2026-07-18 | HFR1-05-2350 |
|  | 7 | **Street Lighting Luminaires** |  | 2026-01-28 | 2026-07-06 |  |
| HFR1-05-1960 |  | PO for Street Lighting Luminaires | 8d | 2026-01-28 | 2026-02-05 | HFR1-05-8180 |
| HFR1-05-2250 |  | Material Fabrication for Street Lighting Luminaires | 35d | 2026-03-09 | 2026-04-21 | HFR1-05-1960 FS+25d |
| HFR1-05-2260 |  | Material Delivery for Street Lighting Luminaires | 55d | 2026-04-22 | 2026-06-28 | HFR1-05-2250 |
| HFR1-05-2270 |  | Staging Time For Street Lighting Luminaires | 7d | 2026-06-29 | 2026-07-06 | HFR1-05-2260 |
|  | 8 | **Low Voltage Cables** |  | 2026-01-28 | 2026-07-06 |  |
| HFR1-05-9810 |  | PO for Low Voltage Cables | 8d | 2026-01-28 | 2026-02-05 | HFR1-05-8150 |
| HFR1-05-9820 |  | Material Fabrication for Low Voltage Cables | 45d | 2026-03-09 | 2026-05-03 | HFR1-05-9810 FS+25d |
| HFR1-05-9830 |  | Material Delivery for Low Voltage Cables | 45d | 2026-05-04 | 2026-06-28 | HFR1-05-9820 |
| HFR1-05-9840 |  | Staging Time For Low Voltage Cables | 7d | 2026-06-29 | 2026-07-06 | HFR1-05-9830 |
|  | 9 | **LED Lighting Fixtures** |  | 2026-01-28 | 2026-06-30 |  |
| HFR1-05-9900 |  | PO for LED Lighting Fixtures | 8d | 2026-01-28 | 2026-02-05 | HFR1-05-8190 |
| HFR1-05-9910 |  | Material Fabrication for LED Lighting Fixtures | 40d | 2026-03-09 | 2026-04-27 | HFR1-05-9900 FS+25d |
| HFR1-05-9920 |  | Material Delivery for LED Lighting Fixtures | 45d | 2026-04-28 | 2026-06-22 | HFR1-05-9910 |
| HFR1-05-9930 |  | Staging Time For LED Lighting Fixtures | 7d | 2026-06-23 | 2026-06-30 | HFR1-05-9920 |
|  | 10 | **Power Panel** |  | 2026-01-28 | 2026-07-12 |  |
| HFR1-05-4820 |  | PO for Power Panel | 8d | 2026-01-28 | 2026-02-05 | HFR1-05-8200 |
| HFR1-05-5940 |  | Material Fabrication for Power Panel | 45d | 2026-03-03 | 2026-04-27 | HFR1-05-4820 FS+20d |
| HFR1-05-9410 |  | Material Delivery for Power Panel | 55d | 2026-04-28 | 2026-07-04 | HFR1-05-5940 |
| HFR1-05-9420 |  | Staging Time For Power Panel | 7d | 2026-07-05 | 2026-07-12 | HFR1-05-9410 |
|  | 11 | **Control Panels** |  | 2026-01-28 | 2026-06-24 |  |
| HFR1-05-4830 |  | PO for Control Panels | 8d | 2026-01-28 | 2026-02-05 | HFR1-05-8160 |
| HFR1-05-5950 |  | Material Fabrication for Control Panels | 40d | 2026-03-03 | 2026-04-21 | HFR1-05-4830 FS+20d |
| HFR1-05-9270 |  | Material Delivery for Control Panels | 45d | 2026-04-22 | 2026-06-16 | HFR1-05-5950 |
| HFR1-05-9290 |  | Staging Time For Control Panels | 7d | 2026-06-17 | 2026-06-24 | HFR1-05-9270 |
|  | 12 | **Isolator & Disconnecting Switches** |  | 2026-01-28 | 2026-07-06 |  |
| HFR1-05-4840 |  | PO for Isolator & Disconnecting Switches | 8d | 2026-01-28 | 2026-02-05 | HFR1-05-8170 |
| HFR1-05-5960 |  | Material Fabrication for Isolator & Disconnecting Switches | 45d | 2026-03-09 | 2026-05-03 | HFR1-05-4840 FS+25d |
| HFR1-05-9430 |  | Material Delivery for Isolator & Disconnecting Switches | 45d | 2026-05-04 | 2026-06-28 | HFR1-05-5960 |
| HFR1-05-9440 |  | Staging Time For Isolator & Disconnecting Switches | 7d | 2026-06-29 | 2026-07-06 | HFR1-05-4600, HFR1-05-9430 |
|  | 13 | **Cable Trays** |  | 2026-01-28 | 2026-06-24 |  |
| HFR1-05-4850 |  | PO for Cable Trays | 8d | 2026-01-28 | 2026-02-05 | HFR1-05-8240 |
| HFR1-05-5970 |  | Material Fabrication for Cable Trays | 45d | 2026-03-09 | 2026-05-03 | HFR1-05-4850 FS+25d |
| HFR1-05-9450 |  | Material Delivery for Cable Trays | 35d | 2026-05-04 | 2026-06-16 | HFR1-05-5970 |
| HFR1-05-9460 |  | Staging Time For Cable Trays | 7d | 2026-06-17 | 2026-06-24 | HFR1-05-9450 |
|  | 14 | **KWHM** |  | 2026-01-28 | 2026-05-17 |  |
| HFR1-05-4860 |  | PO for KWHM | 8d | 2026-01-28 | 2026-02-05 | HFR1-05-8210 |
| HFR1-05-5980 |  | Material Fabrication for KWHM | 25d | 2026-03-09 | 2026-04-09 | HFR1-05-4860 FS+25d |
| HFR1-05-9470 |  | Material Delivery for KWHM | 25d | 2026-04-11 | 2026-05-09 | HFR1-05-5980, HFR1-05-9800 |
| HFR1-05-9480 |  | Staging Time For KWHM | 7d | 2026-05-10 | 2026-05-17 | HFR1-05-9470 |
|  | 15 | **Safety Disconnect Switches** |  | 2026-01-28 | 2026-06-24 |  |
| HFR1-05-4870 |  | PO for Safety Disconnect Switches | 8d | 2026-01-28 | 2026-02-05 | HFR1-05-8220 |
| HFR1-05-5990 |  | Material Fabrication for Safety Disconnect Switches | 40d | 2026-03-09 | 2026-04-27 | HFR1-05-4870 FS+25d |
| HFR1-05-9280 |  | Material Delivery for Safety Disconnect Switches | 40d | 2026-04-28 | 2026-06-16 | HFR1-05-5990 |
| HFR1-05-9300 |  | Staging Time For Safety Disconnect Switches | 7d | 2026-06-17 | 2026-06-24 | HFR1-05-9280, HFR1-05-9480 |
|  | 18 | **Lightning Protection System** |  | 2026-01-28 | 2026-07-04 |  |
| HFR1-05-4880 |  | PO for Lightning Protection System | 8d | 2026-01-28 | 2026-02-05 | HFR1-05-8280 |
| HFR1-05-6000 |  | Material Fabrication for Lightning Protection System | 44d | 2026-03-09 | 2026-05-02 | HFR1-05-4880 FS+25d |
| HFR1-05-9350 |  | Material Delivery for Lightning Protection System | 44d | 2026-05-03 | 2026-06-25 | HFR1-05-6000 |
| HFR1-05-9360 |  | Staging Time For Lightning Protection System | 7d | 2026-06-27 | 2026-07-04 | HFR1-05-9350, HFR1-05-9460, HFR1-05-9290 |
|  | 19 | **Fire Alarm System** |  | 2026-01-28 | 2026-07-14 |  |
| HFR1-05-9850 |  | PO for Fire Alarm System | 8d | 2026-01-28 | 2026-02-05 | HFR1-05-8800 |
| HFR1-05-9860 |  | Material Fabrication for Fire Alarm System | 52d | 2026-03-09 | 2026-05-11 | HFR1-05-9850 FS+25d |
| HFR1-05-9870 |  | Material Delivery for Fire Alarm System | 45d | 2026-05-12 | 2026-07-06 | HFR1-05-9860 |
| HFR1-05-9880 |  | Staging Time For Fire Alarm System | 7d | 2026-07-07 | 2026-07-14 | HFR1-05-9870, HFR1-05-9360, HFR1-05-9930, HFR1-05-9840 |
|  | 20 | **Solar Power Plant** |  | 2026-01-28 | 2026-06-24 |  |
| HFR1-05-4890 |  | PO for Solar Power Plant | 8d | 2026-01-28 | 2026-02-05 | HFR1-05-8810 |
| HFR1-05-6010 |  | Material Fabrication for Solar Power Plant | 40d | 2026-03-09 | 2026-04-27 | HFR1-05-4890 FS+25d |
| HFR1-05-9320 |  | Material Delivery for Solar Power Plant | 40d | 2026-04-28 | 2026-06-16 | HFR1-05-6010 |
| HFR1-05-9330 |  | Staging Time For Solar Power Plant | 7d | 2026-06-17 | 2026-06-24 | HFR1-05-9320 |
|  | 21 | **Skylight Fixtures** |  | 2026-01-28 | 2026-05-17 |  |
| HFR1-05-4900 |  | PO for Skylight Fixtures | 8d | 2026-01-28 | 2026-02-05 | HFR1-05-8790 |
| HFR1-05-6020 |  | Material Fabrication for Skylight Fixtures | 25d | 2026-03-09 | 2026-04-09 | HFR1-05-4900 FS+25d |

| ID | WBS | Task | Duration | Start | Finish | Predecessors |
| --- | --- | --- | --- | --- | --- | --- |
| HFR1-05-9490 |  | Material Delivery for Skylight Fixtures | 25d | 2026-04-11 | 2026-05-09 | HFR1-05-6020 |
| HFR1-05-9500 |  | Staging Time For Skylight Fixtures | 7d | 2026-05-10 | 2026-05-17 | HFR1-05-9490 |
|  | 3 | **Construction phase** |  | 2025-12-29 | 2026-09-26 |  |
|  | 6 | **Siite General Works** |  | 2025-12-29 | 2026-03-22 |  |
|  | 5 | **Earth Works -All Site** |  | 2025-12-29 | 2026-03-22 |  |
| HFR1-05-1250 |  | Demolition of the existing curbstone | 5d | 2025-12-29 | 2026-01-03 | HFR1-05-7910, HFR1-05-3110, HFR1-05-5690, HFR1-05-6860, HFR1-05-8890 |
| HFR1-05-1260 |  | Excavation for all site | 7d | 2026-01-04 | 2026-01-11 | HFR1-05-1250 |
| HFR1-05-1270 |  | Termite Protection (Soil Treatment) | 5d | 2026-01-12 | 2026-01-17 | HFR1-05-1260 |
| HFR1-05-1280 |  | Backfilling after G.BColumns nescks -Footing /4 layers | 3d | 2026-03-12 | 2026-03-15 | HFR1-05-3050 |
| HFR1-05-1290 |  | Backfilling after G.BColumns nescks -Footing/second four layers | 3d | 2026-03-16 | 2026-03-22 | HFR1-05-1280 |
|  | 4 | **Reinforced Concrete foundations Works all site** |  | 2026-01-27 | 2026-03-11 |  |
| HFR1-05-1010 |  | Lean Concrete Formwork Preparation and pouring | 5d | 2026-01-27 | 2026-02-01 | HFR1-05-1270, HFR1-05-3700 SS, HFR1-05-7530, HFR1-05-7520, HFR1-05-7510, HFR1-05-6950, HFR1-05-6940, HFR1-05-6930, HFR1-05-6920, HFR1-05-9050, HFR1-05-9040, HFR1-05-9030, HFR1-05-9020, HFR1-05-8570, HFR1-05-8650, HFR1-05-8560, HFR1-05-8550, HFR1-05-8540, HFR1-05-8650 FF, HFR1-05-6160, HFR1-05-7540, HFR1-05-7550, HFR1-05-7560, HFR1-05-7570, HFR1-05-7580, HFR1-05-7590, HFR1-05-7600, HFR1-05-7610, HFR1-05-7870, HFR1-05-8820, HFR1-05-8830, HFR1-05-7880, HFR1-05-8840, HFR1-05-8850, HFR1-05-8490, HFR1-05-8500, HFR1-05-8510, HFR1-05-8520, HFR1-05-8530, HFR1-05-8700, HFR1-05-8710, HFR1-05-8720, HFR1-05-8730, HFR1-05-8660, HFR1-05-8670, HFR1-05-8680, HFR1-05-8690, HFR1-05-8620, HFR1-05-8630, HFR1-05-8640, HFR1-05-8650 SS |
| HFR1-05-1020 |  | Lean Concrete Curing | 3d | 2026-02-02 | 2026-02-04 | HFR1-05-1010 |
| HFR1-05-1030 |  | Footings Rebar Fixing | 3d | 2026-02-05 | 2026-02-08 | HFR1-05-1020, HFR1-05-9160 SS |
| HFR1-05-1040 |  | Footings Formwork | 5d | 2026-02-09 | 2026-02-14 | HFR1-05-1030, HFR1-05-2990 |
| HFR1-05-1050 |  | Footings Inspection | 3d | 2026-02-15 | 2026-02-17 | HFR1-05-1040, HFR1-05-9010 |
| HFR1-05-1060 |  | Footings Concrete Pouring | 2d | 2026-02-18 | 2026-02-19 | HFR1-05-1050 |
| HFR1-05-1070 |  | Footings Curing | 2d | 2026-02-21 | 2026-02-23 | HFR1-05-1060 |
| HFR1-05-1080 |  | Grade beams Rebar Fixing | 4d | 2026-02-24 | 2026-02-28 | HFR1-05-1070 |
| HFR1-05-1090 |  | Form Works for Grade beams | 4d | 2026-03-01 | 2026-03-04 | HFR1-05-1080 |
| HFR1-05-3020 |  | Grade beams Inspection | 2d | 2026-03-05 | 2026-03-07 | HFR1-05-1090 |
| HFR1-05-3030 |  | Pouring Concrete works for Grade beams | 2d | 2026-03-08 | 2026-03-09 | HFR1-05-3020 |
| HFR1-05-3050 |  | Beams Curing Works | 2d | 2026-03-10 | 2026-03-11 | HFR1-05-3030 |
|  | 6 | **Insulation Works** |  | 2026-03-12 | 2026-03-22 |  |
| HFR1-05-2950 |  | Waterproofing bitumen Surface Preparation | 3d | 2026-03-12 | 2026-03-15 | HFR1-05-3050, HFR1-05-9140 |
| HFR1-05-2970 |  | Waterproofing Application | 3d | 2026-03-16 | 2026-03-22 | HFR1-05-9090, HFR1-05-2950 |
|  | 12 | **Hunger -1** |  | 2026-03-02 | 2026-09-26 |  |
|  | 7 | **Concrete works** |  | 2026-03-10 | 2026-03-25 |  |
| HFR1-05-2430 |  | SOG (Whole Factory) Rebar Mesh & MEP Sleeves | 4d | 2026-03-10 | 2026-03-14 | HFR1-05-3050 SS, HFR1-05-8700, HFR1-05-8710, HFR1-05-8720, HFR1-05-8730 |
| HFR1-05-2440 |  | SOG (Whole Factory) Form work | 5d | 2026-03-12 | 2026-03-17 | HFR1-05-3050 |
| HFR1-05-2510 |  | SOG (Whole Factory) Inspection | 2d | 2026-03-15 | 2026-03-16 | HFR1-05-2430 |
| HFR1-05-2520 |  | SOG (Whole Factory) Concrete Pouring | 3d | 2026-03-17 | 2026-03-23 | HFR1-05-2510, HFR1-05-9170 |
| HFR1-05-2530 |  | SOG (Whole Factory) Curing | 3d | 2026-03-17 | 2026-03-23 | HFR1-05-2520 SS |
| HFR1-05-2540 |  | SOG (Whole Factory) Vapor Barrier & Insulation | 2d | 2026-03-24 | 2026-03-25 | HFR1-05-2530, HFR1-05-2970, HFR1-05-1290, HFR1-05-2440, HFR1-05-8970, HFR1-05-8980 |
|  | 1 | **Steel Structure Works** |  | 2026-04-14 | 2026-05-31 |  |
| HFR1-05-2450 |  | Rated Steel Bollards Concrete Base Casting | 5d | 2026-04-14 | 2026-04-19 | HFR1-05-2540, HFR1-05-1580, HFR1-05-2440 |
| HFR1-05-2460 |  | Installation column steel & Steel Ladder | 6d | 2026-04-20 | 2026-04-26 | HFR1-05-2450, HFR1-05-9800 |
| HFR1-05-2470 |  | Install beam Rafter | 6d | 2026-04-27 | 2026-05-03 | HFR1-05-2460 |
| HFR1-05-2480 |  | Installation Purlin & bracing | 6d | 2026-04-27 | 2026-05-03 | HFR1-05-2470 SS |
| HFR1-05-2490 |  | Fire rating required | 15d | 2026-05-04 | 2026-05-20 | HFR1-05-2470, HFR1-05-1290 |
| HFR1-05-2500 |  | Installation sandwich panel | 6d | 2026-05-21 | 2026-05-31 | HFR1-05-2490, HFR1-05-9480, HFR1-05-9500 |
|  | 4 | **Architectural** |  | 2026-03-02 | 2026-07-16 |  |
| HFR1-05-2560 |  | Block work | 15d | 2026-03-02 | 2026-03-22 | HFR1-05-3850 FS+20d |
| HFR1-05-2570 |  | Plaster | 8d | 2026-03-23 | 2026-03-31 | HFR1-05-2560, HFR1-05-9100 |
| HFR1-05-2600 |  | Paint Primer + Putty + Final Coat INSIDE | 8d | 2026-04-25 | 2026-05-03 | HFR1-05-2570 FS+20d |
| HFR1-05-2610 |  | Marble chips on external walls and grooves | 7d | 2026-04-25 | 2026-05-02 | HFR1-05-2600 SS |
| HFR1-05-2620 |  | GRC panels with the mechanical fixat | 15d | 2026-05-03 | 2026-05-19 | HFR1-05-2640 SS |
| HFR1-05-2630 |  | External Paint Primer + Final Coat | 7d | 2026-05-03 | 2026-05-10 | HFR1-05-2610 |
| HFR1-05-2640 |  | Epoxy Paint | 15d | 2026-05-03 | 2026-05-19 | HFR1-05-2610 |
| HFR1-05-2660 |  | Windows Glass Installation | 7d | 2026-05-11 | 2026-05-18 | HFR1-05-2630 |
| HFR1-05-2690 |  | Cladding | 6d | 2026-05-19 | 2026-05-25 | HFR1-05-2660 |
| HFR1-05-2720 |  | Finishes floor Installation | 6d | 2026-05-20 | 2026-05-30 | HFR1-05-2620 |
| HFR1-05-2730 |  | External Paint Touch-up & Inspection | 7d | 2026-05-30 | 2026-06-06 | HFR1-05-2720 SS, HFR1-05-2690 |
| HFR1-05-2750 |  | Doors Installation | 7d | 2026-06-16 | 2026-06-23 | HFR1-05-3180, HFR1-05-2730, HFR1-05-2500, HFR1-05-2720, HFR1-05-2640 |
| HFR1-05-2770 |  | Metal works | 5d | 2026-07-01 | 2026-07-06 | HFR1-05-2420, HFR1-05-2750, HFR1-05-2750 FF |
| HFR1-05-2790 |  | Signage Layout & Marking Locations | 5d | 2026-07-07 | 2026-07-12 | HFR1-05-9380, HFR1-05-2770 |
| HFR1-05-2820 |  | Specialites Fittings | 4d | 2026-07-13 | 2026-07-16 | HFR1-05-2420, HFR1-05-2770, HFR1-05-2790 |
|  | 5 | **MEP WORKS** |  | 2026-03-23 | 2026-09-26 |  |
|  | 1 | **Plumping-FIRE-HVAC** |  | 2026-03-23 | 2026-09-26 |  |
| HFR1-05-2550 |  | Drainage Preparation (Marking + Sleeves + Supports) | 6d | 2026-03-23 | 2026-03-29 | HFR1-05-2560 |
| HFR1-05-2580 |  | HVAC Ducting Preparation (Marking + Supports + Hangers) | 5d | 2026-03-30 | 2026-04-04 | HFR1-05-2550 |
| HFR1-05-2800 |  | Exasut fans works | 6d | 2026-04-05 | 2026-04-11 | HFR1-05-2580 |
| HFR1-05-2590 |  | Roof drains | 4d | 2026-06-17 | 2026-06-21 | HFR1-05-2580, HFR1-05-9370, HFR1-05-8910 |
| HFR1-05-2650 |  | Drainage Installation (Pipes + Traps + Connections) | 4d | 2026-06-22 | 2026-06-25 | HFR1-05-2590, HFR1-05-9150, HFR1-05-9210, HFR1-05-9220, HFR1-05-9230, HFR1-05-9240 |
| HFR1-05-2670 |  | Gully trap works +Heavy duty covers | 4d | 2026-06-27 | 2026-06-30 | HFR1-05-2650, HFR1-05-8900 |
| HFR1-05-2810 |  | Exhaust diffusers and grills | 5d | 2026-06-29 | 2026-07-04 | HFR1-05-2800, HFR1-05-9650 SS |
| HFR1-05-2680 |  | Fire Fighting Installation (Pipes + Fittings + Valves + Cabinets) | 4d | 2026-07-01 | 2026-07-05 | HFR1-05-2670, HFR1-05-9890, HFR1-05-3390 |
| HFR1-05-2830 |  | Flexiable duct | 7d | 2026-07-05 | 2026-07-12 | HFR1-05-2810 |
| HFR1-05-2700 |  | Water sprinkles | 4d | 2026-07-06 | 2026-07-09 | HFR1-05-2680 |
| HFR1-05-2710 |  | Floor drains installations | 4d | 2026-07-11 | 2026-07-14 | HFR1-05-2700 |

| ID | WBS | Task | Duration | Start | Finish | Predecessors |
| --- | --- | --- | --- | --- | --- | --- |
| HFR1-05-2840 |  | WATER SUPPLY SYSTEM | 5d | 2026-07-13 | 2026-07-18 | HFR1-05-2830, HFR1-05-9580, HFR1-05-9650 |
| HFR1-05-2740 |  | Internal ducts (duct sealent+hangers+supports | 6d | 2026-07-15 | 2026-07-21 | HFR1-05-2710 |
| HFR1-05-2850 |  | HVAC Ducting Installation (Ducts + Fittings + Accessories) | 6d | 2026-07-19 | 2026-07-25 | HFR1-05-2840, HFR1-05-9650, HFR1-05-9970 |
| HFR1-05-2760 |  | Fire house cabinet works | 6d | 2026-07-22 | 2026-07-28 | HFR1-05-2740, HFR1-05-2820 |
| HFR1-05-2860 |  | Mini split units indoor | 7d | 2026-07-26 | 2026-08-02 | HFR1-05-2850, HFR1-05-5760, HFR1-05-5550, HFR1-05-9420 |
| HFR1-05-2780 |  | Inspection chambers with heavy duty covers | 6d | 2026-07-29 | 2026-08-04 | HFR1-05-2760 |
| HFR1-05-2870 |  | OS Y GAte valves ,installations and testing | 7d | 2026-08-03 | 2026-08-10 | HFR1-05-2860 |
| HFR1-05-2880 |  | Fire Alarm system Devices installations | 13d | 2026-08-11 | 2026-08-25 | HFR1-05-2870 |
| HFR1-05-2890 |  | HVAC Ducting Testing (Leak Test) & Final Inspection | 9d | 2026-08-26 | 2026-09-05 | HFR1-05-2880 |
| HFR1-05-2900 |  | Testing plumping system & Final Inspection | 9d | 2026-09-06 | 2026-09-15 | HFR1-05-2890 |
| HFR1-05-2910 |  | Fire Fighting Testing (Hydrostatic Test) & Final Inspection | 8d | 2026-09-16 | 2026-09-26 | HFR1-05-2900, HFR1-05-9540, HFR1-05-2780 |
|  | 2 | **Electrical Works** |  | 2026-03-23 | 2026-09-02 |  |
| HFR1-05-1970 |  | Socket and Outlets accessiors &Disconnect Switches Installations | 4d | 2026-03-23 | 2026-03-26 | HFR1-05-2560 |
| HFR1-05-1980 |  | Grounding system (conductors) | 4d | 2026-03-28 | 2026-03-31 | HFR1-05-1970 |
| HFR1-05-1990 |  | Light current devices installations & Final Inspection | 4d | 2026-04-01 | 2026-04-05 | HFR1-05-1980 |
| HFR1-05-2000 |  | Solar Power Plant (cable-inverter +panels | 4d | 2026-06-25 | 2026-06-29 | HFR1-05-1990, HFR1-05-9330, HFR1-05-2720 |
| HFR1-05-2010 |  | Grounding system (cable from electrical & telecom systems | 5d | 2026-06-30 | 2026-07-05 | HFR1-05-2000, HFR1-05-9010 |
| HFR1-05-2020 |  | Wiring Devices Sockets and outlets installations /all decices | 6d | 2026-07-06 | 2026-07-12 | HFR1-05-2010, HFR1-05-9340 |
| HFR1-05-2030 |  | Fire Alarm system ( pipes-wires -conduits | 6d | 2026-07-15 | 2026-07-21 | HFR1-05-2020, HFR1-05-9880 |
| HFR1-05-2040 |  | Fire Alarm system Testing works | 6d | 2026-07-22 | 2026-07-28 | HFR1-05-2030 |
| HFR1-05-2050 |  | Power System and lighting and lightcurrent Preparation (Marking + Conduits + Boxes) | 6d | 2026-07-29 | 2026-08-04 | HFR1-05-2040, HFR1-05-9000, HFR1-05-9250, HFR1-05-9260, HFR1-05-9400, HFR1-05-10010, HFR1-05-2360, HFR1-05-2270 |
| HFR1-05-2060 |  | Cable tray works (supports | 6d | 2026-08-05 | 2026-08-11 | HFR1-05-2050, HFR1-05-9460 |
| HFR1-05-2070 |  | Power System and lighting and lightcurrent Testing (Continuity + Insulation) & Final Inspection | 6d | 2026-08-12 | 2026-08-18 | HFR1-05-2060, HFR1-05-9930, HFR1-05-9440, HFR1-05-2780 |
| HFR1-05-2080 |  | Comission of Panel boards ( cables and testing) | 5d | 2026-08-19 | 2026-08-24 | HFR1-05-2070, HFR1-05-9420, HFR1-05-9290 |
| HFR1-05-2090 |  | Low voltage cables | 4d | 2026-08-25 | 2026-08-29 | HFR1-05-2080, HFR1-05-9840 |
| HFR1-05-2100 |  | Comission of Lighting Fixtures Installations /LED lighting | 4d | 2026-08-30 | 2026-09-02 | HFR1-05-2090, HFR1-05-9360 |
|  | 3 | **Hunger -2** |  | 2026-03-12 | 2026-09-26 |  |
|  | 7 | **Concrete works** |  | 2026-03-12 | 2026-03-29 |  |
| HFR1-05-1310 |  | SOG (Whole Factory) Rebar Mesh & MEP Sleeves | 4d | 2026-03-12 | 2026-03-16 | HFR1-05-3050 |
| HFR1-05-1320 |  | SOG (Whole Factory) Form work | 5d | 2026-03-12 | 2026-03-17 | HFR1-05-3050 |
| HFR1-05-1330 |  | SOG (Whole Factory) Inspection | 2d | 2026-03-17 | 2026-03-22 | HFR1-05-1310 |
| HFR1-05-1340 |  | SOG (Whole Factory) Concrete Pouring | 3d | 2026-03-23 | 2026-03-25 | HFR1-05-1330, HFR1-05-2440 |
| HFR1-05-1350 |  | SOG (Whole Factory) Curing | 3d | 2026-03-26 | 2026-03-29 | HFR1-05-1340 |
| HFR1-05-1360 |  | SOG (Whole Factory) Vapor Barrier & Insulation | 2d | 2026-03-26 | 2026-03-28 | HFR1-05-1350 SS, HFR1-05-1320 |
|  | 1 | **Steelstructure works** |  | 2026-04-14 | 2026-05-19 |  |
| HFR1-05-1370 |  | Rated Steel Bollards Concrete Base Casting | 2d | 2026-04-14 | 2026-04-15 | HFR1-05-1360, HFR1-05-1580, HFR1-05-1350, HFR1-05-1990, HFR1-05-2800, HFR1-05-2970 |
| HFR1-05-1380 |  | Installation column steel & Steel Ladder | 6d | 2026-04-16 | 2026-04-22 | HFR1-05-1370 |
| HFR1-05-1390 |  | Install beam Rafter | 6d | 2026-04-23 | 2026-04-29 | HFR1-05-1380 |
| HFR1-05-1400 |  | Installation Purlin & bracing | 5d | 2026-04-23 | 2026-04-28 | HFR1-05-1390 SS |
| HFR1-05-1410 |  | Fire rating required | 12d | 2026-04-29 | 2026-05-12 | HFR1-05-1400 |
| HFR1-05-1420 |  | Installation sandwich panel | 6d | 2026-05-13 | 2026-05-19 | HFR1-05-1410, HFR1-05-2480 |
|  | 4 | **Architectural** |  | 2026-03-24 | 2026-07-14 |  |
| HFR1-05-1430 |  | Block work | 10d | 2026-03-24 | 2026-04-04 | HFR1-05-2560 FS+1d |
| HFR1-05-1440 |  | Plaster | 10d | 2026-04-05 | 2026-04-15 | HFR1-05-1430, HFR1-05-1350, HFR1-05-1320, HFR1-05-1360 |
| HFR1-05-1450 |  | Paint Primer + Putty + Final Coat INSIDE | 8d | 2026-05-04 | 2026-05-12 | HFR1-05-1440 FS+15d |
| HFR1-05-1460 |  | Marble chips on external walls and grooves | 7d | 2026-05-04 | 2026-05-11 | HFR1-05-1450 SS |
| HFR1-05-1470 |  | GRC panels with the mechanical fixat | 15d | 2026-05-12 | 2026-06-01 | HFR1-05-1490 SS |
| HFR1-05-1480 |  | External Paint Primer + Final Coat | 7d | 2026-05-12 | 2026-05-19 | HFR1-05-1460 |
| HFR1-05-1490 |  | Epoxy Paint | 15d | 2026-05-12 | 2026-06-01 | HFR1-05-1460 |
| HFR1-05-1500 |  | Windows Glass Installation | 7d | 2026-05-20 | 2026-05-31 | HFR1-05-1480, HFR1-05-9480 |
| HFR1-05-1510 |  | Cladding | 6d | 2026-06-01 | 2026-06-07 | HFR1-05-1500, HFR1-05-1420 |
| HFR1-05-1520 |  | Finishes floor Installation | 6d | 2026-06-02 | 2026-06-08 | HFR1-05-1470 |
| HFR1-05-1530 |  | External Paint Touch-up & Inspection | 7d | 2026-06-08 | 2026-06-15 | HFR1-05-1520 SS, HFR1-05-1510 |
| HFR1-05-1540 |  | Doors Installation | 7d | 2026-06-16 | 2026-06-23 | HFR1-05-1530 |
| HFR1-05-1550 |  | Metal works | 5d | 2026-06-24 | 2026-06-29 | HFR1-05-1540, HFR1-05-1540 FF |
| HFR1-05-1560 |  | Signage Layout & Marking Locations | 5d | 2026-06-30 | 2026-07-05 | HFR1-05-1550, HFR1-05-9380 |
| HFR1-05-1570 |  | Specialites Fittings | 8d | 2026-07-06 | 2026-07-14 | HFR1-05-1550, HFR1-05-1560, HFR1-05-1420 |
|  | 5 | **MEP WORKS** |  | 2026-03-24 | 2026-09-26 |  |
|  | 1 | **Plumping-FIRE-HVAC** |  | 2026-03-24 | 2026-09-26 |  |
| HFR1-05-1590 |  | Drainage Preparation (Marking + Sleeves + Supports) | 6d | 2026-03-24 | 2026-03-30 | HFR1-05-1430 SS |
| HFR1-05-1600 |  | HVAC Ducting Preparation (Marking + Supports + Hangers) | 7d | 2026-03-31 | 2026-04-07 | HFR1-05-1590 |
| HFR1-05-1610 |  | Roof drains | 4d | 2026-04-08 | 2026-04-12 | HFR1-05-1600 |
| HFR1-05-1700 |  | Exasut fans works | 8d | 2026-04-08 | 2026-04-16 | HFR1-05-1600 |
| HFR1-05-1620 |  | Drainage Installation (Pipes + Traps + Connections) | 4d | 2026-04-13 | 2026-04-16 | HFR1-05-1610 |
| HFR1-05-1630 |  | Gully trap works +Heavy duty covers | 4d | 2026-04-18 | 2026-04-21 | HFR1-05-1620 |
| HFR1-05-1710 |  | Exhaust diffusers and grills | 6d | 2026-04-18 | 2026-04-23 | HFR1-05-1700 |
| HFR1-05-1640 |  | Fire Fighting Installation (Pipes + Fittings + Valves + Cabinets) | 12d | 2026-04-22 | 2026-05-05 | HFR1-05-1630 |
| HFR1-05-1720 |  | Flexiable duct | 7d | 2026-04-25 | 2026-05-02 | HFR1-05-1710 |
| HFR1-05-1730 |  | WATER SUPPLY SYSTEM | 13d | 2026-05-03 | 2026-05-17 | HFR1-05-1720 |
| HFR1-05-1650 |  | Water sprinkles | 10d | 2026-05-06 | 2026-05-17 | HFR1-05-1640 |

| ID | WBS | Task | Duration | Start | Finish | Predecessors |
| --- | --- | --- | --- | --- | --- | --- |
| HFR1-05-1660 |  | Floor drains installations | 16d | 2026-05-18 | 2026-06-08 | HFR1-05-1650 |
| HFR1-05-1740 |  | HVAC DuctingInstallation (Ducts + Fittings + Accessories) | 16d | 2026-05-18 | 2026-06-08 | HFR1-05-1730 |
| HFR1-05-1670 |  | Internal ducts (duct sealent+hangers+supports | 18d | 2026-06-09 | 2026-06-29 | HFR1-05-1660 |
| HFR1-05-1750 |  | Mini split units indoor | 16d | 2026-06-09 | 2026-06-27 | HFR1-05-1740 |
| HFR1-05-1760 |  | OS Y GAte valves ,installations and testing | 13d | 2026-06-28 | 2026-07-12 | HFR1-05-1750 |
| HFR1-05-1680 |  | Fire house cabinet works | 19d | 2026-06-30 | 2026-07-21 | HFR1-05-1670 |
| HFR1-05-1770 |  | Fire Alarm system Devices installations | 15d | 2026-07-13 | 2026-07-29 | HFR1-05-1760 |
| HFR1-05-1690 |  | Inspection chambers with heavu duty covers | 16d | 2026-07-22 | 2026-08-09 | HFR1-05-1680 |
| HFR1-05-1780 |  | HVAC Ducting Testing (Leak Test) & Final Inspection | 16d | 2026-07-30 | 2026-08-17 | HFR1-05-1770, HFR1-05-1570 |
| HFR1-05-1790 |  | Testing plumping system & Final Inspection | 16d | 2026-08-18 | 2026-09-05 | HFR1-05-1780 |
| HFR1-05-1800 |  | Fire Fighting Testing (Hydrostatic Test) & Final Inspection | 17d | 2026-09-06 | 2026-09-26 | HFR1-05-1790, HFR1-05-1570, HFR1-05-1690 |
|  | 2 | **Electrical Works** |  | 2026-04-05 | 2026-07-08 |  |
| HFR1-05-2110 |  | Socket and Outlets accessiors &Disconnect Switches Installations | 5d | 2026-04-05 | 2026-04-09 | HFR1-05-1430 |
| HFR1-05-2120 |  | Grounding system (conductors) | 5d | 2026-04-11 | 2026-04-15 | HFR1-05-2110 |
| HFR1-05-2130 |  | Light current devices installations & Final Inspection | 5d | 2026-04-16 | 2026-04-21 | HFR1-05-2120 |
| HFR1-05-2140 |  | Solar Power Plant (cable-inverter +panels | 5d | 2026-04-22 | 2026-04-27 | HFR1-05-2130 |
| HFR1-05-2150 |  | Grounding system (cable from electrical & telecom systems | 5d | 2026-04-28 | 2026-05-03 | HFR1-05-2140 |
| HFR1-05-2160 |  | Wiring Devices Sockets and outlets installations /all decices | 6d | 2026-05-04 | 2026-05-10 | HFR1-05-2150 |
| HFR1-05-2170 |  | Fire Alarm system ( pipes-wires -conduits | 6d | 2026-05-11 | 2026-05-17 | HFR1-05-2160 |
| HFR1-05-2180 |  | Fire Alarm system Testing works | 6d | 2026-05-18 | 2026-05-24 | HFR1-05-2170 |
| HFR1-05-2190 |  | Power System and lighting and lightcurrent Preparation (Marking + Conduits + Boxes) | 6d | 2026-05-25 | 2026-06-03 | HFR1-05-2180 |
| HFR1-05-2200 |  | Cable tray works (supports | 6d | 2026-06-04 | 2026-06-10 | HFR1-05-2190 |
| HFR1-05-2210 |  | Power System and lighting and lightcurrent Testing (Continuity + Insulation) & Final Inspection | 6d | 2026-06-11 | 2026-06-17 | HFR1-05-2200 |
| HFR1-05-2220 |  | Comission of Panel boards ( cables and testing) | 6d | 2026-06-18 | 2026-06-24 | HFR1-05-2210 |
| HFR1-05-2230 |  | Low voltage cables | 6d | 2026-06-25 | 2026-07-01 | HFR1-05-2220 |
| HFR1-05-2240 |  | Comission of Lighting Fixtures Installations /LED lighting | 6d | 2026-07-02 | 2026-07-08 | HFR1-05-2230 |
|  | 1 | **Septic Tank** |  | 2026-03-10 | 2026-06-28 |  |
|  | 1 | **Concrete Works** |  | 2026-03-10 | 2026-05-12 |  |
| HFR1-05-1100 |  | Tank FoundationRebar Fixing | 6d | 2026-03-10 | 2026-03-16 | HFR1-05-2430 SS, HFR1-05-8620, HFR1-05-8640, HFR1-05-8650 |
| HFR1-05-1110 |  | Tank Foundation Formwork | 5d | 2026-03-17 | 2026-03-25 | HFR1-05-1100, HFR1-05-8630 |
| HFR1-05-1120 |  | Tank Foundation Inspection | 3d | 2026-03-26 | 2026-03-29 | HFR1-05-1110 |
| HFR1-05-1130 |  | Tank Foundation Concrete Pouring | 3d | 2026-03-30 | 2026-04-01 | HFR1-05-1120 |
| HFR1-05-1140 |  | Tank Foundation Curing | 3d | 2026-04-02 | 2026-04-05 | HFR1-05-1130 |
| HFR1-05-1150 |  | Tank Walls Rebar Fixing | 5d | 2026-04-06 | 2026-04-11 | HFR1-05-1140 |
| HFR1-05-1160 |  | Tank Walls Formwork | 6d | 2026-04-12 | 2026-04-18 | HFR1-05-1150 |
| HFR1-05-1170 |  | Tank Walls Inspection | 4d | 2026-04-19 | 2026-04-22 | HFR1-05-1160 |
| HFR1-05-1180 |  | Tank Walls Concrete Pouring | 3d | 2026-04-23 | 2026-04-26 | HFR1-05-1170 |
| HFR1-05-1190 |  | Tank Slab Rebar Fixing | 3d | 2026-04-27 | 2026-04-29 | HFR1-05-1180 |
| HFR1-05-1200 |  | Tank Slab Formwork | 3d | 2026-04-30 | 2026-05-03 | HFR1-05-1190 |
| HFR1-05-1210 |  | Tank Slab Inspection | 2d | 2026-05-04 | 2026-05-05 | HFR1-05-1200 |
| HFR1-05-1220 |  | Tank Slab Concrete Pouring | 3d | 2026-05-06 | 2026-05-09 | HFR1-05-1210 |
| HFR1-05-1230 |  | Tank Slab Curing | 3d | 2026-05-10 | 2026-05-12 | HFR1-05-1220 |
|  | 2 | **Insulation works** |  | 2026-05-13 | 2026-06-28 |  |
| HFR1-05-2280 |  | Polyurethane Waterproof Coating internal insulation | 2d | 2026-05-13 | 2026-05-14 | HFR1-05-1230 |
| HFR1-05-2290 |  | APP membrane 4mm External insulation | 2d | 2026-05-16 | 2026-05-17 | HFR1-05-2280 |
| HFR1-05-2300 |  | Extruded polystyrene External insulation | 5d | 2026-05-18 | 2026-05-23 | HFR1-05-2290 |
| HFR1-05-2310 |  | Geotextile sheet External insulation | 6d | 2026-05-24 | 2026-06-02 | HFR1-05-2300 |
| HFR1-05-2320 |  | Protection board / insulation | 6d | 2026-06-03 | 2026-06-09 | HFR1-05-2310 |
| HFR1-05-9590 |  | Sewage tank | 5d | 2026-06-10 | 2026-06-15 | HFR1-05-2320 |
| HFR1-05-9600 |  | Heavy duty cover installations | 4d | 2026-06-16 | 2026-06-20 | HFR1-05-9590 |
| HFR1-05-9610 |  | Backfilling | 7d | 2026-06-21 | 2026-06-28 | HFR1-05-9600 |
|  | 9 | **Mosque -elec room-Toilets Works** |  | 2026-03-26 | 2026-07-27 |  |
|  | 12 | **Concrete works** |  | 2026-03-26 | 2026-05-05 |  |
| HFR1-05-9660 |  | Beam--steel rebar | 4d | 2026-03-26 | 2026-03-30 | HFR1-05-1310, HFR1-05-1340, HFR1-05-8660, HFR1-05-8670, HFR1-05-8680, HFR1-05-8690 |
| HFR1-05-9670 |  | Beam-from work | 4d | 2026-03-31 | 2026-04-04 | HFR1-05-9660 |
| HFR1-05-9680 |  | Beam-Inspection | 1d | 2026-04-05 | 2026-04-05 | HFR1-05-9670 |
| HFR1-05-9690 |  | Beam Concrete Pouring | 3d | 2026-04-06 | 2026-04-08 | HFR1-05-9680 |
| HFR1-05-9700 |  | Beam-Curing | 3d | 2026-04-09 | 2026-04-12 | HFR1-05-9690 |
| HFR1-05-9710 |  | Concrete works for slab -steel rebar | 5d | 2026-04-13 | 2026-04-18 | HFR1-05-9700 |
| HFR1-05-9720 |  | Concrete works for slab -from work | 4d | 2026-04-19 | 2026-04-22 | HFR1-05-9710 |
| HFR1-05-9730 |  | Slabs Inspection | 2d | 2026-04-23 | 2026-04-25 | HFR1-05-9720 |
| HFR1-05-9740 |  | Slabs Concrete Pouring | 2d | 2026-04-26 | 2026-04-27 | HFR1-05-9730 |
| HFR1-05-9750 |  | Slabs Curing | 3d | 2026-04-28 | 2026-04-30 | HFR1-05-9740 |
| HFR1-05-9760 |  | SLab removal of form works | 4d | 2026-05-02 | 2026-05-05 | HFR1-05-9750 |
|  | 4 | **Architectural** |  | 2026-05-02 | 2026-07-27 |  |
|  | 1 | **Finishes** |  | 2026-05-02 | 2026-07-12 |  |
| HFR1-05-3370 |  | Block works -internal | 7d | 2026-05-02 | 2026-05-09 | HFR1-05-3380 SS |
| HFR1-05-3380 |  | Fire rated blocks for elec rooms | 7d | 2026-05-02 | 2026-05-09 | HFR1-05-9750 |
| HFR1-05-3440 |  | External plaster | 7d | 2026-05-10 | 2026-05-17 | HFR1-05-9760, HFR1-05-3380 |
| HFR1-05-3490 |  | granite Insulation (extruded polystyrene) | 5d | 2026-05-18 | 2026-05-23 | HFR1-05-3440, HFR1-05-3370 |

| ID | WBS | Task | Duration | Start | Finish | Predecessors |
| --- | --- | --- | --- | --- | --- | --- |
| HFR1-05-3520 |  | foam concrete screed 50mm | 5d | 2026-05-24 | 2026-06-01 | HFR1-05-3490 |
| HFR1-05-3640 |  | Block works -External | 5d | 2026-06-02 | 2026-06-07 | HFR1-05-3520 |
| HFR1-05-3710 |  | Plaster FIRST Fix -dotted and spalsh coats | 5d | 2026-06-08 | 2026-06-13 | HFR1-05-3640 |
| HFR1-05-3760 |  | Plaster Application (Scratch + Brown + Final) | 5d | 2026-06-14 | 2026-06-18 | HFR1-05-3640, HFR1-05-3720 |
| HFR1-05-3860 |  | external Paint Surface Preparation INSIDE | 5d | 2026-06-20 | 2026-06-24 | HFR1-05-3760, HFR1-05-3710 |
| HFR1-05-3870 |  | Gypsum Sanding & Final Inspection | 8d | 2026-06-20 | 2026-06-28 | HFR1-05-3760 |
| HFR1-05-3880 |  | Waterproofing for wet areas | 8d | 2026-06-20 | 2026-06-28 | HFR1-05-3760, HFR1-05-3710 |
| HFR1-05-3890 |  | APP modified bituminous membrane | 5d | 2026-06-20 | 2026-06-24 | HFR1-05-3760, HFR1-05-3710 |
| HFR1-05-3900 |  | External Paint Surface Preparation | 5d | 2026-06-20 | 2026-06-24 | HFR1-05-3760 |
| HFR1-05-3980 |  | aluminum framed double glazed windows | 5d | 2026-06-25 | 2026-06-30 | HFR1-05-3900 |
| HFR1-05-4000 |  | Paint Primer + Putty + Final Coat INSIDE | 5d | 2026-06-25 | 2026-06-30 | HFR1-05-3760, HFR1-05-3710, HFR1-05-3860, HFR1-05-3900 |
| HFR1-05-4010 |  | Internal Paint Touch-up & Inspection INSIDE | 5d | 2026-06-25 | 2026-06-30 | HFR1-05-3760, HFR1-05-3710, HFR1-05-3980 SS |
| HFR1-05-4020 |  | Supply and install carpet rolls | 5d | 2026-06-25 | 2026-06-30 | HFR1-05-3890 |
| HFR1-05-3950 |  | 300 micron polyethylene sheet | 4d | 2026-06-29 | 2026-07-02 | HFR1-05-3880 |
| HFR1-05-3970 |  | polyisocynurate cover board | 5d | 2026-06-29 | 2026-07-04 | HFR1-05-3880 |
| HFR1-05-4070 |  | Ceramic walls for toilets | 5d | 2026-06-30 | 2026-07-05 | HFR1-05-3930 |
| HFR1-05-4120 |  | External Paint Primer + Final Coat | 5d | 2026-07-01 | 2026-07-06 | HFR1-05-4010 |
| HFR1-05-4130 |  | Gypsum Framing Installation For mospue and toilets | 5d | 2026-07-01 | 2026-07-06 | HFR1-05-4010 |
| HFR1-05-4080 |  | Roof drains | 5d | 2026-07-04 | 2026-07-08 | HFR1-05-3950 |
| HFR1-05-4090 |  | 50mm thk loose gravel toppings | 4d | 2026-07-04 | 2026-07-07 | HFR1-05-3950 |
| HFR1-05-4160 |  | Ceramic tiles for toilets | 5d | 2026-07-06 | 2026-07-11 | HFR1-05-4070 |
| HFR1-05-4180 |  | geotextile sheets | 5d | 2026-07-06 | 2026-07-11 | HFR1-05-4070 |
| HFR1-05-4220 |  | install fire rated door+ with hardware set type HW2 paint finish | 5d | 2026-07-07 | 2026-07-12 | HFR1-05-4130 |
| HFR1-05-4230 |  | External Paint Touch-up & Inspection | 5d | 2026-07-07 | 2026-07-12 | HFR1-05-4120 |
| HFR1-05-4240 |  | Gypsum Boards Fixing + Joint Treatment | 5d | 2026-07-07 | 2026-07-12 | HFR1-05-4130 |
|  | 2 | **Final installation works** |  | 2026-06-08 | 2026-07-27 |  |
| HFR1-05-3720 |  | AAC panels for internal wall including alignment and joint filling | 5d | 2026-06-08 | 2026-06-13 | HFR1-05-3640 |
| HFR1-05-3770 |  | External Metal stairs | 3d | 2026-06-14 | 2026-06-16 | HFR1-05-3710 |
| HFR1-05-4250 |  | signs for toilets & prayer room | 5d | 2026-07-07 | 2026-07-12 | HFR1-05-9390, HFR1-05-3870, HFR1-05-4120 |
| HFR1-05-4170 |  | AAC panels for roof parapet including alignment and joint filling | 5d | 2026-07-09 | 2026-07-14 | HFR1-05-4080 |
| HFR1-05-4280 |  | Toilet accessiors installations | 5d | 2026-07-12 | 2026-07-16 | HFR1-05-4160 |
| HFR1-05-4290 |  | DOOrs installations with hardware set type HW1 paint finish | 4d | 2026-07-13 | 2026-07-16 | HFR1-05-4220 |
| HFR1-05-4300 |  | Mosque Arch Carpet | 5d | 2026-07-13 | 2026-07-18 | HFR1-05-4240 |
| HFR1-05-4270 |  | extruded aluminum flashing | 5d | 2026-07-15 | 2026-07-20 | HFR1-05-3720, HFR1-05-4170, HFR1-05-4180, HFR1-05-4090, HFR1-05-3970, HFR1-05-4020, HFR1-05-4000, HFR1-05-3890, HFR1-05-3860 |
| HFR1-05-4340 |  | aluminum framed double glazed windows | 5d | 2026-07-18 | 2026-07-22 | HFR1-05-4290 |
| HFR1-05-4350 |  | phenolic partitions with doors for toilets | 5d | 2026-07-18 | 2026-07-22 | HFR1-05-4280 |
| HFR1-05-4360 |  | Wood skirting works | 8d | 2026-07-19 | 2026-07-27 | HFR1-05-4300, HFR1-05-2240 |
|  | 1 | **Electromecanic** |  | 2026-06-17 | 2026-06-29 |  |
| HFR1-05-3830 |  | Exasut fans | 6d | 2026-06-17 | 2026-06-23 | HFR1-05-3770 |
| HFR1-05-3930 |  | Plumping fixtures | 5d | 2026-06-24 | 2026-06-29 | HFR1-05-3830 |
|  | 2 | **GRB Tank** |  | 2026-03-17 | 2026-08-12 |  |
| HFR1-05-1810 |  | Tank Foundation Rebar Fixing | 8d | 2026-03-17 | 2026-03-29 | HFR1-05-1100, HFR1-05-8570, HFR1-05-8560, HFR1-05-8550, HFR1-05-8540 |
| HFR1-05-1820 |  | Tank Foundation Formwork | 8d | 2026-03-30 | 2026-04-07 | HFR1-05-1810 |
| HFR1-05-1830 |  | Tank Foundation Inspection | 4d | 2026-04-08 | 2026-04-12 | HFR1-05-1820 |
| HFR1-05-1840 |  | Tank Foundation Concrete Pouring | 10d | 2026-04-13 | 2026-04-23 | HFR1-05-1830 |
| HFR1-05-1850 |  | Tank Foundation Curing | 10d | 2026-04-25 | 2026-05-05 | HFR1-05-1840 |
| HFR1-05-1860 |  | Tank Walls Rebar Fixing | 10d | 2026-05-06 | 2026-05-17 | HFR1-05-1850 |
| HFR1-05-1870 |  | Tank Walls Formwork | 10d | 2026-05-18 | 2026-06-01 | HFR1-05-1860 |
| HFR1-05-1880 |  | Tank Walls Inspection | 4d | 2026-06-02 | 2026-06-06 | HFR1-05-1870 |
| HFR1-05-1890 |  | Tank Walls Concrete Pouring | 7d | 2026-06-07 | 2026-06-14 | HFR1-05-1880 |
| HFR1-05-1900 |  | Tank Slab Rebar Fixing | 5d | 2026-06-30 | 2026-07-05 | HFR1-05-1890, HFR1-05-3930 |
| HFR1-05-1910 |  | Tank Slab Formwork | 5d | 2026-07-06 | 2026-07-11 | HFR1-05-1900 |
| HFR1-05-1920 |  | Tank Slab Inspection | 4d | 2026-07-12 | 2026-07-15 | HFR1-05-1910 |
| HFR1-05-1930 |  | Tank Slab Concrete Pouring | 7d | 2026-07-23 | 2026-07-30 | HFR1-05-1920, HFR1-05-4350 |
| HFR1-05-1940 |  | Tank Slab Curing | 7d | 2026-08-01 | 2026-08-08 | HFR1-05-1930, HFR1-05-4360 |
| HFR1-05-1950 |  | Tank Installations with Connection | 4d | 2026-08-09 | 2026-08-12 | HFR1-05-1940 |
|  | 4 | **Pump room** |  | 2026-04-08 | 2026-07-20 |  |
|  | 1 | **Civil works** |  | 2026-04-08 | 2026-06-15 |  |
| HFR1-05-3000 |  | SOG (Pump Rooms) Formwork / Edge Shuttering | 6d | 2026-04-08 | 2026-04-14 | HFR1-05-1820 |
| HFR1-05-3040 |  | SOG (Pump Rooms) Rebar Mesh & MEP Sleeves | 6d | 2026-04-15 | 2026-04-21 | HFR1-05-3000 |
| HFR1-05-3080 |  | SOG (Pump Rooms) Inspection | 1d | 2026-04-22 | 2026-04-22 | HFR1-05-3040 |
| HFR1-05-3090 |  | SOG (Pump Rooms) Concrete Pouring & Finishing | 3d | 2026-04-23 | 2026-04-26 | HFR1-05-3080 |
| HFR1-05-3100 |  | SOG (Pump Rooms) Curing | 3d | 2026-04-27 | 2026-04-29 | HFR1-05-3090 |
| HFR1-05-3120 |  | Structural steel members and plates | 6d | 2026-04-27 | 2026-05-03 | HFR1-05-3090 |
| HFR1-05-3130 |  | Cold formed steel secondary members | 2d | 2026-05-04 | 2026-05-05 | HFR1-05-3100, HFR1-05-3120 |
| HFR1-05-3160 |  | Corrugated glavanized steel roofing sheet 0.7mm thick for pump shed | 6d | 2026-05-06 | 2026-05-12 | HFR1-05-3120, HFR1-05-3130 |
| HFR1-05-3190 |  | Concrete works for steel fence | 6d | 2026-05-13 | 2026-05-19 | HFR1-05-3160 |
| HFR1-05-3200 |  | Structural steel members and plates Pump Shed | 6d | 2026-05-13 | 2026-05-19 | HFR1-05-3160 |
| HFR1-05-3240 |  | steel fence gate | 6d | 2026-06-02 | 2026-06-08 | HFR1-05-9310 SS, HFR1-05-3190, HFR1-05-3200, HFR1-05-3160, HFR1-05-3090 |
| HFR1-05-3270 |  | install galvanized steel fence | 3d | 2026-06-13 | 2026-06-15 | HFR1-05-9190, HFR1-05-3190, HFR1-05-3240 |

| ID | WBS | Task | Duration | Start | Finish | Predecessors |
| --- | --- | --- | --- | --- | --- | --- |
|  | 2 | **Electromecanic** |  | 2026-05-06 | 2026-07-20 |  |
| HFR1-05-3560 |  | Install HDPE PE100 PN16 Pipes & Gate valve | 5d | 2026-05-06 | 2026-05-11 | HFR1-05-3130 |
| HFR1-05-3650 |  | concrete wall for KWHM for pump room with foundations | 5d | 2026-05-12 | 2026-05-17 | HFR1-05-3560 |
| HFR1-05-3660 |  | Fire Pump installations | 5d | 2026-05-18 | 2026-05-23 | HFR1-05-3650 |
| HFR1-05-3730 |  | pipework within pump shade | 5d | 2026-05-24 | 2026-06-01 | HFR1-05-3660, HFR1-05-9200 SS |
| HFR1-05-3780 |  | Testing firefighting | 4d | 2026-06-02 | 2026-06-06 | HFR1-05-3730 |
| HFR1-05-3790 |  | Power and lighting first fix works -Conduit works | 5d | 2026-06-07 | 2026-06-11 | HFR1-05-3780 |
| HFR1-05-3840 |  | Cable Tray | 5d | 2026-06-16 | 2026-06-21 | HFR1-05-3790, HFR1-05-3270, HFR1-05-4200 |
| HFR1-05-3910 |  | Wiring works | 5d | 2026-06-22 | 2026-06-27 | HFR1-05-3840 |
| HFR1-05-4030 |  | Install lighting fixtures | 5d | 2026-06-28 | 2026-07-02 | HFR1-05-3910 |
| HFR1-05-4040 |  | Motor circuit protector | 5d | 2026-07-04 | 2026-07-08 | HFR1-05-4030 |
| HFR1-05-4050 |  | Power panel ( all works | 5d | 2026-07-09 | 2026-07-14 | HFR1-05-4040 |
| HFR1-05-4310 |  | switches installations | 5d | 2026-07-15 | 2026-07-20 | HFR1-05-4050, HFR1-05-9300, HFR1-05-9610 |
|  | 7 | **External WORKS-MEP** |  | 2026-03-01 | 2026-06-02 |  |
|  | 8 | **Plumping-FIRE-HVAC** |  | 2026-03-01 | 2026-04-21 |  |
| HFR1-05-3060 |  | External FF Network Preparation (Excavation +Pipes + Valves + Hydrants | 6d | 2026-03-01 | 2026-03-07 | HFR1-05-1080 |
| HFR1-05-3070 |  | Water SupplyPreparation (Excxavation-Pipes-backfilling | 6d | 2026-03-08 | 2026-03-14 | HFR1-05-3060 |
| HFR1-05-3140 |  | External FF Network Testing & Final Inspection | 6d | 2026-03-15 | 2026-03-24 | HFR1-05-3070 |
| HFR1-05-3150 |  | Water Supply Testing (Pressure Test) & Final Inspection | 6d | 2026-03-25 | 2026-03-31 | HFR1-05-3140 |
| HFR1-05-3320 |  | Drainage Installation (Excxavation +Pipes + backfilling +House Connections) | 6d | 2026-04-01 | 2026-04-07 | HFR1-05-3150, HFR1-05-8870, HFR1-05-8880 |
| HFR1-05-3330 |  | Manholes works for Drainage works Excxavation -pipes-backfilling | 4d | 2026-04-08 | 2026-04-12 | HFR1-05-3320 |
| HFR1-05-3410 |  | Drainage Testing (Air/Water Test) & Final Inspection | 4d | 2026-04-13 | 2026-04-16 | HFR1-05-3330 |
| HFR1-05-3450 |  | GRP pipe service inspection chamber (Excavation+installation +backfilling ) | 4d | 2026-04-18 | 2026-04-21 | HFR1-05-3410 |
|  | 1 | **Electric** |  | 2026-03-15 | 2026-06-02 |  |
| HFR1-05-3420 |  | Concrete foundation for electrical substation | 5d | 2026-03-15 | 2026-03-23 | HFR1-05-3070 |
| HFR1-05-3470 |  | Security Fence for elec substation | 5d | 2026-03-24 | 2026-03-29 | HFR1-05-3420 |
| HFR1-05-3510 |  | Street Lighting Preparation (Trenches + Marking + Ducts) | 5d | 2026-03-30 | 2026-04-04 | HFR1-05-3470 |
| HFR1-05-3530 |  | Manholes works for electric works with pipes -Excxavation -pipes-backfilling | 3d | 2026-04-05 | 2026-04-07 | HFR1-05-3510 |
| HFR1-05-3590 |  | Road crossing duct bank for street lighting cables (pipes | 3d | 2026-04-08 | 2026-04-11 | HFR1-05-3530 |
| HFR1-05-3600 |  | Street Lighting Installation (Cables + Poles + Fixtures) | 3d | 2026-04-12 | 2026-04-14 | HFR1-05-3590 |
| HFR1-05-3620 |  | Grounding System Preparation (Survey + Marking + Excavation) | 3d | 2026-04-15 | 2026-04-18 | HFR1-05-3600 |
| HFR1-05-3680 |  | KWHM for street lighting feeder pillar (foundations+KWH Meter & Electrical Works | 4d | 2026-04-15 | 2026-04-19 | HFR1-05-3620 SS |
| HFR1-05-3740 |  | Grounding SystemTesting (Earth Resistance Test) & Final Inspection | 11d | 2026-04-20 | 2026-05-02 | HFR1-05-3680, HFR1-05-4600 |
| HFR1-05-3800 |  | Grounding SystemInstallation (Earth Rods + Cables + Earth Pits) | 3d | 2026-05-03 | 2026-05-05 | HFR1-05-3740, HFR1-05-3450 |
| HFR1-05-3820 |  | GROUNDING SYSTEM AT SITE (Feeder pillars | 4d | 2026-05-06 | 2026-05-10 | HFR1-05-3800 |
| HFR1-05-3940 |  | GROUNDING SYSTEM AT SITE (Pump Room | 4d | 2026-05-11 | 2026-05-14 | HFR1-05-3820, HFR1-05-3450 |
| HFR1-05-4110 |  | GROUNDING SYSTEM AT SITE (KWHM's | 3d | 2026-05-16 | 2026-05-18 | HFR1-05-3940 |
| HFR1-05-4150 |  | Street Lighting Testing (Megger + Lighting Test) & Final Inspection | 2d | 2026-05-19 | 2026-05-20 | HFR1-05-4110 |
| HFR1-05-4190 |  | GROUNDING SYSTEM AT SITE (Street lighting Poles | 3d | 2026-05-21 | 2026-05-24 | HFR1-05-4150 |
| HFR1-05-4200 |  | Skylight fixtures installations | 5d | 2026-05-25 | 2026-06-02 | HFR1-05-9500 SS, HFR1-05-4190 |
|  | 5 | **External Works landscape** |  | 2026-07-02 | 2026-09-12 |  |
| HFR1-05-3480 |  | ROAD Excavation and casting lean concrete base for Precast Concrete Curbstone | 6d | 2026-07-02 | 2026-07-08 | HFR1-05-1520 SS, HFR1-05-9060, HFR1-05-9060 FF, HFR1-05-8500, HFR1-05-8510, HFR1-05-8520, HFR1-05-8530, HFR1-05-8490, HFR1-05-8850, HFR1-05-8840, HFR1-05-7880, HFR1-05-8830, HFR1-05-6160, HFR1-05-7540, HFR1-05-7550, HFR1-05-7560, HFR1-05-7570, HFR1-05-7580, HFR1-05-7590, HFR1-05-7600, HFR1-05-7610, HFR1-05-7870, HFR1-05-8820 |
| HFR1-05-3540 |  | ROAD subgrade material up to the full width of the road | 6d | 2026-07-09 | 2026-07-15 | HFR1-05-4200, HFR1-05-3480 |
| HFR1-05-3580 |  | ROAD Backfilling, compaction, and acceptance for precast curbstone | 6d | 2026-07-16 | 2026-07-22 | HFR1-05-3540 |
| HFR1-05-3610 |  | ROAD execute subgrade layer including Watering and compaction | 6d | 2026-07-23 | 2026-07-29 | HFR1-05-5570, HFR1-05-9130, HFR1-05-3580 |
| HFR1-05-3690 |  | ROAD execute base course layer -Leveling and shaping | 6d | 2026-07-30 | 2026-08-05 | HFR1-05-3610, HFR1-05-4310 |
| HFR1-05-3810 |  | ROAD Watering and compaction for Base Course Layer | 6d | 2026-08-06 | 2026-08-12 | HFR1-05-5550, HFR1-05-3690 |
| HFR1-05-3990 |  | ROAD Application of prime coat | 6d | 2026-08-06 | 2026-08-12 | HFR1-05-9390, HFR1-05-9380, HFR1-05-3810 SS, HFR1-05-4400, HFR1-05-4620 |
| HFR1-05-4140 |  | ROAD execute bituminous base course asphalt layer | 5d | 2026-08-13 | 2026-08-18 | HFR1-05-3990 |
| HFR1-05-4320 |  | ROAD Laying bituminous second asphalt base layer | 5d | 2026-08-19 | 2026-08-24 | HFR1-05-4140, HFR1-05-1950, HFR1-05-1950 FF, HFR1-05-4340, HFR1-05-4270, HFR1-05-4250, HFR1-05-4230 |
| HFR1-05-4390 |  | ROADTack Coat (RC2) | 5d | 2026-08-25 | 2026-08-30 | HFR1-05-4320 |
| HFR1-05-4440 |  | ROAD Bituminous Wearing Course Asphalt | 5d | 2026-08-31 | 2026-09-05 | HFR1-05-4390 |
| HFR1-05-4460 |  | ROAD lean concrete base For concrete curbstone | 5d | 2026-08-31 | 2026-09-05 | HFR1-05-5700, HFR1-05-8990, HFR1-05-4440 SS |
| HFR1-05-4470 |  | ROAD Subbase install precast concrete curbstone | 5d | 2026-08-31 | 2026-09-05 | HFR1-05-9110, HFR1-05-4460 FF |
| HFR1-05-4500 |  | ROAD InterlockWalkway -pedestrian interlocking block pavers | 11d | 2026-08-31 | 2026-09-12 | HFR1-05-4550 FF |
| HFR1-05-4480 |  | ROAD interlocking block pavers | 9d | 2026-09-02 | 2026-09-12 | HFR1-05-9060, HFR1-05-4500 FF |
| HFR1-05-4530 |  | ROAD single I.P.E. post Road signs-Asphalt install traffic signs | 6d | 2026-09-05 | 2026-09-10 | HFR1-05-5760, HFR1-05-4520 FF |
| HFR1-05-4540 |  | ROAD Road Marking thermoplastic traffic lines | 6d | 2026-09-05 | 2026-09-10 | HFR1-05-9130, HFR1-05-4530 FF |
| HFR1-05-4560 |  | Concrete Works external steps | 6d | 2026-09-05 | 2026-09-10 | HFR1-05-8860, HFR1-05-4530 FF |
| HFR1-05-4570 |  | Outdoor Granite works | 6d | 2026-09-05 | 2026-09-10 | HFR1-05-4560 FF |
| HFR1-05-4510 |  | ROAD Interlock install concrete parking bumpers | 5d | 2026-09-06 | 2026-09-10 | HFR1-05-4460 |
| HFR1-05-4520 |  | ROAD Asphalt Reflective Road Markings | 5d | 2026-09-06 | 2026-09-10 | HFR1-05-4510 FF |
| HFR1-05-4550 |  | ROAD subgrade laye Interlocking Paving Blocks | 6d | 2026-09-06 | 2026-09-12 | HFR1-05-4470 |
|  | 10 | **Testing and comissiong** |  | 2026-04-01 | 2026-09-26 |  |
|  | 1 | **Testing and comissiong** |  | 2026-04-01 | 2026-09-26 |  |
| HFR1-05-4600 |  | Test For Water Utilities | 12d | 2026-04-01 | 2026-04-14 | HFR1-05-3150 |
| HFR1-05-4430 |  | Test For Pump Room | 12d | 2026-07-21 | 2026-08-03 | HFR1-05-4310, HFR1-05-4600, HFR1-05-2240, HFR1-05-2820 |
| HFR1-05-4630 |  | Test For Electrical Works | 12d | 2026-09-03 | 2026-09-16 | HFR1-05-4190, HFR1-05-4310, HFR1-05-3930, HFR1-05-2240, HFR1-05-2100, HFR1-05-4430 |
| HFR1-05-4420 |  | Test For Roads | 11d | 2026-09-13 | 2026-09-26 | HFR1-05-4550 |
|  | 11 | **Close Out** |  | 2026-09-17 | 2026-09-26 |  |

| ID | Task | Duration | Start | Finish | Predecessors |
| --- | --- | --- | --- | --- | --- |
| HFR1-05-4680 | As-Built Documentation Final Submission | 6d | 2026-09-17 | 2026-09-24 | HFR1-05-4430, HFR1-05-4600, HFR1-05-4630 |
| HFR1-05-4690 | O&M Manuals and Warranties Final Submission | 5d | 2026-09-17 | 2026-09-22 | HFR1-05-4680 SS |
| HFR1-05-4700 | Final Handover MODON Inspection & Approval | 7d | 2026-09-17 | 2026-09-26 | HFR1-05-4690 SS |

## Version 2 (data date 2026-09-15, saved 2026-09-20, file HFR1-05-03.xml)

Last finish 2026-09-26 → 2026-12-28 (+93d). Complete tasks 0 → 816.

Changed:

| ID | Task | Start | Finish | Complete | Other |
| --- | --- | --- | --- | --- | --- |
| 1 | **Project Milestones** |  | 2026-09-26 → 2026-12-28 (+93d) |  |  |
| 2 | **Project milestones** |  | 2026-09-26 → 2026-12-28 (+93d) |  |  |
| HFR1-05-2980 | Project Start | 2025-11-27 A | 2025-11-27 A | 0% → 100% |  |
| HFR1-05-2985 | Project Finish | 2026-09-26 → 2026-12-28 (+93d) | 2026-09-26 → 2026-12-28 (+93d) |  |  |
| 1 | **Contratual milestones** |  | 2026-09-26 → 2026-12-28 (+93d) |  |  |
| HFR1-05-7890 | Baseline Schedule Approval | 2025-12-28 A | 2025-12-28 A | 0% → 100% |  |
| HFR1-05-8890 | Completion Mobilization | 2025-12-28 A | 2025-12-28 A | 0% → 100% |  |
| HFR1-05-2990 | Completion of Engneering and Material | 2026-01-27 → 2026-09-15 (+231d) | 2026-01-27 → 2026-09-15 (+231d) |  |  |
| HFR1-05-4380 | Procurement Complete | 2026-07-22 → 2026-09-15 (+55d) | 2026-07-22 → 2026-09-15 (+55d) |  |  |
| HFR1-05-3390 | Main Buildings Structure Completed | 2026-05-31 → 2026-09-20 (+112d) | 2026-05-31 → 2026-09-20 (+112d) |  |  |
| HFR1-05-4620 | Main Buildings Architectural Completed | 2026-07-22 → 2026-10-15 (+85d) | 2026-07-22 → 2026-10-15 (+85d) |  |  |
| HFR1-05-4400 | Mosque Works Completed | 2026-07-27 → 2026-11-14 (+110d) | 2026-07-27 → 2026-11-14 (+110d) |  |  |
| HFR1-05-4650 | Main Buildings MEP Completed | 2026-09-26 → 2026-12-02 (+67d) | 2026-09-26 → 2026-12-02 (+67d) |  |  |
| HFR1-05-4590 | Site Works & External Networks Completed | 2026-09-12 → 2026-12-15 (+94d) | 2026-09-12 → 2026-12-15 (+94d) |  |  |
| HFR1-05-4660 | All Testing & Commissioning Completed | 2026-09-26 → 2026-12-28 (+93d) | 2026-09-26 → 2026-12-28 (+93d) |  |  |
| HFR1-05-4670 | Substantial Completion (Ready for Handing Over) | 2026-09-26 → 2026-12-28 (+93d) | 2026-09-26 → 2026-12-28 (+93d) |  |  |
| HFR1-05-4720 | Completion Milestone | 2026-09-26 → 2026-12-28 (+93d) | 2026-09-26 → 2026-12-28 (+93d) |  |  |
| HFR1-05-3110 | Mobilzation Equpment and Manpower | 2025-11-27 A | 2025-12-06 A | 0% → 100% | resources Labours [200 h] → Mobilization [200 h] |
| HFR1-05-5690 | Installation of Site Offices | 2025-12-07 A | 2025-12-15 A | 0% → 100% | resources Labours [200 h] → Mobilization [200 h] |
| HFR1-05-7910 | Setup of Stores / Warehouses | 2025-12-15 A | 2025-12-28 A | 0% → 100% | resources Labours [150 h] → Mobilization [150 h] |
| HFR1-05-6860 | Temporary Power Supply -Water Supply & Piping | 2025-12-16 A | 2025-12-24 A | 0% → 100% | resources Labours [200 h] → Mobilization [200 h] |
| HFR1-05-2930 | Preparation & Submittal of Quality Control Plan | 2025-11-27 A | 2025-12-07 A | 0% → 100% | resources Labours [150 h] → Mobilization [150 h] |
| HFR1-05-2940 | Preparation & Submittal of Master Layout / Site Layout | 2025-11-27 A | 2025-12-07 A | 0% → 100% | resources Labours [318.15 h] → Mobilization [318.15 h] |
| HFR1-05-3010 | Preparation & Submittal of Staff Plan | 2025-11-27 A | 2025-12-07 A | 0% → 100% | resources Labours [318.15 h] → Mobilization [318.15 h] |
| HFR1-05-3170 | Preparation & Submittal of Risk Plan | 2025-11-27 A | 2025-12-07 A | 0% → 100% | resources Labours [318.15 h] → Mobilization [318.15 h] |
| HFR1-05-3210 | Preparation & Submittal of Project Execution Plan | 2025-11-27 A | 2025-12-07 A | 0% → 100% | resources Labours [318.15 h] → Mobilization [318.15 h] |
| HFR1-05-6850 | Preparation & Submittal of Baseline Schedule | 2025-12-08 A | 2025-12-21 A | 0% → 100% | resources Labours [318.15 h] → Mobilization [318.15 h] |
| HFR1-05-6030 | Approval of Risk Plan | 2025-12-08 A | 2025-12-14 A | 0% → 100% | resources Labours [318.15 h] → Mobilization [318.15 h] |
| HFR1-05-6040 | Approval of Project Execution Plan | 2025-12-08 A | 2025-12-14 A | 0% → 100% | resources Labours [318.15 h] → Mobilization [318.15 h] |
| HFR1-05-6050 | Approval of Quality Control Plan | 2025-12-08 A | 2025-12-14 A | 0% → 100% | resources Labours [318.15 h] → Mobilization [318.15 h] |
| HFR1-05-6060 | Approval of Master Layout / Site Layout | 2025-12-08 A | 2025-12-14 A | 0% → 100% | resources Labours [318.15 h] → Mobilization [318.15 h] |
| HFR1-05-6070 | Approval of Staff Plan | 2025-12-08 A | 2025-12-14 A | 0% → 100% | resources Labours [318.15 h] → Mobilization [318.15 h] |
| HFR1-05-7900 | Approval of Baseline schedule | 2025-12-22 A | 2025-12-28 A | 0% → 100% | resources Labours [318.15 h] → Mobilization [318.15 h] |
| 4 | **Engineering** |  | 2026-01-28 → 2026-07-20 (+173d) |  |  |
| 2 | **Shop Drawings** |  | 2025-12-29 → 2026-01-31 (+33d) |  |  |
| 1 | **Shop Drawings Submittal** |  | 2025-12-17 → 2026-01-18 (+32d) |  |  |
| HFR1-05-3220 | Shop DWG Submittal for Topographic Survey | 2025-12-07 A | 2025-12-17 A | 0% → 100% |  |
| HFR1-05-6080 | Shop DWG Submittal for Road Layout Plan | 2025-12-07 A | 2025-12-17 A | 0% → 100% |  |
| HFR1-05-6090 | Shop DWG Submittal for Typical Cross Section | 2025-12-07 A | 2025-12-17 A | 0% → 100% |  |
| HFR1-05-6100 | Shop DWG Submittal for Road Setting Out | 2025-12-07 A | 2025-12-17 A | 0% → 100% |  |
| HFR1-05-6110 | Shop DWG Submittal for Road Profiles | 2025-12-07 A | 2025-12-17 A | 0% → 100% |  |
| HFR1-05-6120 | Shop DWG Submittal for Grading Layout Plan | 2025-12-07 A | 2025-12-17 A | 0% → 100% |  |
| HFR1-05-6130 | Shop DWG Submittal for Curb Setting Out Points | 2025-12-07 A | 2025-12-17 A | 0% → 100% |  |
| HFR1-05-6140 | Shop DWG Submittal for Signing & Marking Layout Plan | 2025-12-07 A | 2025-12-17 A | 0% → 100% |  |
| HFR1-05-6150 | Shop DWG Submittal for Standards Details | 2025-12-07 A | 2025-12-17 A | 0% → 100% |  |
| 3 | **Shop Drawings Submittal for Potable Water Network** | 2025-12-07 → 2025-12-10 (+3d) | 2025-12-17 → 2025-12-18 (+1d) |  |  |
| HFR1-05-6210 | Shop DWG Submittal for Potable Water Plans | 2025-12-07 → 2025-12-10 A (+3d) | 2025-12-17 → 2025-12-18 A (+1d) | 0% → 100% |  |
| HFR1-05-7830 | Shop DWG Submittal for Potable Water Profiles | 2025-12-07 → 2025-12-10 A (+3d) | 2025-12-17 → 2025-12-18 A (+1d) | 0% → 100% |  |
| HFR1-05-7840 | Shop DWG Submittal for Potable Water Standard Details | 2025-12-07 → 2025-12-10 A (+3d) | 2025-12-17 → 2025-12-18 A (+1d) | 0% → 100% |  |
| 7 | **Shop Drawings Submittal for Sewer Water Network** | 2025-12-07 → 2025-12-09 (+2d) | 2025-12-17 → 2025-12-18 (+1d) |  |  |
| HFR1-05-6220 | Shop DWG Submittal for Sewer Network Plans | 2025-12-07 → 2025-12-09 A (+2d) | 2025-12-17 → 2025-12-18 A (+1d) | 0% → 100% |  |
| HFR1-05-7850 | Shop DWG Submittal for Sewer Network Profiles | 2025-12-07 → 2025-12-09 A (+2d) | 2025-12-17 → 2025-12-18 A (+1d) | 0% → 100% |  |
| HFR1-05-7860 | Shop DWG Submittal for Sewer Network Standard Details | 2025-12-07 → 2025-12-09 A (+2d) | 2025-12-17 → 2025-12-18 A (+1d) | 0% → 100% |  |
| HFR1-05-7620 | Shop DWG Submittal for Earthing System | 2025-12-07 A | 2025-12-17 A | 0% → 100% |  |
| 11 | **Shop Drawings Submittal for Road Lighting** | 2025-12-07 → 2025-12-08 (+1d) | 2025-12-17 → 2025-12-18 (+1d) |  |  |
| HFR1-05-7630 | Shop DWG Submittal for Street Lighting General Arrangement | 2025-12-07 → 2025-12-08 A (+1d) | 2025-12-17 → 2025-12-18 A (+1d) | 0% → 100% |  |
| HFR1-05-7640 | Shop DWG Submittal for Street Lighting Network Layout | 2025-12-07 → 2025-12-08 A (+1d) | 2025-12-17 → 2025-12-18 A (+1d) | 0% → 100% |  |
| HFR1-05-7650 | Shop DWG Submittal for Street Lighting Details | 2025-12-07 → 2025-12-08 A (+1d) | 2025-12-17 → 2025-12-18 A (+1d) | 0% → 100% |  |
| HFR1-05-7660 | Shop DWG Submittal for Street Lighting Single Line Diagram | 2025-12-07 → 2025-12-08 A (+1d) | 2025-12-17 → 2025-12-18 A (+1d) | 0% → 100% |  |
| 12 | **Shop Drawings Submittal for Hungers** | 2025-12-07 → 2025-12-21 (+14d) | 2025-12-17 → 2026-01-03 (+17d) |  |  |
| HFR1-05-7790 | Shop DWG Submittal for the Hungers - Civil Works | 2025-12-07 → 2025-12-21 A (+14d) | 2025-12-17 → 2025-12-29 A (+12d) | 0% → 100% |  |
| HFR1-05-7800 | Shop DWG Submittal for the Hungers - Mechanical Works | 2025-12-07 → 2025-12-27 A (+20d) | 2025-12-17 → 2026-01-03 A (+17d) | 0% → 100% |  |
| HFR1-05-7810 | Shop DWG Submittal for the Hungers - Finishing Works | 2025-12-07 → 2025-12-27 A (+20d) | 2025-12-17 → 2026-01-03 A (+17d) | 0% → 100% |  |
| HFR1-05-7820 | Shop DWG Submittal for the Hungers - Electrical Works | 2025-12-07 → 2025-12-27 A (+20d) | 2025-12-17 → 2026-01-03 A (+17d) | 0% → 100% |  |
| 9 | **Shop Drawings Submittal for Prayer Room** | 2025-12-07 → 2026-01-11 (+35d) | 2025-12-17 → 2026-01-18 (+32d) |  |  |
| HFR1-05-7750 | Shop DWG Submittal for the Prayer Room - Civil Works | 2025-12-07 → 2026-01-11 A (+35d) | 2025-12-17 → 2026-01-15 A (+29d) | 0% → 100% |  |
| HFR1-05-7760 | Shop DWG Submittal for the Prayer Room - Mechanical Works | 2025-12-07 → 2026-01-13 A (+37d) | 2025-12-17 → 2026-01-18 A (+32d) | 0% → 100% |  |
| HFR1-05-7770 | Shop DWG Submittal for the Prayer Room - Finishing Works | 2025-12-07 → 2026-01-13 A (+37d) | 2025-12-17 → 2026-01-18 A (+32d) | 0% → 100% |  |
| HFR1-05-7780 | Shop DWG Submittal for the Prayer Room - Electrical Works | 2025-12-07 → 2026-01-13 A (+37d) | 2025-12-17 → 2026-01-18 A (+32d) | 0% → 100% |  |
| 6 | **Shop Drawings Submittal for Septic Tank** | 2025-12-07 → 2026-01-01 (+25d) | 2025-12-17 → 2026-01-11 (+25d) |  |  |

| ID | Task | Start | Finish | Complete |
| --- | --- | --- | --- | --- |
| HFR1-05-7710 | Shop DWG Submittal for the Septic Tank - Civil Works | 2025-12-07 → 2026-01-01 A (+25d) | 2025-12-17 → 2026-01-06 A (+20d) | 0% → 100% |
| HFR1-05-7720 | Shop DWG Submittal for the Septic Tank - Mechanical Works | 2025-12-07 → 2026-01-07 A (+31d) | 2025-12-17 → 2026-01-10 A (+24d) | 0% → 100% |
| HFR1-05-7740 | Shop DWG Submittal for the Septic Tank - Electrical Works | 2025-12-07 → 2026-01-07 A (+31d) | 2025-12-17 → 2026-01-10 A (+24d) | 0% → 100% |
| HFR1-05-7730 | Shop DWG Submittal for the Septic Tank - Finishing Works | 2025-12-07 → 2026-01-08 A (+32d) | 2025-12-17 → 2026-01-11 A (+25d) | 0% → 100% |
| 5 | **Shop Drawings Submittal for GRB Tank** | 2025-12-07 → 2026-01-01 (+25d) | 2025-12-17 → 2026-01-11 (+25d) |  |
| HFR1-05-7670 | Shop DWG Submittal for the GRB - Civil Works | 2025-12-07 → 2026-01-01 A (+25d) | 2025-12-17 → 2026-01-06 A (+20d) | 0% → 100% |
| HFR1-05-7680 | Shop DWG Submittal for the GRB - Mechanical Works | 2025-12-07 → 2026-01-07 A (+31d) | 2025-12-17 → 2026-01-10 A (+24d) | 0% → 100% |
| HFR1-05-7700 | Shop DWG Submittal for the GRB - Electrical Works | 2025-12-07 → 2026-01-07 A (+31d) | 2025-12-17 → 2026-01-10 A (+24d) | 0% → 100% |
| HFR1-05-7690 | Shop DWG Submittal for the GRB - Finishing Works | 2025-12-07 → 2026-01-08 A (+32d) | 2025-12-17 → 2026-01-11 A (+25d) | 0% → 100% |
| 4 | **Shop Drawings Submittal for Pump Room** | 2025-12-07 → 2026-01-03 (+27d) | 2025-12-15 → 2026-01-11 (+27d) |  |
| HFR1-05-8580 | Shop DWG Submittal for the Pump - Civil Works | 2025-12-07 → 2026-01-03 A (+27d) | 2025-12-15 → 2026-01-07 A (+23d) | 0% → 100% |
| HFR1-05-8590 | Shop DWG Submittal for the Pump - Mechanical Works | 2025-12-07 → 2026-01-07 A (+31d) | 2025-12-15 → 2026-01-10 A (+26d) | 0% → 100% |
| HFR1-05-8610 | Shop DWG Submittal for the Pump - Electrical Works | 2025-12-07 → 2026-01-07 A (+31d) | 2025-12-15 → 2026-01-10 A (+26d) | 0% → 100% |
| HFR1-05-8600 | Shop DWG Submittal for the Pump - Finishing Works | 2025-12-07 → 2026-01-08 A (+32d) | 2025-12-15 → 2026-01-11 A (+27d) | 0% → 100% |
| 2 | **Shop Drawings Approval** | 2025-12-16 → 2025-12-18 (+2d) | 2025-12-29 → 2026-01-31 (+33d) |  |
| 1 | **Shop Drawings Approval for Road Works** |  | 2025-12-29 → 2026-01-03 (+5d) |  |
| HFR1-05-6160 | Shop DWG Approval for Topographic Survey | 2025-12-18 A | 2025-12-29 A | 0% → 100% |
| HFR1-05-7540 | Shop DWG Approval for Road Layout Plan | 2025-12-18 → 2025-12-20 A (+2d) | 2025-12-25 → 2025-12-27 A (+2d) | 0% → 100% |
| HFR1-05-7550 | Shop DWG Approval for Typical Cross Section | 2025-12-18 → 2025-12-20 A (+2d) | 2025-12-25 → 2025-12-27 A (+2d) | 0% → 100% |
| HFR1-05-7560 | Shop DWG Approval for Road Setting Out | 2025-12-18 → 2025-12-20 A (+2d) | 2025-12-25 → 2025-12-27 A (+2d) | 0% → 100% |
| HFR1-05-7570 | Shop DWG Approval for Road Profiles | 2025-12-18 → 2025-12-20 A (+2d) | 2025-12-25 → 2025-12-27 A (+2d) | 0% → 100% |
| HFR1-05-7580 | Shop DWG Approval for Grading Layout Plan | 2025-12-18 → 2025-12-20 A (+2d) | 2025-12-25 → 2025-12-27 A (+2d) | 0% → 100% |
| HFR1-05-7590 | Shop DWG Approval for Curb Setting Out Points | 2025-12-18 → 2025-12-28 A (+10d) | 2025-12-25 → 2026-01-03 A (+9d) | 0% → 100% |
| HFR1-05-7600 | Shop DWG Approval for Signing & Marking Layout Plan | 2025-12-18 → 2025-12-28 A (+10d) | 2025-12-25 → 2026-01-03 A (+9d) | 0% → 100% |
| HFR1-05-7610 | Shop DWG Approval for Standards Details | 2025-12-18 → 2025-12-28 A (+10d) | 2025-12-25 → 2026-01-03 A (+9d) | 0% → 100% |
| 9 | **Shop Drawings Submittal for Potable Water Network** | 2025-12-18 → 2025-12-28 (+10d) | 2025-12-29 → 2026-01-25 (+27d) |  |
| HFR1-05-7870 | Shop DWG Approval for Potable Water Plans | 2025-12-18 → 2025-12-28 A (+10d) | 2025-12-29 → 2026-01-04 A (+6d) | 0% → 100% |
| HFR1-05-8820 | Shop DWG Approval for Potable Water Profiles | 2025-12-18 → 2025-12-29 A (+11d) | 2025-12-29 → 2026-01-05 A (+7d) | 0% → 100% |
| HFR1-05-8830 | Shop DWG Approval for Potable Water Standard Details | 2025-12-18 → 2025-12-29 A (+11d) | 2025-12-29 → 2026-01-25 A (+27d) | 0% → 100% |
| 12 | **Shop Drawings Submittal for Sewer Water Network** | 2025-12-18 → 2025-12-28 (+10d) | 2025-12-29 → 2026-01-04 (+6d) |  |
| HFR1-05-7880 | Shop DWG Approval for Sewer Network Plans | 2025-12-18 → 2025-12-28 A (+10d) | 2025-12-29 → 2026-01-03 A (+5d) | 0% → 100% |
| HFR1-05-8840 | Shop DWG Approval for Sewer Network Profiles | 2025-12-18 → 2025-12-28 A (+10d) | 2025-12-29 → 2026-01-03 A (+5d) | 0% → 100% |
| HFR1-05-8850 | Shop DWG Approval for Sewer Network Standard Details | 2025-12-18 → 2025-12-28 A (+10d) | 2025-12-29 → 2026-01-04 A (+6d) | 0% → 100% |
| 10 | **Shop Drawings Approval for Earthing System** | 2025-12-18 → 2025-12-29 (+11d) | 2025-12-25 → 2026-01-05 (+11d) |  |
| HFR1-05-8490 | Shop DWG Approval for Earthing System By SEC | 2025-12-18 → 2025-12-29 A (+11d) | 2025-12-25 → 2026-01-05 A (+11d) | 0% → 100% |
| 11 | **Shop Drawings Approval for Road Lighting** | 2025-12-18 → 2025-12-27 (+9d) | 2025-12-25 → 2026-01-04 (+10d) |  |
| HFR1-05-8500 | Shop DWG Approval for Street Lighting General Arrangement By SEC | 2025-12-18 → 2025-12-27 A (+9d) | 2025-12-25 → 2026-01-03 A (+9d) | 0% → 100% |
| HFR1-05-8510 | Shop DWG Approval for Street Lighting Network Layout By SEC | 2025-12-18 → 2025-12-27 A (+9d) | 2025-12-25 → 2026-01-03 A (+9d) | 0% → 100% |
| HFR1-05-8520 | Shop DWG Approval for Street Lighting Details By SEC | 2025-12-18 → 2025-12-28 A (+10d) | 2025-12-25 → 2026-01-04 A (+10d) | 0% → 100% |
| HFR1-05-8530 | Shop DWG Approval for Street Lighting Single Line Diagram By SEC | 2025-12-18 → 2025-12-28 A (+10d) | 2025-12-25 → 2026-01-04 A (+10d) | 0% → 100% |
| 6 | **Shop Drawings Approval for Hungers** | 2025-12-18 → 2026-01-01 (+14d) | 2025-12-25 → 2026-01-08 (+14d) |  |
| HFR1-05-8700 | Shop DWG Approval for the Hungers - Civil Works | 2025-12-18 → 2026-01-01 A (+14d) | 2025-12-25 → 2026-01-05 A (+11d) | 0% → 100% |
| HFR1-05-8710 | Shop DWG Approval for the Hungers - Mechanical Works | 2025-12-18 → 2026-01-04 A (+17d) | 2025-12-25 → 2026-01-08 A (+14d) | 0% → 100% |
| HFR1-05-8720 | Shop DWG Approval for the Hungers - Finishing Works | 2025-12-18 → 2026-01-04 A (+17d) | 2025-12-25 → 2026-01-08 A (+14d) | 0% → 100% |
| HFR1-05-8730 | Shop DWG Approval for the Hungers - Electrical Works | 2025-12-18 → 2026-01-04 A (+17d) | 2025-12-25 → 2026-01-08 A (+14d) | 0% → 100% |
| 5 | **Shop Drawings Approval for Prayer Room** | 2025-12-18 → 2026-01-22 (+35d) | 2025-12-25 → 2026-01-29 (+35d) |  |
| HFR1-05-8670 | Shop DWG Approval for the Prayer Room - Mechanical Works | 2025-12-18 → 2026-01-22 A (+35d) | 2025-12-25 → 2026-01-28 A (+34d) | 0% → 100% |
| HFR1-05-8680 | Shop DWG Approval for the Prayer Room - Finishing Works | 2025-12-18 → 2026-01-22 A (+35d) | 2025-12-25 → 2026-01-29 A (+35d) | 0% → 100% |
| HFR1-05-8690 | Shop DWG Approval for the Prayer Room - Electrical Works | 2025-12-18 → 2026-01-22 A (+35d) | 2025-12-25 → 2026-01-28 A (+34d) | 0% → 100% |
| HFR1-05-8660 | Shop DWG Approval for the Prayer Room - Civil Works | 2025-12-18 → 2026-01-23 A (+36d) | 2025-12-25 → 2026-01-25 A (+31d) | 0% → 100% |
| 4 | **Shop Drawings Approval for Septic Tank** | 2025-12-18 → 2026-01-15 (+28d) | 2025-12-25 → 2026-01-31 (+37d) |  |
| HFR1-05-8620 | Shop DWG Approval for the Septic Tank - Civil Works | 2025-12-18 → 2026-01-15 A (+28d) | 2025-12-25 → 2026-01-27 A (+33d) | 0% → 100% |
| HFR1-05-8630 | Shop DWG Approval for the Septic Tank - Mechanical Works | 2025-12-18 → 2026-01-20 A (+33d) | 2025-12-25 → 2026-01-29 A (+35d) | 0% → 100% |
| HFR1-05-8640 | Shop DWG Approval for the Septic Tank - Finishing Works | 2025-12-18 → 2026-01-20 A (+33d) | 2025-12-25 → 2026-01-31 A (+37d) | 0% → 100% |
| HFR1-05-8650 | Shop DWG Approval for the Septic Tank - Electrical Works | 2025-12-18 → 2026-01-20 A (+33d) | 2025-12-25 → 2026-01-29 A (+35d) | 0% → 100% |
| 7 | **Shop Drawings Approval for GRB Tank** | 2025-12-18 → 2026-01-15 (+28d) | 2025-12-25 → 2026-01-31 (+37d) |  |
| HFR1-05-8540 | Shop DWG Approval for the GRB - Civil Works | 2025-12-18 → 2026-01-15 A (+28d) | 2025-12-25 → 2026-01-27 A (+33d) | 0% → 100% |
| HFR1-05-8550 | Shop DWG Approval for the GRB - Mechanical Works | 2025-12-18 → 2026-01-20 A (+33d) | 2025-12-25 → 2026-01-29 A (+35d) | 0% → 100% |
| HFR1-05-8560 | Shop DWG Approval for the GRB - Finishing Works | 2025-12-18 → 2026-01-20 A (+33d) | 2025-12-25 → 2026-01-31 A (+37d) | 0% → 100% |
| HFR1-05-8570 | Shop DWG Approval for the GRB - Electrical Works | 2025-12-18 → 2026-01-20 A (+33d) | 2025-12-25 → 2026-01-29 A (+35d) | 0% → 100% |
| 3 | **Shop Drawings Approval for Pump Room** | 2025-12-16 → 2026-01-08 (+23d) | 2025-12-24 → 2026-01-29 (+36d) |  |
| HFR1-05-9020 | Shop DWG Approval for the Pump Room - Civil Works | 2025-12-16 → 2026-01-08 A (+23d) | 2025-12-24 → 2026-01-26 A (+33d) | 0% → 100% |
| HFR1-05-9030 | Shop DWG Approval for the Pump Room - Mechanical Works | 2025-12-16 → 2026-01-17 A (+32d) | 2025-12-24 → 2026-01-28 A (+35d) | 0% → 100% |
| HFR1-05-9050 | Shop DWG Approval for the Pump Room - Electrical Works | 2025-12-16 → 2026-01-17 A (+32d) | 2025-12-24 → 2026-01-28 A (+35d) | 0% → 100% |
| HFR1-05-9040 | Shop DWG Approval for the Pump Room - Finishing Works | 2025-12-16 → 2026-01-18 A (+33d) | 2025-12-24 → 2026-01-29 A (+36d) | 0% → 100% |
| 3 | **Method Statements** |  | 2026-01-11 → 2026-03-29 (+77d) |  |
| 1 | **Method Statements Submittal** |  | 2025-12-31 → 2026-03-05 (+64d) |  |
| HFR1-05-3230 | Preparation & Submission of Method Statement for Earthworks | 2025-12-25 A | 2025-12-31 A | 0% → 100% |
| HFR1-05-3250 | Preparation & Submission of Method Statement for Concrete Works | 2025-12-25 A | 2025-12-31 A | 0% → 100% |
| HFR1-05-3260 | Preparation & Submission of Method Statement for Waterproofing Works | 2025-12-25 A | 2025-12-31 A | 0% → 100% |

| ID | Task | Start | Finish | Complete |
| --- | --- | --- | --- | --- |
| HFR1-05-3280 | Preparation & Submission of Method Statement for Asphalt | 2025-12-25 → 2026-02-25 A (+62d) | 2025-12-31 → 2026-03-03 A (+62d) | 0% → 100% |
| HFR1-05-4970 | Preparation & Submission of Method Statement for Epoxy Coating | 2025-12-25 → 2026-02-26 A (+63d) | 2025-12-31 → 2026-03-04 A (+63d) | 0% → 100% |
| HFR1-05-4980 | Preparation & Submission of Method Statement for Metals | 2025-12-25 → 2026-02-26 A (+63d) | 2025-12-31 → 2026-03-04 A (+63d) | 0% → 100% |
| HFR1-05-4990 | Preparation & Submission of Method Statement for Doors & Windows | 2025-12-25 → 2026-02-28 A (+65d) | 2025-12-31 → 2026-03-05 A (+64d) | 0% → 100% |
| 2 | **Method Statements Approval** |  | 2026-01-07 → 2026-03-15 (+67d) |  |
| HFR1-05-6170 | Approval of Method Statement for Earthworks | 2026-01-01 A | 2026-01-07 A | 0% → 100% |
| HFR1-05-6180 | Approval of Method Statement for Concrete Works | 2026-01-01 A | 2026-01-07 A | 0% → 100% |
| HFR1-05-6190 | Approval of Method Statement for Waterproofing Works | 2026-01-01 A | 2026-01-07 A | 0% → 100% |
| HFR1-05-6200 | Approval of Method Statement for Asphalt | 2026-01-01 → 2026-03-04 A (+62d) | 2026-01-07 → 2026-03-11 A (+63d) | 0% → 100% |
| HFR1-05-6230 | Approval of Method Statement for Epoxy Coating | 2026-01-01 → 2026-03-05 A (+63d) | 2026-01-07 → 2026-03-14 A (+66d) | 0% → 100% |
| HFR1-05-6240 | Approval of Method Statement for Metals | 2026-01-01 → 2026-03-05 A (+63d) | 2026-01-07 → 2026-03-14 A (+66d) | 0% → 100% |
| HFR1-05-6250 | Approval of Method Statement for Doors & Windows | 2026-01-01 → 2026-03-07 A (+65d) | 2026-01-07 → 2026-03-15 A (+67d) | 0% → 100% |
| 3 | **Method Statements Staging Time** |  | 2026-01-11 → 2026-03-29 (+77d) |  |
| HFR1-05-6920 | Staging Time of Method Statement for Earthworks | 2026-01-08 A | 2026-01-11 A | 0% → 100% |
| HFR1-05-6930 | Staging Time of Method Statement for Concrete Works | 2026-01-08 A | 2026-01-11 A | 0% → 100% |
| HFR1-05-6940 | Staging Time of Method Statement for Waterproofing Works | 2026-01-08 A | 2026-01-11 A | 0% → 100% |
| HFR1-05-6950 | Staging Time of Method Statement for Asphalt | 2026-01-08 → 2026-03-12 A (+63d) | 2026-01-11 → 2026-03-24 A (+72d) | 0% → 100% |
| HFR1-05-7510 | Staging Time of Method Statement for Epoxy Coating | 2026-01-08 → 2026-03-15 A (+66d) | 2026-01-11 → 2026-03-28 A (+76d) | 0% → 100% |
| HFR1-05-7520 | Staging Time of Method Statement for Metals | 2026-01-08 → 2026-03-15 A (+66d) | 2026-01-11 → 2026-03-28 A (+76d) | 0% → 100% |
| HFR1-05-7530 | Staging Time of Method Statement for Doors & Windows | 2026-01-08 → 2026-03-16 A (+67d) | 2026-01-11 → 2026-03-29 A (+77d) | 0% → 100% |
| 4 | **Pre-qualification and Material** |  | 2026-01-28 → 2026-07-20 (+173d) |  |
| 2 | **Pre-qualification** |  | 2026-01-14 → 2026-03-31 (+76d) |  |
| 1 | **Road Works - Civil** |  | 2026-01-14 → 2026-01-31 (+17d) |  |
| HFR1-05-3290 | Pre-Qualification Submittal for Steel Reinforcement | 2025-12-25 A | 2025-12-31 A | 0% → 100% |
| HFR1-05-5040 | Pre-Qualification Approval for Steel Reinforcement | 2026-01-01 A | 2026-01-07 A | 0% → 100% |
| 2 | **Ready Mixed Concrete** | 2025-12-25 → 2026-01-01 (+7d) | 2026-01-07 → 2026-01-31 (+24d) |  |
| HFR1-05-6270 | Pre-Qualification Approval for Ready Mixed Concrete | 2026-01-01 A | 2026-01-07 A | 0% → 100% |
| HFR1-05-5050 | Pre-Qualification Submittal for Ready Mixed Concrete | 2025-12-25 → 2026-01-25 A (+31d) | 2025-12-31 → 2026-01-31 A (+31d) | 0% → 100% |
| HFR1-05-6280 | Pre-Qualification Submittal for Water Proofing | 2025-12-25 A | 2025-12-31 A | 0% → 100% |
| HFR1-05-6910 | Pre-Qualification Approval for Water Proofing | 2026-01-01 A | 2026-01-07 A | 0% → 100% |
| HFR1-05-6260 | Pre-Qualification Submittal for Aggregate Base Cource | 2025-12-25 A | 2025-12-31 A | 0% → 100% |
| HFR1-05-6870 | Pre-Qualification Approval for Aggregate Base Cource | 2026-01-01 A | 2026-01-07 A | 0% → 100% |
| HFR1-05-6880 | Pre-Qualification Submittal for Bituminous Base & Wearing Cource | 2025-12-25 A | 2025-12-31 A | 0% → 100% |
| HFR1-05-7920 | Pre-Qualification Approval for Bituminous & Wearing Cource | 2026-01-01 A | 2026-01-07 A | 0% → 100% |
| 7 | **Precast Concrete Kerb** |  | 2026-01-07 → 2026-01-31 (+24d) |  |
| HFR1-05-6890 | Pre-Qualification Submittal for Precast Concrete Kerb | 2025-12-25 A | 2025-12-31 → 2026-01-31 A (+31d) | 0% → 100% |
| HFR1-05-7930 | Pre-Qualification Approval for Precast Concrete Kerb | 2026-01-01 A | 2026-01-07 A | 0% → 100% |
| HFR1-05-6900 | Pre-Qualification Submittal for Interlocking Block Pavers | 2025-12-25 A | 2025-12-31 A | 0% → 100% |
| HFR1-05-7940 | Pre-Qualification Approval for Interlocking Block Pavers | 2026-01-01 A | 2026-01-07 A | 0% → 100% |
| 9 | **Pavement Markings** |  | 2026-01-14 → 2026-01-31 (+17d) |  |
| HFR1-05-7950 | Pre-Qualification Submittal for Pavement Markings | 2025-12-25 A | 2025-12-31 → 2026-01-31 A (+31d) | 0% → 100% |
| HFR1-05-8470 | Pre-Qualification Approval for Pavement Markings | 2026-01-08 A | 2026-01-14 A | 0% → 100% |
| HFR1-05-8480 | Pre-Qualification Submittal for Traffic Signs | 2025-12-25 A | 2025-12-31 A | 0% → 100% |
| HFR1-05-8920 | Pre-Qualification Approval for Traffic Signs | 2026-01-01 A | 2026-01-07 A | 0% → 100% |
| HFR1-05-4910 | Pre-Qualification Submittal for HDPE Pipes | 2025-12-25 A | 2025-12-31 A | 0% → 100% |
| HFR1-05-5600 | Pre-Qualification Approval for HDPE Pipes | 2026-01-01 A | 2026-01-07 A | 0% → 100% |
| HFR1-05-5610 | Pre-Qualification Submittal for Valves | 2025-12-25 A | 2025-12-31 A | 0% → 100% |
| HFR1-05-6800 | Pre-Qualification Approval for Valves | 2026-01-01 A | 2026-01-07 A | 0% → 100% |
| 3 | **Sewer Water Network** |  | 2026-01-07 → 2026-01-31 (+24d) |  |
| 1 | **GRP Pipes** |  | 2026-01-07 → 2026-01-31 (+24d) |  |
| HFR1-05-4920 | Pre-Qualification Submittal for GRP Pipes | 2025-12-25 A | 2025-12-31 → 2026-01-31 A (+31d) | 0% → 100% |
| HFR1-05-5620 | Pre-Qualification Approval for GRP Pipes | 2026-01-01 A | 2026-01-07 A | 0% → 100% |
| HFR1-05-5630 | Pre-Qualification Submittal for Manholes | 2025-12-25 A | 2025-12-31 A | 0% → 100% |
| HFR1-05-6810 | Pre-Qualification Approval for Manholes | 2026-01-01 A | 2026-01-07 A | 0% → 100% |
| 7 | **Civil Works - Buildings** |  | 2026-01-14 → 2026-03-31 (+76d) |  |
| HFR1-05-3340 | Pre-Qualification Submittal for Steel Reinforcement | 2025-12-25 A | 2025-12-31 A | 0% → 100% |
| HFR1-05-5370 | Pre-Qualification Approval for Steel Reinforcement | 2026-01-01 A | 2026-01-07 A | 0% → 100% |
| HFR1-05-5360 | Pre-Qualification Submittal for Ready Mix Concrete | 2025-12-25 A | 2025-12-31 A | 0% → 100% |
| HFR1-05-6600 | Pre-Qualification Approval for Ready Mix Concrete | 2026-01-01 A | 2026-01-07 A | 0% → 100% |
| HFR1-05-5380 | Pre-Qualification Submittal for Masonry | 2025-12-25 A | 2025-12-31 A | 0% → 100% |
| HFR1-05-6610 | Pre-Qualification Approval for Masonry | 2026-01-01 A | 2026-01-07 A | 0% → 100% |
| HFR1-05-5390 | Pre-Qualification Submittal for Steel Structure | 2025-12-25 A | 2025-12-31 A | 0% → 100% |
| HFR1-05-6620 | Pre-Qualification Approval for Steel Structure | 2026-01-01 A | 2026-01-07 A | 0% → 100% |
| HFR1-05-5400 | Pre-Qualification Submittal for Thermal & Moisture Protection | 2025-12-25 A | 2025-12-31 A | 0% → 100% |
| HFR1-05-6630 | Pre-Qualification Approval for Thermal & Moisture Protection | 2026-01-01 A | 2026-01-07 A | 0% → 100% |
| HFR1-05-5410 | Pre-Qualification Submittal for Water Proofing System | 2025-12-25 A | 2025-12-31 A | 0% → 100% |
| HFR1-05-6640 | Pre-Qualification Approval for Water Proofing System | 2026-01-01 A | 2026-01-07 A | 0% → 100% |
| 7 | **Doors & Windows** |  | 2026-01-07 → 2026-03-31 (+83d) |  |
| HFR1-05-5450 | Pre-Qualification Submittal for Doors & Windows | 2025-12-25 A | 2025-12-31 → 2026-03-31 A (+90d) | 0% → 100% |
| HFR1-05-6680 | Pre-Qualification Approval for Doors & Windows | 2026-01-01 A | 2026-01-07 A | 0% → 100% |

| ID | Task | Start | Finish | Complete |
| --- | --- | --- | --- | --- |
| 8 | **Floor Finishes** | 2025-12-25 → 2025-12-27 (+2d) | 2026-01-07 → 2026-03-08 (+60d) |  |
| HFR1-05-5420 | Pre-Qualification Submittal for Floor Finishes | 2025-12-25 → 2025-12-27 A (+2d) | 2025-12-31 → 2026-01-01 A (+1d) | 0% → 100% |
| HFR1-05-6650 | Pre-Qualification Approval for Floor Finishes | 2026-01-01 → 2026-01-03 A (+2d) | 2026-01-07 → 2026-03-08 A (+60d) | 0% → 100% |
| 9 | **Wall Finishes** | 2025-12-25 → 2025-12-27 (+2d) | 2026-01-07 → 2026-01-08 (+1d) |  |
| HFR1-05-5460 | Pre-Qualification Submittal for Wall Finishes | 2025-12-25 → 2025-12-27 A (+2d) | 2025-12-31 → 2026-01-01 A (+1d) | 0% → 100% |
| HFR1-05-6690 | Pre-Qualification Approval for Wall Finishes | 2026-01-01 → 2026-01-03 A (+2d) | 2026-01-07 → 2026-01-08 A (+1d) | 0% → 100% |
| HFR1-05-5470 | Pre-Qualification Submittal for Ceiling Finishes | 2026-01-01 A | 2026-01-07 A | 0% → 100% |
| HFR1-05-6700 | Pre-Qualification Approval for Ceiling Finishes | 2026-01-08 A | 2026-01-14 A | 0% → 100% |
| HFR1-05-5430 | Pre-Qualification Submittal for Fittings | 2026-01-01 A | 2026-01-07 A | 0% → 100% |
| HFR1-05-6660 | Pre-Qualification Approval for Fittings | 2026-01-08 A | 2026-01-14 A | 0% → 100% |
| HFR1-05-5440 | Pre-Qualification Submittal for Signages | 2026-01-01 A | 2026-01-07 A | 0% → 100% |
| HFR1-05-6670 | Pre-Qualification Approval for Signages | 2026-01-08 A | 2026-01-14 A | 0% → 100% |
| HFR1-05-5510 | Pre-Qualification Submittal for Logo | 2026-01-01 A | 2026-01-07 A | 0% → 100% |
| HFR1-05-6740 | Pre-Qualification Approval for Logo | 2026-01-08 A | 2026-01-14 A | 0% → 100% |
| HFR1-05-5480 | Pre-Qualification Submittal for Pre Engineered Structure | 2026-01-01 A | 2026-01-07 A | 0% → 100% |
| HFR1-05-6710 | Pre-Qualification Approval for Pre Engineered Structure | 2026-01-08 A | 2026-01-14 A | 0% → 100% |
| HFR1-05-5490 | Pre-Qualification Submittal for Steel Fences | 2026-01-01 A | 2026-01-07 A | 0% → 100% |
| HFR1-05-6720 | Pre-Qualification Approval for Steel Fences | 2026-01-08 A | 2026-01-14 A | 0% → 100% |
| HFR1-05-5500 | Pre-Qualification Submittal for Gates | 2026-01-01 A | 2026-01-07 A | 0% → 100% |
| HFR1-05-6730 | Pre-Qualification Approval for Gates | 2026-01-08 A | 2026-01-14 A | 0% → 100% |
| HFR1-05-5520 | Pre-Qualification Submittal for Pump Shed | 2026-01-01 A | 2026-01-07 A | 0% → 100% |
| HFR1-05-6750 | Pre-Qualification Approval for Pump Shed | 2026-01-08 A | 2026-01-14 A | 0% → 100% |
| HFR1-05-3300 | Pre-Qualification Submittal for Fire Fighting System | 2026-01-01 A | 2026-01-07 A | 0% → 100% |
| HFR1-05-5070 | Pre-Qualification Approval for Fire Fighting System | 2026-01-08 A | 2026-01-14 A | 0% → 100% |
| HFR1-05-5060 | Pre-Qualification Submittal for HDPE Pipes | 2026-01-01 A | 2026-01-07 A | 0% → 100% |
| HFR1-05-6290 | Pre-Qualification Approval for HDPE Pipes | 2026-01-08 A | 2026-01-14 A | 0% → 100% |
| HFR1-05-5080 | Pre-Qualification Submittal for Valves | 2026-01-01 A | 2026-01-07 A | 0% → 100% |
| HFR1-05-6300 | Pre-Qualification Approval for Valves | 2026-01-08 A | 2026-01-14 A | 0% → 100% |
| HFR1-05-5090 | Pre-Qualification Submittal for GRP Pipes | 2026-01-01 A | 2026-01-07 A | 0% → 100% |
| HFR1-05-6310 | Pre-Qualification Approval for GRP Pipes | 2026-01-08 A | 2026-01-14 A | 0% → 100% |
| HFR1-05-5100 | Pre-Qualification Submittal for Manholes | 2026-01-01 A | 2026-01-07 A | 0% → 100% |
| HFR1-05-6320 | Pre-Qualification Approval for Manholes | 2026-01-08 A | 2026-01-14 A | 0% → 100% |
| HFR1-05-5110 | Pre-Qualification Submittal for Fire Protection System | 2026-01-01 A | 2026-01-07 A | 0% → 100% |
| HFR1-05-6330 | Pre-Qualification Approval for Fire Protection System | 2026-01-08 A | 2026-01-14 A | 0% → 100% |
| HFR1-05-5150 | Pre-Qualification Submittal for Water Supply System | 2026-01-01 A | 2026-01-07 A | 0% → 100% |
| HFR1-05-6370 | Pre-Qualification Approval for Water Supply System | 2026-01-08 A | 2026-01-14 A | 0% → 100% |
| HFR1-05-5120 | Pre-Qualification Submittal for UPVC Pipes | 2026-01-01 A | 2026-01-07 A | 0% → 100% |
| HFR1-05-6340 | Pre-Qualification Approval for UPVC Pipes | 2026-01-08 A | 2026-01-14 A | 0% → 100% |
| HFR1-05-5160 | Pre-Qualification Submittal for Roof Vent Caps | 2026-01-01 A | 2026-01-07 A | 0% → 100% |
| HFR1-05-6380 | Pre-Qualification Approval for Roof Vent Caps | 2026-01-08 A | 2026-01-14 A | 0% → 100% |
| HFR1-05-5170 | Pre-Qualification Submittal for Floor Drains | 2026-01-01 A | 2026-01-07 A | 0% → 100% |
| HFR1-05-6390 | Pre-Qualification Approval for Floor Drains | 2026-01-08 A | 2026-01-14 A | 0% → 100% |
| HFR1-05-5130 | Pre-Qualification Submittal for Electric Water Heater | 2026-01-01 A | 2026-01-07 A | 0% → 100% |
| HFR1-05-6350 | Pre-Qualification Approval for Electric Water Heater | 2026-01-08 A | 2026-01-14 A | 0% → 100% |
| HFR1-05-5140 | Pre-Qualification Submittal for Heating,Ventilation & Air Conditioning | 2026-01-01 A | 2026-01-07 A | 0% → 100% |
| HFR1-05-6360 | Pre-Qualification Approval for Heating,Ventilation & Air Conditioning | 2026-01-08 A | 2026-01-14 A | 0% → 100% |
| HFR1-05-3310 | Pre-Qualification Submittal for Telecome Manholes & handholes | 2026-01-01 A | 2026-01-07 A | 0% → 100% |
| HFR1-05-5190 | Pre-Qualification Approval for Telecome Manholes & handholes | 2026-01-08 A | 2026-01-14 A | 0% → 100% |
| HFR1-05-5180 | Pre-Qualification Submittal for Manholes | 2026-01-01 A | 2026-01-07 A | 0% → 100% |
| HFR1-05-6400 | Pre-Qualification Approval for Manholes | 2026-01-08 A | 2026-01-14 A | 0% → 100% |
| HFR1-05-5200 | Pre-Qualification Submittal for Street Lighting Manholes | 2026-01-01 A | 2026-01-07 → 2026-01-08 A (+1d) | 0% → 100% |
| HFR1-05-6410 | Pre-Qualification Approval for Street Lighting Manholes | 2026-01-08 A | 2026-01-14 A | 0% → 100% |
| HFR1-05-5210 | Pre-Qualification Submittal for Duct Bank | 2026-01-01 A | 2026-01-07 → 2026-01-08 A (+1d) | 0% → 100% |
| HFR1-05-6420 | Pre-Qualification Approval for Duct Bank | 2026-01-08 A | 2026-01-14 A | 0% → 100% |
| HFR1-05-5220 | Pre-Qualification Submittal for Feeder Pillers | 2026-01-01 A | 2026-01-07 → 2026-01-08 A (+1d) | 0% → 100% |
| HFR1-05-6430 | Pre-Qualification Approval for Feeder Pillers | 2026-01-08 A | 2026-01-14 A | 0% → 100% |
| HFR1-05-5230 | Pre-Qualification Submittal for Street Lighting Poles | 2026-01-01 A | 2026-01-07 A | 0% → 100% |
| HFR1-05-6440 | Pre-Qualification Approval for Street Lighting Poles | 2026-01-08 A | 2026-01-14 A | 0% → 100% |
| HFR1-05-5270 | Pre-Qualification Submittal for Street Lighting Luminaires | 2026-01-01 A | 2026-01-07 A | 0% → 100% |
| HFR1-05-6480 | Pre-Qualification Approval for Street Lighting Luminaires | 2026-01-08 A | 2026-01-14 A | 0% → 100% |
| HFR1-05-5240 | Pre-Qualification Submittal for Low Voltage Cables | 2026-01-01 A | 2026-01-07 A | 0% → 100% |
| HFR1-05-6450 | Pre-Qualification Approval for Low Voltage Cables | 2026-01-08 A | 2026-01-14 A | 0% → 100% |
| HFR1-05-5280 | Pre-Qualification Submittal for LED Lighting Fixtures | 2026-01-01 A | 2026-01-07 A | 0% → 100% |
| HFR1-05-6490 | Pre-Qualification Approval for LED Lighting Fixtures | 2026-01-08 A | 2026-01-14 A | 0% → 100% |
| HFR1-05-5290 | Pre-Qualification Submittal for Power Panel | 2026-01-01 A | 2026-01-07 A | 0% → 100% |
| HFR1-05-6500 | Pre-Qualification Approval for Power Panel | 2026-01-08 A | 2026-01-14 A | 0% → 100% |
| HFR1-05-5250 | Pre-Qualification Submittal for Control Panels | 2026-01-01 A | 2026-01-07 A | 0% → 100% |
| HFR1-05-6460 | Pre-Qualification Approval for Control Panels | 2026-01-08 A | 2026-01-14 A | 0% → 100% |
| HFR1-05-5260 | Pre-Qualification Submittal for Isolator & Disconnecting Switches | 2026-01-01 A | 2026-01-07 A | 0% → 100% |
| HFR1-05-6470 | Pre-Qualification Approval for Isolator & Disconnecting Switches | 2026-01-08 A | 2026-01-14 A | 0% → 100% |

| ID | Task | Start | Finish | Complete |
| --- | --- | --- | --- | --- |
| HFR1-05-5330 | Pre-Qualification Submittal for Cable Trays | 2026-01-01 A | 2026-01-07 A | 0% → 100% |
| HFR1-05-6540 | Pre-Qualification Approval for Cable Trays | 2026-01-08 A | 2026-01-14 A | 0% → 100% |
| HFR1-05-5300 | Pre-Qualification Submittal for KWHM | 2026-01-01 A | 2026-01-07 A | 0% → 100% |
| HFR1-05-6510 | Pre-Qualification Approval for KWHM | 2026-01-08 A | 2026-01-14 A | 0% → 100% |
| HFR1-05-5310 | Pre-Qualification Submittal for Safety Disconnects Switches | 2026-01-01 A | 2026-01-07 A | 0% → 100% |
| HFR1-05-6520 | Pre-Qualification Approval for Safety Disconnects Switches | 2026-01-08 A | 2026-01-14 A | 0% → 100% |
| HFR1-05-5320 | Pre-Qualification Submittal for Telecome & Data System | 2026-01-01 A | 2026-01-07 A | 0% → 100% |
| HFR1-05-6530 | Pre-Qualification Approval for Telecome & Data System | 2026-01-08 A | 2026-01-14 A | 0% → 100% |
| HFR1-05-5350 | Pre-Qualification Submittal for Grounding System | 2026-01-01 A | 2026-01-07 A | 0% → 100% |
| HFR1-05-6590 | Pre-Qualification Approval for Grounding System | 2026-01-08 A | 2026-01-14 A | 0% → 100% |
| HFR1-05-5340 | Pre-Qualification Submittal for Lightning Protection System | 2026-01-01 A | 2026-01-07 A | 0% → 100% |
| HFR1-05-6580 | Pre-Qualification Approval for Lightning Protection System | 2026-01-08 A | 2026-01-14 A | 0% → 100% |
| HFR1-05-6560 | Pre-Qualification Submittal for Fire Alarm System | 2026-01-01 A | 2026-01-07 A | 0% → 100% |
| HFR1-05-6970 | Pre-Qualification Approval for Fire Alarm System | 2026-01-08 A | 2026-01-14 A | 0% → 100% |
| HFR1-05-6570 | Pre-Qualification Submittal for Solar Power Plant | 2026-01-01 A | 2026-01-07 A | 0% → 100% |
| HFR1-05-6980 | Pre-Qualification Approval for Solar Power Plant | 2026-01-08 A | 2026-01-14 A | 0% → 100% |
| HFR1-05-6550 | Pre-Qualification Submittal for Skylight Fixtures | 2026-01-01 A | 2026-01-07 A | 0% → 100% |
| HFR1-05-6960 | Pre-Qualification Approval for Skylight Fixtures | 2026-01-08 A | 2026-01-14 A | 0% → 100% |
| 3 | **Material Submittal** |  | 2026-01-28 → 2026-07-20 (+173d) |  |
| 1 | **Road Works - Civil** |  | 2026-01-27 → 2026-07-20 (+174d) |  |
| HFR1-05-6760 | Material Submittal for Steel Reinforcement | 2026-01-08 A | 2026-01-14 A | 0% → 100% |
| HFR1-05-6990 | Material Approval for Steel Reinforcement | 2026-01-15 A | 2026-01-21 A | 0% → 100% |
| HFR1-05-7000 | Material Submittal for Ready Mixed Concrete | 2026-01-08 A | 2026-01-14 A | 0% → 100% |
| HFR1-05-7970 | Material Approval for Ready Mixed Concrete | 2026-01-15 A | 2026-01-21 A | 0% → 100% |
| HFR1-05-7980 | Material Submittal for Water Proofing | 2026-01-08 A | 2026-01-14 A | 0% → 100% |
| HFR1-05-8780 | Material Approval for Water Proofing | 2026-01-15 A | 2026-01-21 A | 0% → 100% |
| 4 | **Aggregate Base Course** | 2026-01-08 → 2026-04-02 (+84d) | 2026-01-21 → 2026-07-02 (+162d) |  |
| HFR1-05-7960 | Material Submittal for Aggregate Base Cource | 2026-01-08 → 2026-04-02 A (+84d) | 2026-01-14 → 2026-05-19 A (+125d) | 0% → 100% |
| HFR1-05-8740 | Material Approval for Aggregate Base Cource | 2026-01-15 → 2026-05-24 A (+129d) | 2026-01-21 → 2026-07-02 A (+162d) | 0% → 100% |
| 5 | **Bituminous Base & Wearing Course** | 2026-01-08 → 2026-01-17 (+9d) | 2026-01-21 → 2026-07-20 (+180d) |  |
| HFR1-05-8930 | Material Approval for Bituminous & Wearing Cource | 2026-01-15 → 2026-01-17 A (+2d) | 2026-01-21 → 2026-07-20 A (+180d) | 0% → 100% |
| HFR1-05-8750 | Material Submittal for Bituminous Base & Wearing Cource | 2026-01-08 → 2026-06-30 A (+173d) | 2026-01-14 → 2026-07-14 A (+181d) | 0% → 100% |
| HFR1-05-8760 | Material Submittal for Precast Concrete Kerb | 2026-01-08 A | 2026-01-14 → 2026-01-15 A (+1d) | 0% → 100% |
| HFR1-05-8940 | Material Approval for Precast Concrete Kerb | 2026-01-15 A | 2026-01-21 A | 0% → 100% |
| HFR1-05-8770 | Material Submittal for Interlocking Block Pavers | 2026-01-08 A | 2026-01-14 A | 0% → 100% |
| HFR1-05-8950 | Material Approval for Interlocking Block Pavers | 2026-01-15 A | 2026-01-21 A | 0% → 100% |
| 9 | **Pavement Markings** | 2026-01-15 → 2026-03-23 (+67d) | 2026-01-27 → 2026-05-02 (+95d) |  |
| HFR1-05-8960 | Material Submittal for Pavement Markings | 2026-01-15 → 2026-03-23 A (+67d) | 2026-01-20 → 2026-04-02 A (+72d) | 0% → 100% |
| HFR1-05-9070 | Material Approval for Pavement Markings | 2026-01-21 → 2026-04-08 A (+77d) | 2026-01-27 → 2026-05-02 A (+95d) | 0% → 100% |
| 10 | **Traffic Signs** | 2026-01-08 → 2026-03-02 (+53d) | 2026-01-20 → 2026-04-15 (+85d) |  |
| HFR1-05-9080 | Material Submittal for Traffic Signs | 2026-01-08 → 2026-03-02 A (+53d) | 2026-01-13 → 2026-03-24 A (+70d) | 0% → 100% |
| HFR1-05-9180 | Material Approval for Traffic Signs | 2026-01-14 → 2026-03-30 A (+75d) | 2026-01-20 → 2026-04-15 A (+85d) | 0% → 100% |
| HFR1-05-5640 | Material Submittal for HDPE Pipes | 2026-01-08 A | 2026-01-14 A | 0% → 100% |
| HFR1-05-6820 | Material Approval for HDPE Pipes | 2026-01-15 A | 2026-01-21 A | 0% → 100% |
| HFR1-05-6830 | Material Submittal for Valves | 2026-01-15 A | 2026-01-21 A | 0% → 100% |
| HFR1-05-7480 | Material Approval for Valves | 2026-01-22 A | 2026-01-28 A | 0% → 100% |
| HFR1-05-6840 | Material Submittal for GRP Pipes | 2026-01-08 A | 2026-01-14 A | 0% → 100% |
| HFR1-05-7490 | Material Approval for GRP Pipes | 2026-01-15 A | 2026-01-21 A | 0% → 100% |
| HFR1-05-7500 | Material Submittal for Manholes | 2026-01-15 A | 2026-01-20 A | 0% → 100% |
| HFR1-05-8460 | Material Approval for Manholes | 2026-01-21 A | 2026-01-27 A | 0% → 100% |
| 7 | **Civil Works - Buildings** |  | 2026-01-27 → 2026-05-19 (+112d) |  |
| HFR1-05-6790 | Material Submittal for Steel Reinforcement | 2026-01-08 A | 2026-01-14 A | 0% → 100% |
| HFR1-05-7320 | Material Approval for Steel Reinforcement | 2026-01-15 A | 2026-01-21 A | 0% → 100% |
| HFR1-05-7310 | Material Submittal for Ready Mix Concrete | 2026-01-15 A | 2026-01-20 A | 0% → 100% |
| HFR1-05-8300 | Material Approval for Ready Mix Concrete | 2026-01-21 A | 2026-01-27 A | 0% → 100% |
| HFR1-05-7330 | Material Submittal for Masonry | 2026-01-15 A | 2026-01-20 A | 0% → 100% |
| HFR1-05-8310 | Material Approval for Masonry | 2026-01-21 A | 2026-01-27 A | 0% → 100% |
| HFR1-05-7340 | Material Submittal for Steel Structure | 2026-01-15 A | 2026-01-20 A | 0% → 100% |
| HFR1-05-8320 | Material Approval for Steel Structure | 2026-01-21 A | 2026-01-27 A | 0% → 100% |
| HFR1-05-7350 | Material Submittal for Thermal & Moisture Protection | 2026-01-15 A | 2026-01-20 A | 0% → 100% |
| HFR1-05-8330 | Material Approval for Thermal & Moisture Protection | 2026-01-21 A | 2026-01-27 A | 0% → 100% |
| HFR1-05-7360 | Material Submittal for Water Proofing System | 2026-01-15 A | 2026-01-20 A | 0% → 100% |
| HFR1-05-8340 | Material Approval for Water Proofing System | 2026-01-21 A | 2026-01-27 A | 0% → 100% |
| 7 | **Doors & Windows** |  | 2026-01-27 → 2026-01-28 (+1d) |  |
| HFR1-05-7400 | Material Submittal for Doors & Windows | 2026-01-15 A | 2026-01-20 A | 0% → 100% |
| HFR1-05-8380 | Material Approval for Doors & Windows | 2026-01-21 A | 2026-01-27 → 2026-01-28 A (+1d) | 0% → 100% |
| HFR1-05-7370 | Material Submittal for Floor Finishes | 2026-01-15 A | 2026-01-20 A | 0% → 100% |
| HFR1-05-8350 | Material Approval for Floor Finishes | 2026-01-21 A | 2026-01-27 A | 0% → 100% |
| HFR1-05-7410 | Material Submittal for Wall Finishes | 2026-01-15 A | 2026-01-20 A | 0% → 100% |
| HFR1-05-8390 | Material Approval for Wall Finishes | 2026-01-21 A | 2026-01-27 A | 0% → 100% |

| ID | Task | Start | Finish | Complete |
| --- | --- | --- | --- | --- |
| HFR1-05-7420 | Material Submittal for Ceiling Finishes | 2026-01-15 A | 2026-01-20 A | 0% → 100% |
| HFR1-05-8400 | Material Approval for Ceiling Finishes | 2026-01-21 A | 2026-01-27 A | 0% → 100% |
| HFR1-05-7380 | Material Submittal for Fittings | 2026-01-15 A | 2026-01-20 A | 0% → 100% |
| HFR1-05-8360 | Material Approval for Fittings | 2026-01-21 A | 2026-01-27 A | 0% → 100% |
| HFR1-05-7390 | Material Submittal for Signages | 2026-01-15 A | 2026-01-20 A | 0% → 100% |
| HFR1-05-8370 | Material Approval for Signages | 2026-01-21 A | 2026-01-27 A | 0% → 100% |
| HFR1-05-7460 | Material Submittal for Logo | 2026-01-15 A | 2026-01-20 A | 0% → 100% |
| HFR1-05-8440 | Material Approval for Logo | 2026-01-21 A | 2026-01-27 A | 0% → 100% |
| HFR1-05-7430 | Material Submittal for Pre Engineered Structure | 2026-01-15 A | 2026-01-20 A | 0% → 100% |
| HFR1-05-8410 | Material Approval for Pre Engineered Structure | 2026-01-21 A | 2026-01-27 A | 0% → 100% |
| 15 | **Steel Fence** | 2026-01-15 → 2026-04-29 (+104d) | 2026-01-27 → 2026-05-19 (+112d) |  |
| HFR1-05-7440 | Material Submittal for Steel Fences | 2026-01-15 → 2026-04-29 A (+104d) | 2026-01-20 → 2026-05-02 A (+102d) | 0% → 100% |
| HFR1-05-8420 | Material Approval for Steel Fences | 2026-01-21 → 2026-05-06 A (+105d) | 2026-01-27 → 2026-05-19 A (+112d) | 0% → 100% |
| HFR1-05-7450 | Material Submittal for Gates | 2026-01-15 A | 2026-01-20 A | 0% → 100% |
| HFR1-05-8430 | Material Approval for Gates | 2026-01-21 A | 2026-01-27 A | 0% → 100% |
| HFR1-05-7470 | Material Submittal for Pump Shed | 2026-01-15 A | 2026-01-20 A | 0% → 100% |
| HFR1-05-8450 | Material Approval for Pump Shed | 2026-01-21 A | 2026-01-27 A | 0% → 100% |
| 5 | **Mechanical - Buildings** |  | 2026-01-27 → 2026-03-27 (+59d) |  |
| 2 | **Fire Fighting System** |  | 2026-01-27 → 2026-03-27 (+59d) |  |
| HFR1-05-6770 | Material Submittal for Fire Fighting System | 2026-01-15 A | 2026-01-20 → 2026-03-24 A (+63d) | 0% → 100% |
| HFR1-05-7020 | Material Approval for Fire Fighting System | 2026-01-21 → 2026-01-24 A (+3d) | 2026-01-27 → 2026-03-27 A (+59d) | 0% → 100% |
| HFR1-05-7010 | Material Submittal for HDPE Pipes | 2026-01-15 A | 2026-01-20 A | 0% → 100% |
| HFR1-05-7990 | Material Approval for HDPE Pipes | 2026-01-21 A | 2026-01-27 A | 0% → 100% |
| HFR1-05-7030 | Material Submittal for Valves | 2026-01-15 A | 2026-01-20 A | 0% → 100% |
| HFR1-05-8000 | Material Approval for Valves | 2026-01-21 A | 2026-01-27 A | 0% → 100% |
| HFR1-05-7040 | Material Submittal for GRP Pipes | 2026-01-15 A | 2026-01-20 A | 0% → 100% |
| HFR1-05-8010 | Material Approval for GRP Pipes | 2026-01-21 A | 2026-01-27 A | 0% → 100% |
| HFR1-05-7050 | Material Submittal for Manholes | 2026-01-15 A | 2026-01-20 A | 0% → 100% |
| HFR1-05-8020 | Material Approval for Manholes | 2026-01-21 A | 2026-01-27 A | 0% → 100% |
| HFR1-05-7060 | Material Submittal for Fire Protection System | 2026-01-15 A | 2026-01-20 A | 0% → 100% |
| HFR1-05-8030 | Material Approval for Fire Protection System | 2026-01-21 A | 2026-01-27 A | 0% → 100% |
| HFR1-05-7100 | Material Submittal for Water Supply System | 2026-01-15 A | 2026-01-20 A | 0% → 100% |
| HFR1-05-8070 | Material Approval for Water Supply System | 2026-01-21 A | 2026-01-27 A | 0% → 100% |
| HFR1-05-7070 | Material Submittal for UPVC Pipes | 2026-01-15 A | 2026-01-20 A | 0% → 100% |
| HFR1-05-8040 | Material Approval for UPVC Pipes | 2026-01-21 A | 2026-01-27 A | 0% → 100% |
| HFR1-05-7110 | Material Submittal for Roof Vent Caps | 2026-01-15 A | 2026-01-20 A | 0% → 100% |
| HFR1-05-8080 | Material Approval for Roof Vent Caps | 2026-01-21 A | 2026-01-27 A | 0% → 100% |
| HFR1-05-7120 | Material Submittal for Floor Drains | 2026-01-15 A | 2026-01-20 A | 0% → 100% |
| HFR1-05-8090 | Material Approval for Floor Drains | 2026-01-21 A | 2026-01-27 A | 0% → 100% |
| HFR1-05-7080 | Material Submittal for Electric Water Heater | 2026-01-15 A | 2026-01-20 A | 0% → 100% |
| HFR1-05-8050 | Material Approval for Electric Water Heater | 2026-01-21 A | 2026-01-27 A | 0% → 100% |
| 12 | **Heating,Ventilation & Air Conditioning** | 2026-01-15 → 2026-03-04 (+48d) | 2026-01-27 → 2026-03-18 (+50d) |  |
| HFR1-05-7090 | Material Submittal for Heating,Ventilation & Air Conditioning | 2026-01-15 → 2026-03-04 A (+48d) | 2026-01-20 → 2026-03-18 A (+57d) | 0% → 100% |
| HFR1-05-8060 | Material Approval for Heating,Ventilation & Air Conditioning | 2026-01-21 → 2026-03-04 A (+42d) | 2026-01-27 → 2026-03-18 A (+50d) | 0% → 100% |
| 6 | **Electrical - Buildings** |  | 2026-01-27 → 2026-03-20 (+52d) |  |
| HFR1-05-6780 | Material Submittal for Telecome Manholes & handholes | 2026-01-15 A | 2026-01-20 A | 0% → 100% |
| HFR1-05-7140 | Material Approval for Telecome Manholes & handholes | 2026-01-21 A | 2026-01-27 A | 0% → 100% |
| HFR1-05-7130 | Material Submittal for Manholes | 2026-01-15 A | 2026-01-20 A | 0% → 100% |
| HFR1-05-8100 | Material Approval for Manholes | 2026-01-21 A | 2026-01-27 A | 0% → 100% |
| HFR1-05-7150 | Material Submittal for Street Lighting Manholes | 2026-01-15 A | 2026-01-20 A | 0% → 100% |
| HFR1-05-8110 | Material Approval for Street Lighting Manholes | 2026-01-21 A | 2026-01-27 A | 0% → 100% |
| HFR1-05-7160 | Material Submittal for Duct Bank | 2026-01-15 A | 2026-01-20 A | 0% → 100% |
| HFR1-05-8120 | Material Approval for Duct Bank | 2026-01-21 A | 2026-01-27 A | 0% → 100% |
| HFR1-05-7170 | Material Submittal for Feeder Pillers | 2026-01-15 A | 2026-01-20 A | 0% → 100% |
| HFR1-05-8130 | Material Approval for Feeder Pillers | 2026-01-21 A | 2026-01-27 A | 0% → 100% |
| HFR1-05-7180 | Material Submittal for Street Lighting Poles | 2026-01-15 A | 2026-01-20 A | 0% → 100% |
| HFR1-05-8140 | Material Approval for Street Lighting Poles | 2026-01-21 A | 2026-01-27 A | 0% → 100% |
| HFR1-05-7220 | Material Submittal for Street Lighting Luminaires | 2026-01-15 A | 2026-01-20 A | 0% → 100% |
| HFR1-05-8180 | Material Approval for Street Lighting Luminaires | 2026-01-21 A | 2026-01-27 A | 0% → 100% |
| HFR1-05-7190 | Material Submittal for Low Voltage Cables | 2026-01-15 A | 2026-01-20 A | 0% → 100% |
| HFR1-05-8150 | Material Approval for Low Voltage Cables | 2026-01-21 A | 2026-01-27 A | 0% → 100% |
| HFR1-05-7230 | Material Submittal for LED Lighting Fixtures | 2026-01-15 A | 2026-01-20 A | 0% → 100% |
| HFR1-05-8190 | Material Approval for LED Lighting Fixtures | 2026-01-21 A | 2026-01-27 A | 0% → 100% |
| HFR1-05-7240 | Material Submittal for Power Panel | 2026-01-15 A | 2026-01-20 A | 0% → 100% |
| HFR1-05-8200 | Material Approval for Power Panel | 2026-01-21 A | 2026-01-27 A | 0% → 100% |
| HFR1-05-7200 | Material Submittal for Control Panels | 2026-01-15 A | 2026-01-20 A | 0% → 100% |
| HFR1-05-8160 | Material Approval for Control Panels | 2026-01-21 A | 2026-01-27 A | 0% → 100% |
| HFR1-05-7210 | Material Submittal for Isolator & Disconnecting Switches | 2026-01-15 A | 2026-01-20 A | 0% → 100% |
| HFR1-05-8170 | Material Approval for Isolator & Disconnecting Switches | 2026-01-21 A | 2026-01-27 A | 0% → 100% |
| 13 | **Cable Trays** |  | 2026-01-27 → 2026-03-20 (+52d) |  |

| ID | Task | Start | Finish | Complete |
| --- | --- | --- | --- | --- |
| HFR1-05-7280 | Material Submittal for Cable Trays | 2026-01-15 A | 2026-01-20 → 2026-03-20 A (+59d) | 0% → 100% |
| HFR1-05-8240 | Material Approval for Cable Trays | 2026-01-21 A | 2026-01-27 A | 0% → 100% |
| HFR1-05-7250 | Material Submittal for KWHM | 2026-01-15 A | 2026-01-20 A | 0% → 100% |
| HFR1-05-8210 | Material Approval for KWHM | 2026-01-21 A | 2026-01-27 A | 0% → 100% |
| HFR1-05-7260 | Material Submittal for Safety Disconnects Switches | 2026-01-15 A | 2026-01-20 A | 0% → 100% |
| HFR1-05-8220 | Material Approval for Safety Disconnects Switches | 2026-01-21 A | 2026-01-27 A | 0% → 100% |
| HFR1-05-7270 | Material Submittal for Telecome & Data System | 2026-01-15 A | 2026-01-20 A | 0% → 100% |
| HFR1-05-8230 | Material Approval for Telecome & Data System | 2026-01-21 A | 2026-01-27 A | 0% → 100% |
| 17 | **Grounding System** |  | 2026-01-27 → 2026-01-21 (-6d) |  |
| HFR1-05-7300 | Material Submittal for Grounding System | 2026-01-15 A | 2026-01-20 A | 0% → 100% |
| HFR1-05-8290 | Material Approval for Grounding System | 2026-01-21 A | 2026-01-27 → 2026-01-21 A (-6d) | 0% → 100% |
| HFR1-05-7290 | Material Submittal for Lightning Protection System | 2026-01-15 A | 2026-01-20 A | 0% → 100% |
| HFR1-05-8280 | Material Approval for Lightning Protection System | 2026-01-21 A | 2026-01-27 A | 0% → 100% |
| HFR1-05-8260 | Material Submittal for Fire Alarm System | 2026-01-15 A | 2026-01-20 A | 0% → 100% |
| HFR1-05-8800 | Material Approval for Fire Alarm System | 2026-01-21 A | 2026-01-27 A | 0% → 100% |
| HFR1-05-8270 | Material Submittal for Solar Power Plant | 2026-01-15 A | 2026-01-20 A | 0% → 100% |
| HFR1-05-8810 | Material Approval for Solar Power Plant | 2026-01-21 A | 2026-01-27 A | 0% → 100% |
| HFR1-05-8250 | Material Submittal for Skylight Fixtures | 2026-01-15 A | 2026-01-20 A | 0% → 100% |
| HFR1-05-8790 | Material Approval for Skylight Fixtures | 2026-01-21 A | 2026-01-27 A | 0% → 100% |
| 5 | **Procurement** |  | 2026-07-22 → 2026-11-08 (+109d) |  |
| 2 | **Short Lead Item** |  | 2026-07-22 → 2026-11-08 (+109d) |  |
| 1 | **Road Works - Civil** |  | 2026-07-22 → 2026-11-02 (+103d) |  |
| HFR1-05-3350 | PO for Steel Reinforcement | 2026-01-15 A | 2026-01-21 A | 0% → 100% |
| HFR1-05-5530 | Material Fabrication for Steel Reinforcement | 2026-01-22 A | 2026-01-28 A | 0% → 100% |
| HFR1-05-8860 | Material Delivery for Steel Reinforcement | 2026-01-29 A | 2026-02-11 A | 0% → 100% |
| 2 | **Ready Mixed Concrete** |  | 2026-02-04 → 2026-04-01 (+56d) |  |
| HFR1-05-3360 | PO for Ready Mixed Concrete | 2026-01-15 A | 2026-01-24 A | 0% → 100% |
| HFR1-05-5700 | Material Delivery for Ready Mixed Concrete | 2026-01-25 A | 2026-02-04 → 2026-04-01 A (+56d) | 0% → 100% |
| 3 | **Water Proofing** |  | 2026-04-01 → 2026-03-23 (-9d) |  |
| HFR1-05-3400 | PO for Water Proofing | 2026-01-22 A | 2026-01-28 A | 0% → 100% |
| HFR1-05-5540 | Material Fabrication for Water Proofing | 2026-01-29 A | 2026-02-28 A | 0% → 100% |
| HFR1-05-8990 | Material Delivery for Water Proofing | 2026-03-01 → 2026-02-18 A (-11d) | 2026-04-01 → 2026-03-23 A (-9d) | 0% → 100% |
| 4 | **Aggregate Base Course** | 2026-01-22 → 2026-05-31 (+129d) | 2026-02-11 → 2026-09-17 (+218d) |  |
| HFR1-05-3430 | PO for Aggregate Base Course | 2026-01-22 → 2026-05-31 A (+129d) | 2026-01-28 → 2026-06-04 A (+127d) | 0% → 100% |
| HFR1-05-5570 | Material Delivery for Aggregate Base Course | 2026-01-29 → 2026-09-07 A (+221d) | 2026-02-11 → 2026-09-17 (+218d) | 0% → 90% |
| 5 | **Bituminous Base & Wearing Course** | 2026-01-22 → 2026-05-31 (+129d) | 2026-06-10 → 2026-09-10 (+92d) |  |
| HFR1-05-3460 | PO for Bituminous Base & Wearing Cource | 2026-01-22 → 2026-05-31 A (+129d) | 2026-01-28 → 2026-06-04 A (+127d) | 0% → 100% |
| HFR1-05-5550 | Material Delivery to the Site | 2026-04-26 → 2026-09-07 A (+134d) | 2026-06-10 → 2026-09-10 A (+92d) | 0% → 100% |
| 7 | **Precast Concrete Kerb** |  | 2026-06-17 → 2026-07-12 (+25d) |  |
| HFR1-05-3500 | PO for Precast Concrete Kerb | 2026-01-22 A | 2026-01-28 A | 0% → 100% |
| HFR1-05-5560 | Material Fabrication for Precast Concrete Kerb | 2026-03-22 → 2026-04-22 A (+31d) | 2026-05-04 → 2026-05-12 A (+8d) | 0% → 100% |
| HFR1-05-9110 | Material Delivery for Precast Concrete Kerb | 2026-05-05 → 2026-07-06 A (+62d) | 2026-06-17 → 2026-07-12 A (+25d) | 0% → 100% |
| 8 | **Interlocking Block Pavers** | 2026-03-05 → 2026-07-07 (+124d) | 2026-07-01 → 2026-08-06 (+36d) |  |
| HFR1-05-3550 | PO for Interlocking Block Pavers | 2026-03-05 → 2026-07-07 A (+124d) | 2026-03-09 → 2026-07-11 A (+124d) | 0% → 100% |
| HFR1-05-5000 | Material Fabrication for Interlocking Block Pavers | 2026-04-06 → 2026-07-12 A (+97d) | 2026-05-18 → 2026-07-15 A (+58d) | 0% → 100% |
| HFR1-05-9060 | Material Delivery for Interlocking Block Pavers | 2026-05-19 → 2026-07-16 A (+58d) | 2026-07-01 → 2026-08-06 A (+36d) | 0% → 100% |
| 9 | **Pavement Markings** | 2026-03-11 → 2026-08-11 (+153d) | 2026-07-12 → 2026-11-02 (+113d) |  |
| HFR1-05-3570 | PO for Pavement Markings | 2026-03-11 → 2026-08-11 A (+153d) | 2026-03-16 → 2026-08-17 A (+154d) | 0% → 100% |
| HFR1-05-5020 | Material Fabrication for Pavement Markings | 2026-04-07 → 2026-08-19 A (+134d) | 2026-05-23 → 2026-08-24 A (+93d) | 0% → 100% |
| HFR1-05-9130 | Material Delivery for Pavement Markings | 2026-05-24 → 2026-09-01 A (+100d) | 2026-07-12 → 2026-11-02 (+113d) | 0% → 80% |
| 10 | **Traffic Signs** | 2026-03-16 → 2026-08-25 (+162d) | 2026-07-22 → 2026-09-13 (+53d) |  |
| HFR1-05-2920 | PO for Traffic Signs | 2026-03-16 → 2026-08-25 A (+162d) | 2026-03-24 → 2026-08-27 A (+156d) | 0% → 100% |
| HFR1-05-5010 | Material Fabrication for Traffic Signs | 2026-03-25 → 2026-08-29 A (+157d) | 2026-06-23 → 2026-08-31 A (+69d) | 0% → 100% |
| HFR1-05-5760 | Material Delivery for Traffic Signs | 2026-06-24 → 2026-09-02 A (+70d) | 2026-07-22 → 2026-09-13 A (+53d) | 0% → 100% |
| 2 | **Potable Water Network** |  | 2026-03-17 → 2026-03-29 (+12d) |  |
| 1 | **HDPE Pipes** |  | 2026-03-17 → 2026-03-23 (+6d) |  |
| HFR1-05-4930 | PO for HDPE Pipes | 2026-01-22 A | 2026-01-28 A | 0% → 100% |
| HFR1-05-5650 | Material Fabrication for HDPE Pipes | 2026-01-29 A | 2026-02-28 A | 0% → 100% |
| HFR1-05-8970 | Material Delivery for HDPE Pipes | 2026-03-01 → 2026-02-18 A (-11d) | 2026-03-17 → 2026-03-23 A (+6d) | 0% → 100% |
| 2 | **Valves** |  | 2026-03-17 → 2026-03-29 (+12d) |  |
| HFR1-05-4940 | PO for Valves | 2026-01-22 A | 2026-01-28 A | 0% → 100% |
| HFR1-05-5660 | Material Fabrication for Valves | 2026-01-29 A | 2026-02-28 → 2026-03-01 A (+1d) | 0% → 100% |
| HFR1-05-8980 | Material Delivery for Valves | 2026-03-01 → 2026-03-04 A (+3d) | 2026-03-17 → 2026-03-29 A (+12d) | 0% → 100% |
| 3 | **Sewer Water Network** |  | 2026-03-31 → 2026-03-30 (-1d) |  |
| 1 | **GRP Pipes** |  | 2026-03-25 → 2026-02-28 (-25d) |  |
| HFR1-05-4950 | PO for GRP Pipes | 2026-01-15 A | 2026-01-21 A | 0% → 100% |
| HFR1-05-5670 | Material Fabrication for GRP Pipes | 2026-01-22 A | 2026-02-19 A | 0% → 100% |
| HFR1-05-8870 | Material Delivery for GRP Pipes | 2026-02-21 A | 2026-03-25 → 2026-02-28 A (-25d) | 0% → 100% |
| 2 | **Manholes** |  | 2026-03-31 → 2026-03-30 (-1d) |  |
| HFR1-05-4960 | PO for Manholes | 2026-01-21 A | 2026-01-27 A | 0% → 100% |

| ID | Task | Start | Finish | Complete |
| --- | --- | --- | --- | --- |
| HFR1-05-5680 | Material Fabrication for Manholes | 2026-01-28 A | 2026-02-26 A | 0% → 100% |
| HFR1-05-8880 | Material Delivery for Manholes | 2026-02-28 → 2026-02-22 A (-6d) | 2026-03-31 → 2026-03-30 A (-1d) | 0% → 100% |
| 7 | **Civil Works - Buildings** |  | 2026-07-12 → 2026-11-08 (+119d) |  |
| HFR1-05-3630 | PO for Steel Reinforcement | 2026-01-15 A | 2026-01-18 A | 0% → 100% |
| HFR1-05-5580 | Material Fabrication for Steel Reinforcement | 2026-01-19 A | 2026-01-22 A | 0% → 100% |
| HFR1-05-9160 | Material Delivery for Steel Reinforcement | 2026-01-24 A | 2026-01-28 A | 0% → 100% |
| HFR1-05-3670 | PO for Ready Mix Concrete | 2026-01-21 A | 2026-01-26 A | 0% → 100% |
| HFR1-05-3700 | Material Delivery for Ready Mix Concrete | 2026-01-27 A | 2026-02-04 A | 0% → 100% |
| 3 | **Masonry** |  | 2026-02-04 → 2026-04-02 (+57d) |  |
| HFR1-05-3750 | PO for Masonry | 2026-01-21 A | 2026-01-26 → 2026-02-03 A (+8d) | 0% → 100% |
| HFR1-05-3850 | Material Delivery for Masonry | 2026-01-27 A | 2026-02-04 → 2026-04-02 A (+57d) | 0% → 100% |
| HFR1-05-3920 | PO for Thermal & Moisture Protection | 2026-01-21 A | 2026-01-26 A | 0% → 100% |
| HFR1-05-5030 | Material Fabrication for Thermal & Moisture Protection | 2026-01-27 A | 2026-02-02 A | 0% → 100% |
| HFR1-05-9140 | Material Delivery for Thermal & Moisture Protection | 2026-02-03 A | 2026-02-09 A | 0% → 100% |
| HFR1-05-3960 | PO for Water Proofing System | 2026-01-21 A | 2026-01-24 A | 0% → 100% |
| HFR1-05-5710 | Material Fabrication for Water Proofing System | 2026-01-25 A | 2026-01-31 A | 0% → 100% |
| HFR1-05-9090 | Material Delivery for Water Proofing System | 2026-02-01 A | 2026-02-07 A | 0% → 100% |
| 8 | **Floor Finishes** | 2026-01-21 → 2026-07-07 (+167d) | 2026-02-07 → 2026-07-29 (+172d) |  |
| HFR1-05-4060 | PO for Floor Finishes | 2026-01-21 → 2026-07-07 A (+167d) | 2026-01-24 → 2026-07-12 A (+169d) | 0% → 100% |
| HFR1-05-5590 | Material Fabrication for Floor Finishes | 2026-01-25 → 2026-07-14 A (+170d) | 2026-01-31 → 2026-07-18 A (+168d) | 0% → 100% |
| HFR1-05-9170 | Material Delivery for Floor Finishes | 2026-02-01 → 2026-07-19 A (+168d) | 2026-02-07 → 2026-07-29 A (+172d) | 0% → 100% |
| 9 | **Wall Finishes** | 2026-01-21 → 2026-05-02 (+101d) | 2026-02-07 → 2026-08-02 (+176d) |  |
| HFR1-05-4100 | PO for Wall Finishes | 2026-01-21 → 2026-05-02 A (+101d) | 2026-01-24 → 2026-05-20 A (+116d) | 0% → 100% |
| HFR1-05-5720 | Material Fabrication for Wall Finishes | 2026-01-25 → 2026-06-16 A (+142d) | 2026-01-31 → 2026-06-30 A (+150d) | 0% → 100% |
| HFR1-05-9100 | Material Delivery for Wall Finishes | 2026-02-01 → 2026-07-12 A (+161d) | 2026-02-07 → 2026-08-02 A (+176d) | 0% → 100% |
| 10 | **Ceiling Finishes** | 2026-01-28 → 2026-07-13 (+166d) | 2026-06-16 → 2026-08-10 (+55d) |  |
| HFR1-05-4210 | PO for Ceiling Finishes | 2026-01-28 → 2026-07-13 A (+166d) | 2026-02-05 → 2026-07-19 A (+164d) | 0% → 100% |
| HFR1-05-5730 | Material Fabrication for Ceiling Finishes | 2026-02-25 → 2026-07-20 A (+145d) | 2026-04-21 → 2026-07-28 A (+98d) | 0% → 100% |
| HFR1-05-9370 | Material Delivery for Ceiling Finishes | 2026-04-22 → 2026-08-04 A (+104d) | 2026-06-16 → 2026-08-10 A (+55d) | 0% → 100% |
| 12 | **Signages** | 2026-01-28 → 2026-08-29 (+213d) | 2026-06-16 → 2026-09-13 (+89d) |  |
| HFR1-05-4260 | PO for Signages | 2026-01-28 → 2026-08-29 A (+213d) | 2026-02-05 → 2026-08-31 A (+207d) | 0% → 100% |
| HFR1-05-5740 | Material Fabrication for Signages | 2026-02-25 → 2026-09-01 A (+188d) | 2026-04-21 → 2026-09-02 A (+134d) | 0% → 100% |
| HFR1-05-9380 | Material Delivery for Signages | 2026-04-22 → 2026-09-03 A (+134d) | 2026-06-16 → 2026-09-13 A (+89d) | 0% → 100% |
| 13 | **Logo** | 2026-01-28 → 2026-05-12 (+104d) | 2026-06-16 → 2026-11-08 (+145d) |  |
| HFR1-05-4330 | PO for Logo | 2026-01-28 → 2026-05-12 A (+104d) | 2026-02-05 → 2026-05-23 A (+107d) | 0% → 100% |
| HFR1-05-5750 | Material Fabrication for Logo | 2026-02-25 → 2026-08-01 A (+157d) | 2026-04-21 → 2026-08-05 A (+106d) | 0% → 100% |
| HFR1-05-9390 | Material Delivery for Logo | 2026-04-22 → 2026-08-10 A (+110d) | 2026-06-16 → 2026-11-08 (+145d) | 0% → 80% |
| 15 | **Steel Fence** | 2026-01-28 → 2026-05-24 (+116d) | 2026-06-11 → 2026-09-09 (+90d) |  |
| HFR1-05-4370 | PO for Steel Fence | 2026-01-28 → 2026-05-24 A (+116d) | 2026-02-05 → 2026-06-01 A (+116d) | 0% → 100% |
| HFR1-05-5770 | Material Fabrication for Steel Fence | 2026-04-12 → 2026-06-02 A (+51d) | 2026-05-10 → 2026-06-08 A (+29d) | 0% → 100% |
| HFR1-05-9190 | Material Delivery for Steel Fence | 2026-05-11 → 2026-06-14 A (+34d) | 2026-06-11 → 2026-09-09 A (+90d) | 0% → 100% |
| 16 | **Gates** | 2026-01-28 → 2026-05-06 (+98d) | 2026-07-12 → 2026-08-29 (+48d) |  |
| HFR1-05-4410 | PO for Gates | 2026-01-28 → 2026-05-06 A (+98d) | 2026-02-05 → 2026-05-12 A (+96d) | 0% → 100% |
| HFR1-05-5780 | Material Fabrication for Gates | 2026-04-11 → 2026-05-26 A (+45d) | 2026-06-01 → 2026-06-02 A (+1d) | 0% → 100% |
| HFR1-05-9310 | Material Delivery for Gates | 2026-06-02 → 2026-06-18 A (+16d) | 2026-07-12 → 2026-08-29 A (+48d) | 0% → 100% |
| 17 | **Pump Shed** |  | 2026-06-17 → 2026-04-06 (-72d) |  |
| HFR1-05-4450 | PO for GatesPump Shed | 2026-01-28 A | 2026-02-05 A | 0% → 100% |
| HFR1-05-5790 | Material Fabrication for Gates Pump Shed | 2026-04-12 → 2026-02-07 A (-64d) | 2026-05-16 → 2026-02-12 A (-93d) | 0% → 100% |
| HFR1-05-9200 | Material Delivery for Gates Pump Shed | 2026-05-17 → 2026-02-14 A (-92d) | 2026-06-17 → 2026-04-06 A (-72d) | 0% → 100% |
| 5 | **Mechanical - Buildings** |  | 2026-06-14 → 2026-04-14 (-61d) |  |
| 1 | **HDPE Pipes** |  | 2026-03-07 → 2026-02-23 (-12d) |  |
| HFR1-05-4490 | PO for HDPE Pipes | 2026-01-28 A | 2026-02-05 A | 0% → 100% |
| HFR1-05-5800 | Material Fabrication for HDPE Pipes | 2026-02-07 A | 2026-02-19 A | 0% → 100% |
| HFR1-05-9150 | Material Delivery for HDPE Pipes | 2026-02-21 → 2026-02-19 A (-2d) | 2026-03-07 → 2026-02-23 A (-12d) | 0% → 100% |
| HFR1-05-4580 | PO for GRP pipes | 2026-01-28 A | 2026-02-05 A | 0% → 100% |
| HFR1-05-5810 | Material Fabrication for GRP pipes | 2026-02-07 A | 2026-02-19 A | 0% → 100% |
| HFR1-05-9210 | Material Delivery for GRP pipes | 2026-02-21 A | 2026-02-28 A | 0% → 100% |
| 5 | **Manholes** |  | 2026-02-28 → 2026-04-09 (+40d) |  |
| HFR1-05-4610 | PO for Manholes | 2026-01-28 A | 2026-02-05 A | 0% → 100% |
| HFR1-05-5820 | Material Fabrication for Manholes | 2026-02-07 A | 2026-02-19 A | 0% → 100% |
| HFR1-05-9220 | Material Delivery for Manholes | 2026-02-21 A | 2026-02-28 → 2026-04-09 A (+40d) | 0% → 100% |
| HFR1-05-4640 | PO for Water Supply System | 2026-01-28 A | 2026-02-05 A | 0% → 100% |
| HFR1-05-5830 | Material Fabrication for Water Supply System | 2026-02-07 A | 2026-02-19 A | 0% → 100% |
| HFR1-05-9230 | Material Delivery for Water Supply System | 2026-02-21 A | 2026-02-28 A | 0% → 100% |
| 8 | **Upvc Pipes** |  | 2026-02-28 → 2026-02-23 (-5d) |  |
| HFR1-05-4710 | PO for Upvc Pipes | 2026-01-28 A | 2026-02-05 A | 0% → 100% |
| HFR1-05-5840 | Material Fabrication for Upvc Pipes | 2026-02-07 A | 2026-02-19 → 2026-02-16 A (-3d) | 0% → 100% |
| HFR1-05-9240 | Material Delivery for Upvc Pipes | 2026-02-21 → 2026-02-17 A (-4d) | 2026-02-28 → 2026-02-23 A (-5d) | 0% → 100% |
| 9 | **Roof Vent Caps** |  | 2026-06-14 → 2026-04-14 (-61d) |  |
| HFR1-05-4730 | PO for Roof Vent Caps | 2026-01-28 A | 2026-02-05 A | 0% → 100% |

| ID | Task | Start | Finish | Complete |
| --- | --- | --- | --- | --- |
| HFR1-05-5850 | Material Fabrication for Roof Vent Caps | 2026-04-11 → 2026-02-25 A (-45d) | 2026-05-11 → 2026-03-10 A (-62d) | 0% → 100% |
| HFR1-05-8900 | Material Delivery for Roof Vent Caps | 2026-05-12 → 2026-03-31 A (-42d) | 2026-06-14 → 2026-04-14 A (-61d) | 0% → 100% |
| 10 | **Floor Drains** |  | 2026-06-13 → 2026-03-09 (-96d) |  |
| HFR1-05-4740 | PO for Floor Drains | 2026-01-28 A | 2026-02-05 A | 0% → 100% |
| HFR1-05-5860 | Material Fabrication for Floor Drains | 2026-03-30 → 2026-02-07 A (-51d) | 2026-04-29 → 2026-02-19 A (-69d) | 0% → 100% |
| HFR1-05-8910 | Material Delivery for Floor Drains | 2026-04-30 → 2026-03-03 A (-58d) | 2026-06-13 → 2026-03-09 A (-96d) | 0% → 100% |
| 6 | **Electrical - Buildings** |  | 2026-07-09 → 2026-06-14 (-25d) |  |
| 2 | **Telecome Manholes & Handholes** |  | 2026-03-05 → 2026-04-16 (+42d) |  |
| HFR1-05-4750 | PO for Telecome Manholes & Handholes | 2026-01-28 A | 2026-02-05 A | 0% → 100% |
| HFR1-05-5870 | Material Fabrication for Telecome Manholes & Handholes | 2026-02-07 A | 2026-02-24 → 2026-02-19 A (-5d) | 0% → 100% |
| HFR1-05-9000 | Material Delivery for Telecome Manholes & Handholes | 2026-02-25 → 2026-02-21 A (-4d) | 2026-03-05 → 2026-04-16 A (+42d) | 0% → 100% |
| 1 | **Electrical manholes** |  | 2026-03-07 → 2026-04-18 (+42d) |  |
| HFR1-05-4760 | PO for Electrical manholes | 2026-01-28 A | 2026-02-05 A | 0% → 100% |
| HFR1-05-5880 | Material Fabrication for Electrical manholes | 2026-02-07 A | 2026-02-24 A | 0% → 100% |
| HFR1-05-9250 | Material Delivery for Electrical manholes | 2026-02-25 → 2026-02-21 A (-4d) | 2026-03-07 → 2026-04-18 A (+42d) | 0% → 100% |
| 3 | **Street Lighting Manholes** |  | 2026-03-05 → 2026-04-21 (+47d) |  |
| HFR1-05-4770 | PO for Street Lighting Manholes | 2026-01-28 A | 2026-02-05 A | 0% → 100% |
| HFR1-05-5890 | Material Fabrication for Street Lighting Manholes | 2026-02-07 A | 2026-02-24 → 2026-03-16 A (+20d) | 0% → 100% |
| HFR1-05-9260 | Material Delivery for Street Lighting Manholes | 2026-02-25 → 2026-03-25 A (+28d) | 2026-03-05 → 2026-04-21 A (+47d) | 0% → 100% |
| 4 | **Duct Banks** |  | 2026-03-07 → 2026-04-30 (+54d) |  |
| HFR1-05-4780 | PO for Duct Banks | 2026-01-28 A | 2026-02-05 A | 0% → 100% |
| HFR1-05-5900 | Material Fabrication for Duct Banks | 2026-02-07 A | 2026-02-24 → 2026-02-19 A (-5d) | 0% → 100% |
| HFR1-05-9340 | Material Delivery for Duct Banks | 2026-02-25 → 2026-02-21 A (-4d) | 2026-03-07 → 2026-04-30 A (+54d) | 0% → 100% |
| 16 | **Telecom & Data System** |  | 2026-07-09 → 2026-06-14 (-25d) |  |
| HFR1-05-4790 | PO for Telecom & Data System | 2026-01-28 A | 2026-02-05 A | 0% → 100% |
| HFR1-05-5910 | Material Fabrication for Telecom & Data System | 2026-04-05 → 2026-05-13 A (+38d) | 2026-05-30 → 2026-06-01 A (+2d) | 0% → 100% |
| HFR1-05-9400 | Material Delivery for Telecom & Data System | 2026-05-31 → 2026-06-07 A (+7d) | 2026-07-09 → 2026-06-14 A (-25d) | 0% → 100% |
| 17 | **Grounding System** |  | 2026-02-10 → 2026-02-12 (+2d) |  |
| HFR1-05-4800 | PO for Grounding System | 2026-01-21 A | 2026-01-25 A | 0% → 100% |
| HFR1-05-5920 | Material Fabrication for Grounding System | 2026-01-26 A | 2026-02-02 A | 0% → 100% |
| HFR1-05-9010 | Material Delivery for Grounding System | 2026-02-03 A | 2026-02-10 → 2026-02-12 A (+2d) | 0% → 100% |
| 1 | **Long Lead Item** |  | 2026-07-18 → 2026-08-24 (+37d) |  |
| 7 | **Civil Works - Buildings** |  | 2026-06-30 → 2026-08-24 (+55d) |  |
| 4 | **Steel Structure** |  | 2026-04-13 → 2026-04-09 (-4d) |  |
| HFR1-05-1000 | PO for Steel Structure | 2026-01-28 A | 2026-02-05 A | 0% → 100% |
| HFR1-05-1300 | Material Delivery for Steel Structure | 2026-03-07 → 2026-02-05 A (-30d) | 2026-04-04 A | 0% → 100% |
| HFR1-05-1240 | Material Fabrication for Steel Structure | 2026-02-07 A | 2026-03-05 → 2026-03-01 A (-4d) | 0% → 100% |
| HFR1-05-1580 | Staging Time For Steel Structure | 2026-04-05 → 2026-04-06 A (+1d) | 2026-04-13 → 2026-04-09 A (-4d) | 0% → 100% |
| 7 | **Doors & Windows** | 2026-01-28 → 2026-05-31 (+123d) | 2026-06-15 → 2026-08-24 (+70d) |  |
| HFR1-05-2370 | PO for Doors & Windows | 2026-01-28 → 2026-05-31 A (+123d) | 2026-02-05 → 2026-06-04 A (+119d) | 0% → 100% |
| HFR1-05-2380 | Material Fabrication for Doors & Windows | 2026-02-07 → 2026-06-06 A (+119d) | 2026-04-12 → 2026-06-11 A (+60d) | 0% → 100% |
| HFR1-05-2960 | Material Delivery for Doors & Windows | 2026-04-13 → 2026-06-14 A (+62d) | 2026-06-07 → 2026-08-22 A (+76d) | 0% → 100% |
| HFR1-05-3180 | Staging Time For Doors & Windows | 2026-06-08 → 2026-08-23 A (+76d) | 2026-06-15 → 2026-08-24 A (+70d) | 0% → 100% |
| 11 | **Fittings** |  | 2026-06-30 → 2026-04-14 (-77d) |  |
| HFR1-05-2390 | PO for Fittings | 2026-01-28 A | 2026-02-05 A | 0% → 100% |
| HFR1-05-2400 | Material Fabrication for Fittings | 2026-02-07 A | 2026-04-14 → 2026-02-14 A (-59d) | 0% → 100% |
| HFR1-05-2410 | Material Delivery for Fittings | 2026-04-15 → 2026-02-15 A (-59d) | 2026-06-22 → 2026-04-12 A (-71d) | 0% → 100% |
| HFR1-05-2420 | Staging Time For Fittings | 2026-06-23 → 2026-04-12 A (-72d) | 2026-06-30 → 2026-04-14 A (-77d) | 0% → 100% |
| 14 | **Pre Engineered Structures** |  | 2026-03-28 → 2026-04-04 (+7d) |  |
| HFR1-05-9770 | PO for Pre Engineered Structures | 2026-01-28 A | 2026-02-05 A | 0% → 100% |
| HFR1-05-9780 | Material Fabrication for Pre Engineered Structures | 2026-02-07 A | 2026-02-26 → 2026-02-11 A (-15d) | 0% → 100% |
| HFR1-05-9790 | Material Delivery for Pre Engineered Structures | 2026-02-28 → 2026-02-12 A (-16d) | 2026-03-16 → 2026-04-01 A (+16d) | 0% → 100% |
| HFR1-05-9800 | Staging Time For Pre Engineered Structures | 2026-03-17 → 2026-04-01 A (+15d) | 2026-03-28 → 2026-04-04 A (+7d) | 0% → 100% |
| 5 | **Mechanical - Buildings** |  | 2026-07-11 → 2026-07-01 (-10d) |  |
| 2 | **Fire Fighting System** |  | 2026-06-18 → 2026-04-20 (-59d) |  |
| HFR1-05-4810 | PO for Fire Fighting System | 2026-01-28 A | 2026-02-05 A | 0% → 100% |
| HFR1-05-5930 | Material Fabrication for Fire Fighting System | 2026-02-18 → 2026-02-15 A (-3d) | 2026-04-15 → 2026-03-01 A (-45d) | 0% → 100% |
| HFR1-05-9120 | Material Delivery for Fire Fighting System | 2026-04-16 → 2026-03-25 A (-22d) | 2026-06-10 → 2026-04-18 A (-53d) | 0% → 100% |
| HFR1-05-9890 | Staging Time For Fire Fighting System | 2026-06-11 → 2026-04-18 A (-54d) | 2026-06-18 → 2026-04-20 A (-59d) | 0% → 100% |
| 3 | **Valves** |  | 2026-06-16 → 2026-03-30 (-78d) |  |
| HFR1-05-9550 | PO for Valves | 2026-01-28 A | 2026-02-05 A | 0% → 100% |
| HFR1-05-9560 | Material Fabrication for Valves | 2026-03-09 → 2026-03-01 A (-8d) | 2026-04-23 → 2026-03-05 A (-49d) | 0% → 100% |
| HFR1-05-9570 | Material Delivery for Valves | 2026-04-25 → 2026-03-07 A (-49d) | 2026-06-07 → 2026-03-24 A (-75d) | 0% → 100% |
| HFR1-05-9580 | Staging Time For Valves | 2026-06-08 → 2026-03-26 A (-74d) | 2026-06-16 → 2026-03-30 A (-78d) | 0% → 100% |
| 6 | **Fire Protectional System** |  | 2026-06-23 → 2026-07-01 (+8d) |  |
| HFR1-05-9510 | PO for Fire Protectional System | 2026-01-28 A | 2026-02-05 A | 0% → 100% |
| HFR1-05-9520 | Material Fabrication for Fire Protectional System | 2026-03-09 A | 2026-04-20 → 2026-03-16 A (-35d) | 0% → 100% |
| HFR1-05-9530 | Material Delivery for Fire Protectional System | 2026-04-21 → 2026-04-02 A (-19d) | 2026-06-15 → 2026-06-22 A (+7d) | 0% → 100% |
| HFR1-05-9540 | Staging Time For Fire Protectional System | 2026-06-16 → 2026-06-27 A (+11d) | 2026-06-23 → 2026-07-01 A (+8d) | 0% → 100% |
| 11 | **Electric Water Heater** |  | 2026-07-06 → 2026-04-21 (-76d) |  |

| ID | Task | Start | Finish | Complete |
| --- | --- | --- | --- | --- |
| HFR1-05-9620 | PO for Electric Water Heater | 2026-01-28 A | 2026-02-05 A | 0% → 100% |
| HFR1-05-9630 | Material Fabrication for Electric Water Heater | 2026-03-09 A | 2026-05-03 → 2026-03-18 A (-46d) | 0% → 100% |
| HFR1-05-9640 | Material Delivery for Electric Water Heater | 2026-05-04 → 2026-03-28 A (-37d) | 2026-06-28 → 2026-04-19 A (-70d) | 0% → 100% |
| HFR1-05-9650 | Staging Time For Electric Water Heater | 2026-06-29 → 2026-04-19 A (-71d) | 2026-07-06 → 2026-04-21 A (-76d) | 0% → 100% |
| 12 | **Heating,Ventilation & Air Conditioning** |  | 2026-07-11 → 2026-04-20 (-82d) |  |
| HFR1-05-9940 | PO for Heating,Ventilation & Air Conditioning | 2026-01-28 A | 2026-02-05 A | 0% → 100% |
| HFR1-05-9950 | Material Fabrication for Heating,Ventilation & Air Conditioning | 2026-03-17 → 2026-03-12 A (-5d) | 2026-05-19 → 2026-03-23 A (-57d) | 0% → 100% |
| HFR1-05-9960 | Material Delivery for Heating,Ventilation & Air Conditioning | 2026-05-20 → 2026-03-29 A (-52d) | 2026-07-02 → 2026-04-18 A (-75d) | 0% → 100% |
| HFR1-05-9970 | Staging Time For Heating,Ventilation & Air Conditioning | 2026-07-04 → 2026-04-19 A (-76d) | 2026-07-11 → 2026-04-20 A (-82d) | 0% → 100% |
| 2 | **Electrical - Buildings** |  | 2026-07-18 → 2026-07-07 (-11d) |  |
| 5 | **Feeder Pillers** |  | 2026-07-15 → 2026-06-28 (-17d) |  |
| HFR1-05-9980 | PO for Feeder Pillers | 2026-01-28 A | 2026-02-05 → 2026-02-10 A (+5d) | 0% → 100% |
| HFR1-05-9990 | Material Fabrication for Feeder Pillers | 2026-03-09 → 2026-03-08 A (-1d) | 2026-05-04 → 2026-04-02 A (-32d) | 0% → 100% |
| HFR1-05-10000 | Material Delivery for Feeder Pillers | 2026-05-05 → 2026-04-29 A (-6d) | 2026-07-07 → 2026-06-22 A (-15d) | 0% → 100% |
| HFR1-05-10010 | Staging Time For Feeder Pillers | 2026-07-08 → 2026-06-24 A (-14d) | 2026-07-15 → 2026-06-28 A (-17d) | 0% → 100% |
| 6 | **Street Lighting Poles** |  | 2026-07-18 → 2026-05-16 (-63d) |  |
| HFR1-05-2330 | PO for Street Lighting Poles | 2026-01-28 A | 2026-02-05 A | 0% → 100% |
| HFR1-05-2340 | Material Fabrication for Street Lighting Poles | 2026-03-09 → 2026-03-10 A (+1d) | 2026-05-03 → 2026-03-17 A (-47d) | 0% → 100% |
| HFR1-05-2350 | Material Delivery for Street Lighting Poles | 2026-05-04 → 2026-03-30 A (-35d) | 2026-07-09 → 2026-05-13 A (-57d) | 0% → 100% |
| HFR1-05-2360 | Staging Time For Street Lighting Poles | 2026-07-11 → 2026-05-14 A (-58d) | 2026-07-18 → 2026-05-16 A (-63d) | 0% → 100% |
| 7 | **Street Lighting Luminaires** |  | 2026-07-06 → 2026-07-04 (-2d) |  |
| HFR1-05-1960 | PO for Street Lighting Luminaires | 2026-01-28 A | 2026-02-05 A | 0% → 100% |
| HFR1-05-2250 | Material Fabrication for Street Lighting Luminaires | 2026-03-09 → 2026-03-15 A (+6d) | 2026-04-21 → 2026-03-26 A (-26d) | 0% → 100% |
| HFR1-05-2260 | Material Delivery for Street Lighting Luminaires | 2026-04-22 → 2026-04-02 A (-20d) | 2026-06-28 A | 0% → 100% |
| HFR1-05-2270 | Staging Time For Street Lighting Luminaires | 2026-06-29 A | 2026-07-06 → 2026-07-04 A (-2d) | 0% → 100% |
| 8 | **Low Voltage Cables** |  | 2026-07-06 → 2026-07-07 (+1d) |  |
| HFR1-05-9810 | PO for Low Voltage Cables | 2026-01-28 A | 2026-02-05 A | 0% → 100% |
| HFR1-05-9820 | Material Fabrication for Low Voltage Cables | 2026-03-09 A | 2026-05-03 → 2026-03-24 A (-40d) | 0% → 100% |
| HFR1-05-9830 | Material Delivery for Low Voltage Cables | 2026-05-04 → 2026-03-31 A (-34d) | 2026-06-28 → 2026-06-29 A (+1d) | 0% → 100% |
| HFR1-05-9840 | Staging Time For Low Voltage Cables | 2026-06-29 → 2026-06-30 A (+1d) | 2026-07-06 → 2026-07-07 A (+1d) | 0% → 100% |
| HFR1-05-9900 | PO for LED Lighting Fixtures | 2026-01-28 A | 2026-02-05 A | 0% → 100% |
| HFR1-05-9910 | Material Fabrication for LED Lighting Fixtures | 2026-03-09 → 2026-03-16 A (+7d) | 2026-04-27 → 2026-03-30 A (-28d) | 0% → 100% |
| HFR1-05-9920 | Material Delivery for LED Lighting Fixtures | 2026-04-28 → 2026-04-01 A (-27d) | 2026-06-22 → 2026-06-25 A (+3d) | 0% → 100% |
| HFR1-05-9930 | Staging Time For LED Lighting Fixtures | 2026-06-23 → 2026-06-27 A (+4d) | 2026-06-30 A | 0% → 100% |
| 10 | **Power Panel** |  | 2026-07-12 → 2026-06-29 (-13d) |  |
| HFR1-05-4820 | PO for Power Panel | 2026-01-28 A | 2026-02-05 A | 0% → 100% |
| HFR1-05-5940 | Material Fabrication for Power Panel | 2026-03-03 → 2026-03-17 A (+14d) | 2026-04-27 → 2026-03-31 A (-27d) | 0% → 100% |
| HFR1-05-9410 | Material Delivery for Power Panel | 2026-04-28 → 2026-04-04 A (-24d) | 2026-07-04 → 2026-06-25 A (-9d) | 0% → 100% |
| HFR1-05-9420 | Staging Time For Power Panel | 2026-07-05 → 2026-06-25 A (-10d) | 2026-07-12 → 2026-06-29 A (-13d) | 0% → 100% |
| 11 | **Control Panels** |  | 2026-06-24 → 2026-04-16 (-69d) |  |
| HFR1-05-4830 | PO for Control Panels | 2026-01-28 A | 2026-02-05 A | 0% → 100% |
| HFR1-05-5950 | Material Fabrication for Control Panels | 2026-03-03 → 2026-03-11 A (+8d) | 2026-04-21 → 2026-03-30 A (-22d) | 0% → 100% |
| HFR1-05-9270 | Material Delivery for Control Panels | 2026-04-22 → 2026-04-02 A (-20d) | 2026-06-16 → 2026-04-13 A (-64d) | 0% → 100% |
| HFR1-05-9290 | Staging Time For Control Panels | 2026-06-17 → 2026-04-14 A (-64d) | 2026-06-24 → 2026-04-16 A (-69d) | 0% → 100% |
| 12 | **Isolator & Disconnecting Switches** | 2026-01-28 → 2026-02-02 (+5d) | 2026-07-06 → 2026-06-29 (-7d) |  |
| HFR1-05-4840 | PO for Isolator & Disconnecting Switches | 2026-01-28 → 2026-02-02 A (+5d) | 2026-02-05 → 2026-02-11 A (+6d) | 0% → 100% |
| HFR1-05-5960 | Material Fabrication for Isolator & Disconnecting Switches | 2026-03-09 → 2026-03-10 A (+1d) | 2026-05-03 → 2026-03-30 A (-34d) | 0% → 100% |
| HFR1-05-9430 | Material Delivery for Isolator & Disconnecting Switches | 2026-05-04 → 2026-04-02 A (-32d) | 2026-06-28 → 2026-06-25 A (-3d) | 0% → 100% |
| HFR1-05-9440 | Staging Time For Isolator & Disconnecting Switches | 2026-06-29 → 2026-06-25 A (-4d) | 2026-07-06 → 2026-06-29 A (-7d) | 0% → 100% |
| 13 | **Cable Trays** | 2026-01-28 → 2026-05-03 (+95d) | 2026-06-24 → 2026-06-22 (-2d) |  |
| HFR1-05-4850 | PO for Cable Trays | 2026-01-28 → 2026-05-03 A (+95d) | 2026-02-05 → 2026-05-12 A (+96d) | 0% → 100% |
| HFR1-05-5970 | Material Fabrication for Cable Trays | 2026-03-09 → 2026-05-14 A (+66d) | 2026-05-03 → 2026-05-21 A (+18d) | 0% → 100% |
| HFR1-05-9450 | Material Delivery for Cable Trays | 2026-05-04 → 2026-06-09 A (+36d) | 2026-06-16 → 2026-06-17 A (+1d) | 0% → 100% |
| HFR1-05-9460 | Staging Time For Cable Trays | 2026-06-17 → 2026-06-20 A (+3d) | 2026-06-24 → 2026-06-22 A (-2d) | 0% → 100% |
| 14 | **KWHM** |  | 2026-05-17 → 2026-04-04 (-43d) |  |
| HFR1-05-4860 | PO for KWHM | 2026-01-28 A | 2026-02-05 A | 0% → 100% |
| HFR1-05-5980 | Material Fabrication for KWHM | 2026-03-09 → 2026-02-25 A (-12d) | 2026-04-09 → 2026-03-03 A (-37d) | 0% → 100% |
| HFR1-05-9480 | Staging Time For KWHM | 2026-05-10 → 2026-03-05 A (-66d) | 2026-05-17 → 2026-04-01 A (-46d) | 0% → 100% |
| HFR1-05-9470 | Material Delivery for KWHM | 2026-04-11 → 2026-04-02 A (-9d) | 2026-05-09 → 2026-04-04 A (-35d) | 0% → 100% |
| 15 | **Safety Disconnect Switches** | 2026-01-28 → 2026-02-10 (+13d) | 2026-06-24 → 2026-05-05 (-50d) |  |
| HFR1-05-4870 | PO for Safety Disconnect Switches | 2026-01-28 → 2026-02-10 A (+13d) | 2026-02-05 → 2026-02-28 A (+23d) | 0% → 100% |
| HFR1-05-5990 | Material Fabrication for Safety Disconnect Switches | 2026-03-09 → 2026-03-01 A (-8d) | 2026-04-27 → 2026-03-24 A (-34d) | 0% → 100% |
| HFR1-05-9280 | Material Delivery for Safety Disconnect Switches | 2026-04-28 → 2026-04-01 A (-27d) | 2026-06-16 → 2026-05-02 A (-45d) | 0% → 100% |
| HFR1-05-9300 | Staging Time For Safety Disconnect Switches | 2026-06-17 → 2026-05-02 A (-46d) | 2026-06-24 → 2026-05-05 A (-50d) | 0% → 100% |
| 18 | **Lightning Protection System** |  | 2026-07-04 → 2026-06-25 (-9d) |  |
| HFR1-05-4880 | PO for Lightning Protection System | 2026-01-28 A | 2026-02-05 A | 0% → 100% |
| HFR1-05-6000 | Material Fabrication for Lightning Protection System | 2026-03-09 → 2026-02-07 A (-30d) | 2026-05-02 → 2026-02-12 A (-79d) | 0% → 100% |
| HFR1-05-9350 | Material Delivery for Lightning Protection System | 2026-05-03 → 2026-02-13 A (-79d) | 2026-06-25 → 2026-06-15 A (-10d) | 0% → 100% |
| HFR1-05-9360 | Staging Time For Lightning Protection System | 2026-06-27 → 2026-06-18 A (-9d) | 2026-07-04 → 2026-06-25 A (-9d) | 0% → 100% |
| 19 | **Fire Alarm System** |  | 2026-07-14 → 2026-07-04 (-10d) |  |

| ID | Task | Start | Finish | Complete | Other |
| --- | --- | --- | --- | --- | --- |
| HFR1-05-9850 | PO for Fire Alarm System | 2026-01-28 A | 2026-02-05 A | 0% → 100% |  |
| HFR1-05-9860 | Material Fabrication for Fire Alarm System | 2026-03-09 → 2026-03-18 A (+9d) | 2026-05-11 → 2026-03-31 A (-41d) | 0% → 100% |  |
| HFR1-05-9870 | Material Delivery for Fire Alarm System | 2026-05-12 → 2026-04-02 A (-40d) | 2026-07-06 → 2026-06-29 A (-7d) | 0% → 100% |  |
| HFR1-05-9880 | Staging Time For Fire Alarm System | 2026-07-07 → 2026-06-30 A (-7d) | 2026-07-14 → 2026-07-04 A (-10d) | 0% → 100% |  |
| 20 | **Solar Power Plant** | 2026-01-28 → 2026-02-16 (+19d) | 2026-06-24 → 2026-06-22 (-2d) |  |  |
| HFR1-05-4890 | PO for Solar Power Plant | 2026-01-28 → 2026-02-16 A (+19d) | 2026-02-05 → 2026-03-01 A (+24d) | 0% → 100% |  |
| HFR1-05-6010 | Material Fabrication for Solar Power Plant | 2026-03-09 → 2026-03-18 A (+9d) | 2026-04-27 → 2026-03-31 A (-27d) | 0% → 100% |  |
| HFR1-05-9320 | Material Delivery for Solar Power Plant | 2026-04-28 → 2026-04-05 A (-23d) | 2026-06-16 → 2026-06-15 A (-1d) | 0% → 100% |  |
| HFR1-05-9330 | Staging Time For Solar Power Plant | 2026-06-17 → 2026-06-18 A (+1d) | 2026-06-24 → 2026-06-22 A (-2d) | 0% → 100% |  |
| 21 | **Skylight Fixtures** | 2026-01-28 → 2026-05-02 (+94d) | 2026-05-17 → 2026-07-05 (+49d) |  |  |
| HFR1-05-4900 | PO for Skylight Fixtures | 2026-01-28 → 2026-05-02 A (+94d) | 2026-02-05 → 2026-05-12 A (+96d) | 0% → 100% |  |
| HFR1-05-6020 | Material Fabrication for Skylight Fixtures | 2026-03-09 → 2026-05-14 A (+66d) | 2026-04-09 → 2026-05-23 A (+44d) | 0% → 100% |  |
| HFR1-05-9490 | Material Delivery for Skylight Fixtures | 2026-04-11 → 2026-06-01 A (+51d) | 2026-05-09 → 2026-06-30 A (+52d) | 0% → 100% |  |
| HFR1-05-9500 | Staging Time For Skylight Fixtures | 2026-05-10 → 2026-07-01 A (+52d) | 2026-05-17 → 2026-07-05 A (+49d) | 0% → 100% |  |
| 3 | **Construction phase** |  | 2026-09-26 → 2026-12-15 (+80d) |  |  |
| 6 | **Siite General Works** |  | 2026-03-22 → 2026-04-23 (+32d) |  |  |
| 5 | **Earth Works -All Site** |  | 2026-03-22 → 2026-04-04 (+13d) |  |  |
| HFR1-05-1250 | Demolition of the existing curbstone | 2025-12-29 A | 2026-01-03 A | 0% → 100% |  |
| HFR1-05-1260 | Excavation for all site | 2026-01-04 A | 2026-01-11 A | 0% → 100% |  |
| HFR1-05-1270 | Termite Protection (Soil Treatment) | 2026-01-12 A | 2026-01-17 A | 0% → 100% |  |
| HFR1-05-1280 | Backfilling after G.BColumns nescks -Footing /4 layers | 2026-03-12 → 2026-01-26 A (-45d) | 2026-03-15 → 2026-01-31 A (-43d) | 0% → 100% |  |
| HFR1-05-1290 | Backfilling after G.BColumns nescks -Footing/second four layers | 2026-03-16 → 2026-03-11 A (-5d) | 2026-03-22 → 2026-04-04 A (+13d) | 0% → 100% |  |
| 4 | **Reinforced Concrete foundations Works all site** |  | 2026-03-11 → 2026-03-12 (+1d) |  |  |
| HFR1-05-1010 | Lean Concrete Formwork Preparation and pouring | 2026-01-27 A | 2026-02-01 A | 0% → 100% |  |
| HFR1-05-1020 | Lean Concrete Curing | 2026-02-02 A | 2026-02-04 A | 0% → 100% |  |
| HFR1-05-1030 | Footings Rebar Fixing | 2026-02-05 A | 2026-02-08 A | 0% → 100% |  |
| HFR1-05-1050 | Footings Inspection | 2026-02-15 → 2026-02-07 A (-8d) | 2026-02-17 → 2026-02-10 A (-7d) | 0% → 100% |  |
| HFR1-05-1040 | Footings Formwork | 2026-02-09 A | 2026-02-14 A | 0% → 100% |  |
| HFR1-05-1060 | Footings Concrete Pouring | 2026-02-18 → 2026-02-15 A (-3d) | 2026-02-19 → 2026-02-16 A (-3d) | 0% → 100% |  |
| HFR1-05-1070 | Footings Curing | 2026-02-21 → 2026-02-15 A (-6d) | 2026-02-23 → 2026-03-05 A (+10d) | 0% → 100% |  |
| HFR1-05-1080 | Grade beams Rebar Fixing | 2026-02-24 → 2026-02-16 A (-8d) | 2026-02-28 → 2026-03-02 A (+2d) | 0% → 100% |  |
| HFR1-05-1090 | Form Works for Grade beams | 2026-03-01 → 2026-02-19 A (-10d) | 2026-03-04 A | 0% → 100% |  |
| HFR1-05-3020 | Grade beams Inspection | 2026-03-05 → 2026-02-21 A (-12d) | 2026-03-07 → 2026-03-03 A (-4d) | 0% → 100% |  |
| HFR1-05-3030 | Pouring Concrete works for Grade beams | 2026-03-08 → 2026-03-03 A (-5d) | 2026-03-09 → 2026-03-11 A (+2d) | 0% → 100% |  |
| HFR1-05-3050 | Beams Curing Works | 2026-03-10 → 2026-03-07 A (-3d) | 2026-03-11 → 2026-03-12 A (+1d) | 0% → 100% |  |
| 6 | **Insulation Works** | 2026-03-12 → 2026-01-06 (-65d) | 2026-03-22 → 2026-04-23 (+32d) |  |  |
| HFR1-05-2950 | Waterproofing bitumen Surface Preparation | 2026-03-12 → 2026-01-06 A (-65d) | 2026-03-15 → 2026-04-23 A (+39d) | 0% → 100% |  |
| HFR1-05-2970 | Waterproofing Application | 2026-03-16 → 2026-02-01 A (-43d) | 2026-03-22 → 2026-04-23 A (+32d) | 0% → 100% |  |
| 12 | **Hunger -1** | 2026-03-02 → 2026-02-02 (-28d) | 2026-09-26 → 2026-11-28 (+63d) |  |  |
| 7 | **Concrete works** | 2026-03-10 → 2026-04-12 (+33d) | 2026-03-25 → 2026-05-03 (+39d) |  |  |
| HFR1-05-2440 | SOG (Whole Factory) Form work | 2026-03-12 → 2026-04-12 A (+31d) | 2026-03-17 → 2026-04-29 A (+43d) | 0% → 100% | resources LABOR [4.52 h]; Labours [2.91 h]; Carpenter [4.52 h]; Provide and cast 150 mm thk concrete floor slab on grade [24.36]; Labor [280 h]; Skilled Labor [140 h]; Carpenter [280 h] → LABOR [4.52 h]; Mobilization [2.91 h]; Carpenter [4.52 h]; Provide and cast 150 mm thk concrete floor slab on grade [24.36]; Labor [280 h]; Skilled Labor [140 h]; Carpenter [280 h] |
| HFR1-05-2510 | SOG (Whole Factory) Inspection | 2026-03-15 → 2026-04-23 A (+39d) | 2026-03-16 → 2026-05-03 A (+48d) | 0% → 100% |  |
| HFR1-05-2430 | SOG (Whole Factory) Rebar Mesh & MEP Sleeves | 2026-03-10 → 2026-04-26 A (+47d) | 2026-03-14 → 2026-05-02 A (+49d) | 0% → 100% |  |
| HFR1-05-2540 | SOG (Whole Factory) Vapor Barrier & Insulation | 2026-03-24 → 2026-04-30 A (+37d) | 2026-03-25 → 2026-04-30 A (+36d) | 0% → 100% |  |
| HFR1-05-2520 | SOG (Whole Factory) Concrete Pouring | 2026-03-17 → 2026-05-02 A (+46d) | 2026-03-23 → 2026-05-03 A (+41d) | 0% → 100% |  |
| HFR1-05-2530 | SOG (Whole Factory) Curing | 2026-03-17 → 2026-05-02 A (+46d) | 2026-03-23 → 2026-05-03 A (+41d) | 0% → 100% |  |
| 1 | **Steel Structure Works** | 2026-04-14 → 2026-02-09 (-64d) | 2026-05-31 → 2026-07-01 (+31d) |  |  |
| HFR1-05-2450 | Rated Steel Bollards Concrete Base Casting | 2026-04-14 → 2026-02-09 A (-64d) | 2026-04-19 → 2026-06-21 A (+63d) | 0% → 100% |  |
| HFR1-05-2490 | Fire rating required | 2026-05-04 → 2026-03-08 A (-57d) | 2026-05-20 → 2026-06-13 A (+24d) | 0% → 100% |  |
| HFR1-05-2500 | Installation sandwich panel | 2026-05-21 → 2026-03-12 A (-70d) | 2026-05-31 → 2026-07-01 A (+31d) | 0% → 100% |  |
| HFR1-05-2460 | Installation column steel & Steel Ladder | 2026-04-20 → 2026-04-06 A (-14d) | 2026-04-26 → 2026-04-15 A (-11d) | 0% → 100% |  |
| HFR1-05-2470 | Install beam Rafter | 2026-04-27 → 2026-04-06 A (-21d) | 2026-05-03 → 2026-04-15 A (-18d) | 0% → 100% |  |
| HFR1-05-2480 | Installation Purlin & bracing | 2026-04-27 → 2026-04-07 A (-20d) | 2026-05-03 → 2026-04-16 A (-17d) | 0% → 100% |  |
| 4 | **Architectural** | 2026-03-02 → 2026-04-14 (+43d) | 2026-07-16 → 2026-10-20 (+96d) |  |  |
| HFR1-05-2560 | Block work | 2026-03-02 → 2026-04-14 A (+43d) | 2026-03-22 → 2026-06-02 A (+72d) | 0% → 100% |  |
| HFR1-05-2570 | Plaster | 2026-03-23 → 2026-06-09 A (+78d) | 2026-03-31 → 2026-07-06 A (+97d) | 0% → 100% |  |
| HFR1-05-2750 | Doors Installation | 2026-06-16 → 2026-06-27 A (+11d) | 2026-06-23 → 2026-08-01 A (+39d) | 0% → 100% |  |
| HFR1-05-2770 | Metal works | 2026-07-01 → 2026-07-06 A (+5d) | 2026-07-06 → 2026-09-13 A (+69d) | 0% → 100% |  |
| HFR1-05-2720 | Finishes floor Installation | 2026-05-20 → 2026-07-09 A (+50d) | 2026-05-30 → 2026-09-22 (+115d) | 0% → 95% |  |
| HFR1-05-2610 | Marble chips on external walls and grooves | 2026-04-25 → 2026-07-26 A (+92d) | 2026-05-02 → 2026-07-29 A (+88d) | 0% → 100% |  |
| HFR1-05-2620 | GRC panels with the mechanical fixat | 2026-05-03 → 2026-07-26 A (+84d) | 2026-05-19 → 2026-07-29 A (+71d) | 0% → 100% |  |
| HFR1-05-2630 | External Paint Primer + Final Coat | 2026-05-03 → 2026-08-06 A (+95d) | 2026-05-10 → 2026-09-24 (+137d) | 0% → 85% |  |
| HFR1-05-2730 | External Paint Touch-up & Inspection | 2026-05-30 → 2026-08-06 A (+68d) | 2026-06-06 → 2026-10-10 (+126d) | 0% → 85% |  |
| HFR1-05-2660 | Windows Glass Installation | 2026-05-11 → 2026-08-08 A (+89d) | 2026-05-18 → 2026-08-27 A (+101d) | 0% → 100% |  |
| HFR1-05-2690 | Cladding | 2026-05-19 → 2026-08-10 A (+83d) | 2026-05-25 → 2026-10-01 (+129d) | 0% → 95% |  |
| HFR1-05-2640 | Epoxy Paint | 2026-05-03 → 2026-08-15 A (+104d) | 2026-05-19 → 2026-10-04 (+138d) | 0% → 85% |  |
| HFR1-05-2600 | Paint Primer + Putty + Final Coat INSIDE | 2026-04-25 → 2026-08-24 A (+121d) | 2026-05-03 → 2026-09-26 (+146d) | 0% → 80% |  |
| HFR1-05-2820 | Specialites Fittings | 2026-07-13 → 2026-09-01 A (+50d) | 2026-07-16 → 2026-10-20 (+96d) | 0% → 95% |  |
| HFR1-05-2790 | Signage Layout & Marking Locations | 2026-07-07 → 2026-09-03 A (+58d) | 2026-07-12 → 2026-10-15 (+95d) | 0% → 45% |  |
| 5 | **MEP WORKS** | 2026-03-23 → 2026-02-02 (-49d) | 2026-09-26 → 2026-11-28 (+63d) |  |  |

| ID | Task | Start | Finish | Complete | Other |
| --- | --- | --- | --- | --- | --- |
| 1 | **Plumping-FIRE-HVAC** | 2026-03-23 → 2026-02-02 (-49d) | 2026-09-26 → 2026-11-28 (+63d) |  |  |
| HFR1-05-2550 | Drainage Preparation (Marking + Sleeves + Supports) | 2026-03-23 → 2026-02-02 A (-49d) | 2026-03-29 → 2026-03-25 A (-4d) | 0% → 100% |  |
| HFR1-05-2650 | Drainage Installation (Pipes + Traps + Connections) | 2026-06-22 → 2026-02-11 A (-131d) | 2026-06-25 → 2026-04-01 A (-85d) | 0% → 100% |  |
| HFR1-05-2840 | WATER SUPPLY SYSTEM | 2026-07-13 → 2026-02-12 A (-151d) | 2026-07-18 → 2026-05-07 A (-72d) | 0% → 100% |  |
| HFR1-05-2580 | HVAC Ducting Preparation (Marking + Supports + Hangers) | 2026-03-30 → 2026-03-18 A (-12d) | 2026-04-04 → 2026-03-28 A (-7d) | 0% → 100% |  |
| HFR1-05-2710 | Floor drains installations | 2026-07-11 → 2026-03-18 A (-115d) | 2026-07-14 → 2026-04-01 A (-104d) | 0% → 100% |  |
| HFR1-05-2850 | HVAC Ducting Installation (Ducts + Fittings + Accessories) | 2026-07-19 → 2026-04-13 A (-97d) | 2026-07-25 → 2026-04-19 A (-97d) | 0% → 100% |  |
| HFR1-05-2670 | Gully trap works +Heavy duty covers | 2026-06-27 → 2026-04-15 A (-73d) | 2026-06-30 → 2026-06-22 A (-8d) | 0% → 100% |  |
| HFR1-05-2780 | Inspection chambers with heavy duty covers | 2026-07-29 → 2026-04-16 A (-104d) | 2026-08-04 → 2026-08-13 A (+9d) | 0% → 100% |  |
| HFR1-05-2890 | HVAC Ducting Testing (Leak Test) & Final Inspection | 2026-08-26 → 2026-04-16 A (-132d) | 2026-09-05 → 2026-04-20 A (-138d) | 0% → 100% |  |
| HFR1-05-2680 | Fire Fighting Installation (Pipes + Fittings + Valves + Cabinets) | 2026-07-01 → 2026-04-25 A (-67d) | 2026-07-05 → 2026-09-10 A (+67d) | 0% → 100% |  |
| HFR1-05-2880 | Fire Alarm system Devices installations | 2026-08-11 → 2026-05-02 A (-101d) | 2026-08-25 → 2026-08-31 A (+6d) | 0% → 100% |  |
| HFR1-05-2910 | Fire Fighting Testing (Hydrostatic Test) & Final Inspection | 2026-09-16 → 2026-05-02 A (-137d) | 2026-09-26 → 2026-11-28 (+63d) | 0% → 85% |  |
| HFR1-05-2900 | Testing plumping system & Final Inspection | 2026-09-06 → 2026-05-04 A (-125d) | 2026-09-15 → 2026-11-18 (+64d) | 0% → 95% |  |
| HFR1-05-2760 | Fire house cabinet works | 2026-07-22 → 2026-05-12 A (-71d) | 2026-07-28 → 2026-08-18 A (+21d) | 0% → 100% |  |
| HFR1-05-2870 | OS Y GAte valves ,installations and testing | 2026-08-03 → 2026-05-14 A (-81d) | 2026-08-10 → 2026-08-09 A (-1d) | 0% → 100% |  |
| HFR1-05-2590 | Roof drains | 2026-06-17 → 2026-06-06 A (-11d) | 2026-06-21 → 2026-07-01 A (+10d) | 0% → 100% |  |
| HFR1-05-2700 | Water sprinkles | 2026-07-06 → 2026-07-05 A (-1d) | 2026-07-09 → 2026-09-26 (+79d) | 0% → 95% |  |
| HFR1-05-2860 | Mini split units indoor | 2026-07-26 → 2026-07-12 A (-14d) | 2026-08-02 → 2026-07-16 A (-17d) | 0% → 100% |  |
| HFR1-05-2740 | Internal ducts (duct sealent+hangers+supports | 2026-07-15 → 2026-07-14 A (-1d) | 2026-07-21 → 2026-08-06 A (+16d) | 0% → 100% |  |
| HFR1-05-2810 | Exhaust diffusers and grills | 2026-06-29 → 2026-07-14 A (+15d) | 2026-07-04 → 2026-08-01 A (+28d) | 0% → 100% |  |
| HFR1-05-2830 | Flexiable duct | 2026-07-05 → 2026-07-14 A (+9d) | 2026-07-12 → 2026-08-01 A (+20d) | 0% → 100% |  |
| HFR1-05-2800 | Exasut fans works | 2026-04-05 → 2026-07-18 A (+104d) | 2026-04-11 → 2026-09-01 A (+143d) | 0% → 100% |  |
| 2 | **Electrical Works** | 2026-03-23 → 2026-03-24 (+1d) | 2026-09-02 → 2026-11-07 (+66d) |  |  |
| HFR1-05-1980 | Grounding system (conductors) | 2026-03-28 → 2026-03-24 A (-4d) | 2026-03-31 → 2026-09-06 A (+159d) | 0% → 100% | resources Skilled Labor [80 h]; Electrician [160 h]; Grounding System for each block [0.2]; Labor [40 h] → Grounding System for each block [0.2]; Labor [40 h]; Skilled Labor [80 h]; Electrician [160 h] |
| HFR1-05-2010 | Grounding system (cable from electrical & telecom systems | 2026-06-30 → 2026-03-25 A (-97d) | 2026-07-05 → 2026-08-12 A (+38d) | 0% → 100% | resources Labor [50 h]; Skilled Labor [100 h]; Electrician [200 h]; Grounding System for each block [0.2] → Grounding System for each block [0.2]; Labor [50 h]; Skilled Labor [100 h]; Electrician [200 h] |
| HFR1-05-2070 | Power System and lighting and lightcurrent Testing (Continuity + Insulation) & Final Inspection | 2026-08-12 → 2026-04-01 A (-133d) | 2026-08-18 → 2026-10-27 (+70d) | 0% → 95% | resources Labor [60 h]; Skilled Labor [120 h]; Electrician [240 h]; LP: Lighting Power Panel [8] → LP: Lighting Power Panel [8]; Labor [60 h]; Skilled Labor [120 h]; Electrician [240 h] |
| HFR1-05-2090 | Low voltage cables | 2026-08-25 → 2026-04-04 A (-143d) | 2026-08-29 → 2026-08-26 A (-3d) | 0% → 100% | resources Labor [40 h]; Skilled Labor [80 h]; Electrician [160 h]; Supply, install, test and commission Flexible ducts (Low Pressure), for connection to square exhaust diffuser and as per drawings and specification. [785] → Supply, install, test and commission Flexible ducts (Low Pressure), for connection to square exhaust diffuser and as per drawings and specification. [785]; Labor [40 h]; Skilled Labor [80 h]; Electrician [160 h] |
| HFR1-05-2040 | Fire Alarm system Testing works | 2026-07-22 → 2026-04-08 A (-105d) | 2026-07-28 → 2026-09-30 (+64d) | 0% → 85% | resources Labor [60 h]; Skilled Labor [120 h]; Electrician [240 h]; Wall mounted Addressable Fire Alarm Control Panel Complete [0.14] → Wall mounted Addressable Fire Alarm Control Panel Complete [0.14]; Labor [60 h]; Skilled Labor [120 h]; Electrician [240 h] |
| HFR1-05-2030 | Fire Alarm system ( pipes-wires -conduits | 2026-07-15 → 2026-04-12 A (-94d) | 2026-07-21 → 2026-08-01 A (+11d) | 0% → 100% | resources Labor [60 h]; Skilled Labor [120 h]; Electrician [240 h]; Wall mounted Addressable Fire Alarm Control Panel Complete [0.14] → Wall mounted Addressable Fire Alarm Control Panel Complete [0.14]; Labor [60 h]; Skilled Labor [120 h]; Electrician [240 h] |
| HFR1-05-2050 | Power System and lighting and lightcurrent Preparation (Marking + Conduits + Boxes) | 2026-07-29 → 2026-04-15 A (-105d) | 2026-08-04 → 2026-08-23 A (+19d) | 0% → 100% | resources Labor [60 h]; Skilled Labor [120 h]; Electrician [240 h]; LP: Lighting Power Panel [1.76] → LP: Lighting Power Panel [1.76]; Labor [60 h]; Skilled Labor [120 h]; Electrician [240 h] |
| HFR1-05-1990 | Light current devices installations & Final Inspection | 2026-04-01 → 2026-04-18 A (+17d) | 2026-04-05 → 2026-09-20 (+168d) | 0% → 95% | resources Labor [40 h]; Skilled Labor [80 h]; Electrician [160 h]; LP: Lighting Power Panel [2.18] → LP: Lighting Power Panel [2.18]; Labor [40 h]; Skilled Labor [80 h]; Electrician [160 h] |
| HFR1-05-1970 | Socket and Outlets accessiors &Disconnect Switches Installations | 2026-03-23 → 2026-04-19 A (+27d) | 2026-03-26 → 2026-09-09 A (+167d) | 0% → 100% |  |
| HFR1-05-2020 | Wiring Devices Sockets and outlets installations /all decices | 2026-07-06 → 2026-05-12 A (-55d) | 2026-07-12 → 2026-09-07 A (+57d) | 0% → 100% | resources Labor [60 h]; Skilled Labor [120 h]; Electrician [240 h]; Grounding System for each block [0.24] → Grounding System for each block [0.24]; Labor [60 h]; Skilled Labor [120 h]; Electrician [240 h] |
| HFR1-05-2080 | Comission of Panel boards ( cables and testing) | 2026-08-19 → 2026-06-14 A (-66d) | 2026-08-24 → 2026-11-02 (+70d) | 0% → 95% | resources Labor [50 h]; Skilled Labor [100 h]; Electrician [200 h]; LP: Lighting Power Panel [8] → LP: Lighting Power Panel [8]; Labor [50 h]; Skilled Labor [100 h]; Electrician [200 h] |
| HFR1-05-2000 | Solar Power Plant (cable-inverter +panels | 2026-06-25 → 2026-06-28 A (+3d) | 2026-06-29 → 2026-08-27 A (+59d) | 0% → 100% | resources Labor [40 h]; Skilled Labor [80 h]; Electrician [160 h]; Solar Power Plant [0.15] → Solar Power Plant [0.15]; Labor [40 h]; Skilled Labor [80 h]; Electrician [160 h] |
| HFR1-05-2100 | Comission of Lighting Fixtures Installations /LED lighting | 2026-08-30 → 2026-06-29 A (-62d) | 2026-09-02 → 2026-11-07 (+66d) | 0% → 95% | resources Labor [40 h]; Skilled Labor [80 h]; Electrician [160 h]; Outdoor wall mounted LED lighting [76] → Outdoor wall mounted LED lighting [76]; Labor [40 h]; Skilled Labor [80 h]; Electrician [160 h] |
| HFR1-05-2060 | Cable tray works (supports | 2026-08-05 → 2026-07-01 A (-35d) | 2026-08-11 → 2026-08-12 A (+1d) | 0% → 100% | resources Labor [60 h]; Skilled Labor [120 h]; Electrician [240 h]; Perforated Cable Tray [52.7] → Perforated Cable Tray [52.7]; Labor [60 h]; Skilled Labor [120 h]; Electrician [240 h] |
| 3 | **Hunger -2** | 2026-03-12 → 2026-02-03 (-37d) | 2026-09-26 → 2026-12-02 (+67d) |  |  |
| 7 | **Concrete works** | 2026-03-12 → 2026-04-12 (+31d) | 2026-03-29 → 2026-05-06 (+38d) |  |  |
| HFR1-05-1320 | SOG (Whole Factory) Form work | 2026-03-12 → 2026-04-12 A (+31d) | 2026-03-17 → 2026-05-02 A (+46d) | 0% → 100% | resources Labor [200 h]; Skilled Labor [100 h]; Carpenter [200 h]; LABOR [4.52 h]; Labours [2.91 h]; Carpenter [4.52 h]; Provide and cast 150 mm thk concrete floor slab on grade [24.36] → LABOR [4.52 h]; Mobilization [2.91 h]; Carpenter [4.52 h]; Provide and cast 150 mm thk concrete floor slab on grade [24.36]; Labor [200 h]; Skilled Labor [100 h]; Carpenter [200 h] |
| HFR1-05-1330 | SOG (Whole Factory) Inspection | 2026-03-17 → 2026-04-25 A (+39d) | 2026-03-22 → 2026-05-06 A (+45d) | 0% → 100% | resources Skilled Labor [40 h]; LABOR [2 h]; Provide and cast 150 mm thk concrete floor slab on grade [144.02] → LABOR [2 h]; Provide and cast 150 mm thk concrete floor slab on grade [144.02]; Skilled Labor [40 h] |
| HFR1-05-1310 | SOG (Whole Factory) Rebar Mesh & MEP Sleeves | 2026-03-12 → 2026-04-26 A (+45d) | 2026-03-16 → 2026-05-03 A (+48d) | 0% → 100% | resources Labor [160 h]; Skilled Labor [80 h]; Steel Fixer [160 h]; LABOR [63.02 h]; Steel Fixer [15.06 h]; Lean concrete under foundation and grade beams. [455] → LABOR [63.02 h]; Steel Fixer [15.06 h]; Lean concrete under foundation and grade beams. [455]; Labor [160 h]; Skilled Labor [80 h]; Steel Fixer [160 h] |
| HFR1-05-1360 | SOG (Whole Factory) Vapor Barrier & Insulation | 2026-03-26 → 2026-05-03 A (+38d) | 2026-03-28 → 2026-05-03 A (+36d) | 0% → 100% |  |
| HFR1-05-1340 | SOG (Whole Factory) Concrete Pouring | 2026-03-23 → 2026-05-04 A (+42d) | 2026-03-25 → 2026-05-05 A (+41d) | 0% → 100% | resources Labor [120 h]; Skilled Labor [90 h]; Mason [120 h]; CONCRETE MIixer [15.75 h]; LABOR [4.52 h]; Provide and cast 150 mm thk concrete floor slab on grade [70] → CONCRETE MIixer [15.75 h]; LABOR [4.52 h]; Provide and cast 150 mm thk concrete floor slab on grade [70]; Labor [120 h]; Skilled Labor [90 h]; Mason [120 h] |
| HFR1-05-1350 | SOG (Whole Factory) Curing | 2026-03-26 → 2026-05-04 A (+39d) | 2026-03-29 → 2026-05-06 A (+38d) | 0% → 100% | resources Labor [30 h]; Skilled Labor [60 h]; LABOR [6.78 h]; Provide and cast 150 mm thk concrete floor slab on grade [36.13] → LABOR [6.78 h]; Provide and cast 150 mm thk concrete floor slab on grade [36.13]; Labor [30 h]; Skilled Labor [60 h] |
| 1 | **Steelstructure works** | 2026-04-14 → 2026-02-12 (-61d) | 2026-05-19 → 2026-07-26 (+68d) |  |  |
| HFR1-05-1370 | Rated Steel Bollards Concrete Base Casting | 2026-04-14 → 2026-02-12 A (-61d) | 2026-04-15 → 2026-07-01 A (+77d) | 0% → 100% | resources Labor; Skilled Labor; Plumber; install steel bollards 1135mm height [500] → install steel bollards 1135mm height [500]; Labor; Skilled Labor; Plumber |
| HFR1-05-1390 | Install beam Rafter | 2026-04-23 → 2026-03-17 A (-37d) | 2026-04-29 → 2026-05-02 A (+3d) | 0% → 100% | resources Skilled Labor [160 h]; Steel Fixer [240 h]; LABOR [96.95 h]; Metal Works tech [96.95 h]; Size 400mm wide*4000mm long [240] → LABOR [96.95 h]; Metal Works tech [96.95 h]; Size 400mm wide*4000mm long [240]; Skilled Labor [160 h]; Steel Fixer [240 h] |
| HFR1-05-1410 | Fire rating required | 2026-04-29 → 2026-03-17 A (-43d) | 2026-05-12 → 2026-06-15 A (+34d) | 0% → 100% | resources Skilled Labor [140 h]; LABOR [9.94 h]; Metal Works tech [96.95 h]; Size 400mm wide*4000mm long [400] → LABOR [9.94 h]; Metal Works tech [96.95 h]; Size 400mm wide*4000mm long [400]; Skilled Labor [140 h] |
| HFR1-05-1380 | Installation column steel & Steel Ladder | 2026-04-16 → 2026-03-18 A (-29d) | 2026-04-22 → 2026-04-28 A (+6d) | 0% → 100% | resources Labor [160 h]; Skilled Labor [160 h]; Steel Fixer [320 h]; LABOR [96.95 h]; Metal Works tech [96.95 h]; install steel ladder with safety cage [100] → LABOR [96.95 h]; Metal Works tech [96.95 h]; install steel ladder with safety cage [100]; Labor [160 h]; Skilled Labor [160 h]; Steel Fixer [320 h] |
| HFR1-05-1400 | Installation Purlin & bracing | 2026-04-23 → 2026-03-19 A (-35d) | 2026-04-28 → 2026-05-03 A (+5d) | 0% → 100% | resources Skilled Labor [160 h]; Steel Fixer [160 h]; LABOR [96.95 h]; Metal Works tech [96.95 h]; Size 400mm wide*4000mm long [167.91] → LABOR [96.95 h]; Metal Works tech [96.95 h]; Size 400mm wide*4000mm long [167.91]; Skilled Labor [160 h]; Steel Fixer [160 h] |
| HFR1-05-1420 | Installation sandwich panel | 2026-05-13 → 2026-03-24 A (-50d) | 2026-05-19 → 2026-07-26 A (+68d) | 0% → 100% | resources Skilled Labor [120 h]; LABOR [96.95 h]; Metal Works tech [96.95 h]; Size 400mm wide*4000mm long [2.7] → LABOR [96.95 h]; Metal Works tech [96.95 h]; Size 400mm wide*4000mm long [2.7]; Skilled Labor [120 h] |
| 4 | **Architectural** | 2026-03-24 → 2026-04-13 (+20d) | 2026-07-14 → 2026-10-25 (+103d) |  |  |
| HFR1-05-1430 | Block work | 2026-03-24 → 2026-04-13 A (+20d) | 2026-04-04 → 2026-06-01 A (+58d) | 0% → 100% | resources Labor [400 h]; Skilled Labor [200 h]; Mason [600 h]; LABOR [53.32 h]; at external walls (200mm thick insulated) [1576.41]; at electrical room (200mm thick, 2 hr fire rated) [2115.18] → LABOR [53.32 h]; at external walls (200mm thick insulated) [1576.41]; at electrical room (200mm thick, 2 hr fire rated) [2115.18]; Labor [400 h]; Skilled Labor [200 h]; Mason [600 h] |
| HFR1-05-1440 | Plaster | 2026-04-05 → 2026-06-14 A (+70d) | 2026-04-15 → 2026-07-02 A (+78d) | 0% → 100% | resources Labor [300 h]; Skilled Labor [200 h]; Mason [400 h]; LABOR [33.93 h]; Metal Works tech [33.93 h]; Supply and install 2 coats of acrylic paint at external walls and parapet including one coat of primer and two coats of putty to give smooth Surface as a base for paint including fiberglass tape to joints and all other accessories as per Modon specificati [410.56] → LABOR [33.93 h]; Metal Works tech [33.93 h]; Supply and install 2 coats of acrylic paint at external walls and parapet including one coat of primer and two coats of putty to give smooth Surface as a base for paint including fiberglass tape to joints and all other accessories as per Modon specificati [410.56]; Labor [300 h]; Skilled Labor [200 h]; Mason [400 h] |
| HFR1-05-1540 | Doors Installation | 2026-06-16 → 2026-06-25 A (+9d) | 2026-06-23 → 2026-08-03 A (+41d) | 0% → 100% | resources Labor [140 h]; Skilled Labor [140 h]; Carpenter [140 h]; LABOR [33.93 h]; Doors installer [12.05 h]; install (D6) 3000*3500mm galvanized steel heavy duty industrial isolated type roll up shutter door [9.99] → LABOR [33.93 h]; Doors installer [12.05 h]; install (D6) 3000*3500mm galvanized steel heavy duty industrial isolated type roll up shutter door [9.99]; Labor [140 h]; Skilled Labor [140 h]; Carpenter [140 h] |
| HFR1-05-1460 | Marble chips on external walls and grooves | 2026-05-04 → 2026-07-02 A (+59d) | 2026-05-11 → 2026-07-07 A (+57d) | 0% → 100% | resources Labor [70 h]; Skilled Labor [140 h]; LABOR [33.93 h]; FINSHING Techtion [42.42 h]; Supply and install layer of marble chips on external walls and grooves to conform with specification requirements to complete the works as per drawing. Color and material is subject for Client approval. [75] → LABOR [33.93 h]; FINSHING Techtion [42.42 h]; Supply and install layer of marble chips on external walls and grooves to conform with specification requirements to complete the works as per drawing. Color and material is subject for Client approval. [75]; Labor [70 h]; Skilled Labor [140 h] |
| HFR1-05-1550 | Metal works | 2026-06-24 → 2026-07-04 A (+10d) | 2026-06-29 → 2026-09-13 A (+76d) | 0% → 100% | resources Labor [100 h]; Skilled Labor [50 h]; Steel Fixer [100 h]; ALHSA FACTORY [0.15 h]; LABOR [33.93 h]; FINSHING Techtion [42.42 h]; install steel ladder with safety cage [8.04] → ALHSA FACTORY [0.15 h]; LABOR [33.93 h]; FINSHING Techtion [42.42 h]; install steel ladder with safety cage [8.04]; Labor [100 h]; Skilled Labor [50 h]; Steel Fixer [100 h] |
| HFR1-05-1470 | GRC panels with the mechanical fixat | 2026-05-12 → 2026-07-08 A (+57d) | 2026-06-01 → 2026-07-14 A (+43d) | 0% → 100% | resources Skilled Labor [300 h]; LABOR [33.93 h]; Painter [42.42 h]; Supply and install GRC panels with the mechanical fixations and whatever needed to do a perfect work, as shown in the drawings and specification [11] → LABOR [33.93 h]; Painter [42.42 h]; Supply and install GRC panels with the mechanical fixations and whatever needed to do a perfect work, as shown in the drawings and specification [11]; Skilled Labor [300 h] |
| HFR1-05-1520 | Finishes floor Installation | 2026-06-02 → 2026-07-09 A (+37d) | 2026-06-08 → 2026-09-22 (+106d) | 0% → 95% |  |
| HFR1-05-1530 | External Paint Touch-up & Inspection | 2026-06-08 → 2026-08-06 A (+59d) | 2026-06-15 → 2026-10-10 (+117d) | 0% → 85% | resources Labor [70 h]; Skilled Labor [70 h]; Carpenter [140 h]; LABOR [33.93 h]; Painter [42.42 h]; Supply and install 300*300mm ceramic tiles with approved quality on 30 mm mortar including sand fill material as approved by the Client for toilets [71.47] → LABOR [33.93 h]; Painter [42.42 h]; Supply and install 300*300mm ceramic tiles with approved quality on 30 mm mortar including sand fill material as approved by the Client for toilets [71.47]; Labor [70 h]; Skilled Labor [70 h]; Carpenter [140 h] |
| HFR1-05-1480 | External Paint Primer + Final Coat | 2026-05-12 → 2026-08-08 A (+88d) | 2026-05-19 → 2026-09-24 (+128d) | 0% → 85% | resources Skilled Labor [140 h]; LABOR [33.93 h]; Supply and install 2 coats of acrylic paint at external walls and parapet including one coat of primer and two coats of putty to give smooth Surface as a base for paint including fiberglass tape to joints and all other accessories as per Modon specificati [202.5] → LABOR [33.93 h]; Supply and install 2 coats of acrylic paint at external walls and parapet including one coat of primer and two coats of putty to give smooth Surface as a base for paint including fiberglass tape to joints and all other accessories as per Modon specificati [202.5]; Skilled Labor [140 h] |
| HFR1-05-1500 | Windows Glass Installation | 2026-05-20 → 2026-08-08 A (+80d) | 2026-05-31 → 2026-09-01 A (+93d) | 0% → 100% | resources Carpenter [140 h]; LABOR [6.03 h]; Window W1 (size 1000*1300) [10.32] → LABOR [6.03 h]; Window W1 (size 1000*1300) [10.32]; Carpenter [140 h] |
| HFR1-05-1510 | Cladding | 2026-06-01 → 2026-08-09 A (+69d) | 2026-06-07 → 2026-10-01 (+116d) | 0% → 95% | resources Labor [60 h]; Skilled Labor [60 h]; Carpenter [60 h]; LABOR [33.93 h]; Doors installer [42.42 h]; Supply and install aluminium cladding where material is approved by the Client, including sub-frames, all accessories and fittings, and whatever needed to do perfect work all as per drawing and specification. [29.53] → LABOR [33.93 h]; Doors installer [42.42 h]; Supply and install aluminium cladding where material is approved by the Client, including sub-frames, all accessories and fittings, and whatever needed to do perfect work all as per drawing and specification. [29.53]; Labor [60 h]; Skilled Labor [60 h]; Carpenter [60 h] |
| HFR1-05-1490 | Epoxy Paint | 2026-05-12 → 2026-08-16 A (+96d) | 2026-06-01 → 2026-10-04 (+125d) | 0% → 85% | resources Skilled Labor [300 h]; LABOR [33.93 h]; FINSHING Techtion [42.42 h]; Supply and apply epoxy paint to concrete surface in the factory area as shown in the drawings and specifications [183.33] → LABOR [33.93 h]; FINSHING Techtion [42.42 h]; Supply and apply epoxy paint to concrete surface in the factory area as shown in the drawings and specifications [183.33]; Skilled Labor [300 h] |
| HFR1-05-1450 | Paint Primer + Putty + Final Coat INSIDE | 2026-05-04 → 2026-08-23 A (+111d) | 2026-05-12 → 2026-09-26 (+137d) | 0% → 70% | resources Labor [80 h]; Skilled Labor [160 h]; Mason [240 h]; LABOR [33.93 h]; Tlles Fitter [33.93 h]; Supply and install 2 coats of acrylic paint at external walls and parapet including one coat of primer and two coats of putty to give smooth Surface as a base for paint including fiberglass tape to joints and all other accessories as per Modon specificati [410.56] → LABOR [33.93 h]; Tlles Fitter [33.93 h]; Supply and install 2 coats of acrylic paint at external walls and parapet including one coat of primer and two coats of putty to give smooth Surface as a base for paint including fiberglass tape to joints and all other accessories as per Modon specificati [410.56]; Labor [80 h]; Skilled Labor [160 h]; Mason [240 h] |
| HFR1-05-1570 | Specialites Fittings | 2026-07-06 → 2026-09-01 A (+57d) | 2026-07-14 → 2026-10-25 (+103d) | 0% → 95% | resources Labor [160 h]; Skilled Labor [160 h]; LABOR [53.32 h]; FINSHING Techtion [66.65 h]; Provide and install grab bars, surface mounted, satin finish stainless steel as per approved sample including accessories to complete as shown in the drawings and specification [187.5] → LABOR [53.32 h]; FINSHING Techtion [66.65 h]; Provide and install grab bars, surface mounted, satin finish stainless steel as per approved sample including accessories to complete as shown in the drawings and specification [187.5]; Labor [160 h]; Skilled Labor [160 h] |
| HFR1-05-1560 | Signage Layout & Marking Locations | 2026-06-30 → 2026-09-03 A (+65d) | 2026-07-05 → 2026-10-15 (+102d) | 0% → 45% | resources Labor [100 h]; LABOR [38.78 h]; Doors installer [3.31 h]; Identification sign for toilets & prayer room [43] → LABOR [38.78 h]; Doors installer [3.31 h]; Identification sign for toilets & prayer room [43]; Labor [100 h] |
| 5 | **MEP WORKS** | 2026-03-24 → 2026-02-03 (-49d) | 2026-09-26 → 2026-12-02 (+67d) |  |  |

| ID | Task | Start | Finish | Complete | Other |
| --- | --- | --- | --- | --- | --- |
| 1 | **Plumping-FIRE-HVAC** | 2026-03-24 → 2026-02-03 (-49d) | 2026-09-26 → 2026-12-02 (+67d) |  |  |
| HFR1-05-1590 | Drainage Preparation (Marking + Sleeves + Supports) | 2026-03-24 → 2026-02-03 A (-49d) | 2026-03-30 → 2026-03-05 A (-25d) | 0% → 100% | resources Labor [240 h]; Plumber [120 h]; Pipe-Laying Worker [120 h]; LABOR [48.47 h]; plumber [48.47 h]; Supply, installation , testing & commissioning of condensate drain piping, complete as per drawings, specifications and method of measurement. [142.58] → LABOR [48.47 h]; plumber [48.47 h]; Supply, installation , testing & commissioning of condensate drain piping, complete as per drawings, specifications and method of measurement. [142.58]; Labor [240 h]; Plumber [120 h]; Pipe-Laying Worker [120 h] |
| HFR1-05-1620 | Drainage Installation (Pipes + Traps + Connections) | 2026-04-13 → 2026-02-12 A (-60d) | 2026-04-16 → 2026-04-25 A (+9d) | 0% → 100% | resources Labor [80 h]; Plumber [80 h]; Pipe-Laying Worker [80 h]; LABOR [48.47 h]; plumber [48.47 h]; 160 mm Pipe in trench not exceeding 2.00 m depth to invert [53.47] → LABOR [48.47 h]; plumber [48.47 h]; 160 mm Pipe in trench not exceeding 2.00 m depth to invert [53.47]; Labor [80 h]; Plumber [80 h]; Pipe-Laying Worker [80 h] |
| HFR1-05-1730 | WATER SUPPLY SYSTEM | 2026-05-03 → 2026-03-03 A (-61d) | 2026-05-17 → 2026-05-14 A (-3d) | 0% → 100% | resources Labor [80 h]; Skilled Labor [160 h]; Plumber [160 h]; Pipe-Laying Worker [160 h]; LABOR [48.47 h]; AC tecntion [48.47 h]; 63 mm Ø (2 1/2" Ø )Cold water [749.13] → LABOR [48.47 h]; AC tecntion [48.47 h]; 63 mm Ø (2 1/2" Ø )Cold water [749.13]; Labor [80 h]; Skilled Labor [160 h]; Plumber [160 h]; Pipe-Laying Worker [160 h] |
| HFR1-05-1670 | Internal ducts (duct sealent+hangers+supports | 2026-06-09 → 2026-03-10 A (-91d) | 2026-06-29 → 2026-08-04 A (+36d) | 0% → 100% | resources Labor [60 h]; Skilled Labor [120 h]; Electrician [240 h]; LABOR [48.47 h]; AC tecntion [48.47 h]; Supply, install, test and commission indoor ductwork as per SMACNA Standards, complete, VD, duct tape, adhesive, duct sealant, hangers, supports and all other accessories, (Flanged TDC Type) and as per drawings and specification. [65.74] → LABOR [48.47 h]; AC tecntion [48.47 h]; Supply, install, test and commission indoor ductwork as per SMACNA Standards, complete, VD, duct tape, adhesive, duct sealant, hangers, supports and all other accessories, (Flanged TDC Type) and as per drawings and specification. [65.74]; Labor [60 h]; Skilled Labor [120 h]; Electrician [240 h] |
| HFR1-05-1660 | Floor drains installations | 2026-05-18 → 2026-03-17 A (-62d) | 2026-06-08 → 2026-04-01 A (-68d) | 0% → 100% | resources Labor [40 h]; Plumber [80 h]; LABOR [48.47 h]; plumber [48.47 h]; Supply, installation , testing & commissioning of condensate drain piping, complete as per drawings, specifications and method of measurement. [142.58] → LABOR [48.47 h]; plumber [48.47 h]; Supply, installation , testing & commissioning of condensate drain piping, complete as per drawings, specifications and method of measurement. [142.58]; Labor [40 h]; Plumber [80 h] |
| HFR1-05-1600 | HVAC Ducting Preparation (Marking + Supports + Hangers) | 2026-03-31 → 2026-04-01 A (+1d) | 2026-04-07 → 2026-04-04 A (-3d) | 0% → 100% | resources Labor [140 h]; Electrician [280 h]; LABOR [48.47 h]; AC tecntion [48.47 h]; Supply, install, test and commission indoor ductwork as per SMACNA Standards, complete, VD, duct tape, adhesive, duct sealant, hangers, supports and all other accessories, (Flanged TDC Type) and as per drawings and specification. [422.22] → LABOR [48.47 h]; AC tecntion [48.47 h]; Supply, install, test and commission indoor ductwork as per SMACNA Standards, complete, VD, duct tape, adhesive, duct sealant, hangers, supports and all other accessories, (Flanged TDC Type) and as per drawings and specification. [422.22]; Labor [140 h]; Electrician [280 h] |
| HFR1-05-1740 | HVAC DuctingInstallation (Ducts + Fittings + Accessories) | 2026-05-18 → 2026-04-08 A (-40d) | 2026-06-08 → 2026-04-14 A (-55d) | 0% → 100% | resources Labor [70 h]; Skilled Labor [70 h]; Electrician [140 h]; LABOR [48.47 h]; AC tecntion [48.47 h]; Supply, install, test and commission indoor ductwork as per SMACNA Standards, complete, VD, duct tape, adhesive, duct sealant, hangers, supports and all other accessories, (Flanged TDC Type) and as per drawings and specification. [1692.56] → LABOR [48.47 h]; AC tecntion [48.47 h]; Supply, install, test and commission indoor ductwork as per SMACNA Standards, complete, VD, duct tape, adhesive, duct sealant, hangers, supports and all other accessories, (Flanged TDC Type) and as per drawings and specification. [1692.56]; Labor [70 h]; Skilled Labor [70 h]; Electrician [140 h] |
| HFR1-05-1780 | HVAC Ducting Testing (Leak Test) & Final Inspection | 2026-07-30 → 2026-04-11 A (-110d) | 2026-08-17 → 2026-04-19 A (-120d) | 0% → 100% | resources Labor [70 h]; Skilled Labor [70 h]; Electrician [140 h]; LABOR [48.47 h]; AC tecntion [48.47 h]; Supply, install, test and commission Flexible ducts (Low Pressure), for connection to square exhaust diffuser and as per drawings and specification. [1269.42] → LABOR [48.47 h]; AC tecntion [48.47 h]; Supply, install, test and commission Flexible ducts (Low Pressure), for connection to square exhaust diffuser and as per drawings and specification. [1269.42]; Labor [70 h]; Skilled Labor [70 h]; Electrician [140 h] |
| HFR1-05-1630 | Gully trap works +Heavy duty covers | 2026-04-18 → 2026-04-14 A (-4d) | 2026-04-21 → 2026-07-27 A (+97d) | 0% → 100% | resources Labor [40 h]; Plumber [80 h]; LABOR [48.47 h]; plumber [48.47 h]; Supply, install, test and commission Gully Traps with heavy duty cover and all other accessories as per drawings and specification. [38.89] → LABOR [48.47 h]; plumber [48.47 h]; Supply, install, test and commission Gully Traps with heavy duty cover and all other accessories as per drawings and specification. [38.89]; Labor [40 h]; Plumber [80 h] |
| HFR1-05-1690 | Inspection chambers with heavu duty covers | 2026-07-22 → 2026-04-15 A (-98d) | 2026-08-09 → 2026-08-16 A (+7d) | 0% → 100% | resources Labor [80 h]; Skilled Labor [160 h]; Plumber [160 h]; LABOR [48.47 h]; Supply, install, test and commission Gully Traps with heavy duty cover and all other accessories as per drawings and specification. [38.89] → LABOR [48.47 h]; Supply, install, test and commission Gully Traps with heavy duty cover and all other accessories as per drawings and specification. [38.89]; Labor [80 h]; Skilled Labor [160 h]; Plumber [160 h] |
| HFR1-05-1640 | Fire Fighting Installation (Pipes + Fittings + Valves + Cabinets) | 2026-04-22 → 2026-04-16 A (-6d) | 2026-05-05 → 2026-09-10 A (+128d) | 0% → 100% | resources Labor [80 h]; Skilled Labor [40 h]; Electrician [80 h]; LABOR [48.47 h]; Fire Pump system, Local code & UL/FM approved, meeting all NFPA requirements [0.14] → LABOR [48.47 h]; Fire Pump system, Local code & UL/FM approved, meeting all NFPA requirements [0.14]; Labor [80 h]; Skilled Labor [40 h]; Electrician [80 h] |
| HFR1-05-1770 | Fire Alarm system Devices installations | 2026-07-13 → 2026-05-02 A (-72d) | 2026-07-29 → 2026-08-31 A (+33d) | 0% → 100% | resources Labor [150 h]; Skilled Labor [150 h]; Electrician [300 h]; LABOR [48.47 h]; electrical tection [48.47 h]; Wall mounted Addressable Fire Alarm Control Panel Complete [0.97] → LABOR [48.47 h]; electrical tection [48.47 h]; Wall mounted Addressable Fire Alarm Control Panel Complete [0.97]; Labor [150 h]; Skilled Labor [150 h]; Electrician [300 h] |
| HFR1-05-1790 | Testing plumping system & Final Inspection | 2026-08-18 → 2026-05-04 A (-106d) | 2026-09-05 → 2026-11-12 (+68d) | 0% → 95% | resources Labor [20 h]; Skilled Labor [20 h]; Electrician [40 h]; LABOR [48.47 h]; plumber [48.47 h]; Supply, install, test and commission Flexible ducts (Low Pressure), for connection to square exhaust diffuser and as per drawings and specification. [534.69] → LABOR [48.47 h]; plumber [48.47 h]; Supply, install, test and commission Flexible ducts (Low Pressure), for connection to square exhaust diffuser and as per drawings and specification. [534.69]; Labor [20 h]; Skilled Labor [20 h]; Electrician [40 h] |
| HFR1-05-1800 | Fire Fighting Testing (Hydrostatic Test) & Final Inspection | 2026-09-06 → 2026-05-04 A (-125d) | 2026-09-26 → 2026-12-02 (+67d) | 0% → 90% | resources Labor [50 h]; Skilled Labor [50 h]; Electrician [100 h]; LABOR [48.47 h]; install fire rated 45 min. (D5) 1000*2200mm single leaf steel door with door construction type C [20.68] → LABOR [48.47 h]; install fire rated 45 min. (D5) 1000*2200mm single leaf steel door with door construction type C [20.68]; Labor [50 h]; Skilled Labor [50 h]; Electrician [100 h] |
| HFR1-05-1760 | OS Y GAte valves ,installations and testing | 2026-06-28 → 2026-05-05 A (-54d) | 2026-07-12 → 2026-08-02 A (+21d) | 0% → 100% | resources Labor [70 h]; Skilled Labor [70 h]; Electrician [140 h]; LABOR [48.47 h]; AC tecntion [48.47 h]; Supply, install, testing and commission Fire Alarm Check Valve (ACV) assembly with OS&Y gate valve 6" Ø, complete with accessories.as per drawing and specifications [0.33] → LABOR [48.47 h]; AC tecntion [48.47 h]; Supply, install, testing and commission Fire Alarm Check Valve (ACV) assembly with OS&Y gate valve 6" Ø, complete with accessories.as per drawing and specifications [0.33]; Labor [70 h]; Skilled Labor [70 h]; Electrician [140 h] |
| HFR1-05-1680 | Fire house cabinet works | 2026-06-30 → 2026-05-11 A (-50d) | 2026-07-21 → 2026-08-16 A (+26d) | 0% → 100% | resources Labor [80 h]; Skilled Labor [160 h]; Electrician [320 h]; LABOR [48.47 h]; Fire Pump system, Local code & UL/FM approved, meeting all NFPA requirements [0.14] → LABOR [48.47 h]; Fire Pump system, Local code & UL/FM approved, meeting all NFPA requirements [0.14]; Labor [80 h]; Skilled Labor [160 h]; Electrician [320 h] |
| HFR1-05-1650 | Water sprinkles | 2026-05-06 → 2026-06-07 A (+32d) | 2026-05-17 → 2026-09-28 (+134d) | 0% → 90% | resources Labor [40 h]; Plumber [40 h]; LABOR [48.47 h]; 200 mm Ø [92.99] → LABOR [48.47 h]; 200 mm Ø [92.99]; Labor [40 h]; Plumber [40 h] |
| HFR1-05-1610 | Roof drains | 2026-04-08 → 2026-06-14 A (+67d) | 2026-04-12 → 2026-06-30 A (+79d) | 0% → 100% | resources Labor [80 h]; Plumber [80 h]; LABOR [48.47 h]; plumber [48.47 h]; Supply, installation , testing & commissioning of condensate drain piping, complete as per drawings, specifications and method of measurement. [142.58] → LABOR [48.47 h]; plumber [48.47 h]; Supply, installation , testing & commissioning of condensate drain piping, complete as per drawings, specifications and method of measurement. [142.58]; Labor [80 h]; Plumber [80 h] |
| HFR1-05-1750 | Mini split units indoor | 2026-06-09 → 2026-07-12 A (+33d) | 2026-06-27 → 2026-07-16 A (+19d) | 0% → 100% | resources Labor [70 h]; Skilled Labor [70 h]; Electrician [140 h]; LABOR [48.47 h]; AC tecntion [48.47 h]; Complete road crossing duct bank for street lighting cables including pipes [8.96] → LABOR [48.47 h]; AC tecntion [48.47 h]; Complete road crossing duct bank for street lighting cables including pipes [8.96]; Labor [70 h]; Skilled Labor [70 h]; Electrician [140 h] |
| HFR1-05-1720 | Flexiable duct | 2026-04-25 → 2026-07-13 A (+79d) | 2026-05-02 → 2026-08-03 A (+93d) | 0% → 100% | resources Labor [70 h]; Skilled Labor [140 h]; Electrician [280 h]; LABOR [48.47 h]; Flexiable duct [0.02]; AC tecntion [48.47 h] → LABOR [48.47 h]; Flexiable duct [0.02]; AC tecntion [48.47 h]; Labor [70 h]; Skilled Labor [140 h]; Electrician [280 h] |
| HFR1-05-1710 | Exhaust diffusers and grills | 2026-04-18 → 2026-07-14 A (+87d) | 2026-04-23 → 2026-08-01 A (+100d) | 0% → 100% | resources Labor [60 h]; Skilled Labor [120 h]; Electrician [240 h]; LABOR [48.47 h]; AC tecntion [48.47 h]; Exhaust fan 2351 CFM ex. Static 32 Pa for Factory area [0.5] → LABOR [48.47 h]; AC tecntion [48.47 h]; Exhaust fan 2351 CFM ex. Static 32 Pa for Factory area [0.5]; Labor [60 h]; Skilled Labor [120 h]; Electrician [240 h] |
| HFR1-05-1700 | Exasut fans works | 2026-04-08 → 2026-07-20 A (+103d) | 2026-04-16 → 2026-09-05 A (+142d) | 0% → 100% | resources Labor [80 h]; Skilled Labor [160 h]; Electrician [320 h]; LABOR [48.47 h]; Exhaust fan 2351 CFM ex. Static 32 Pa for Factory area [0.5] → LABOR [48.47 h]; Exhaust fan 2351 CFM ex. Static 32 Pa for Factory area [0.5]; Labor [80 h]; Skilled Labor [160 h]; Electrician [320 h] |
| 2 | **Electrical Works** | 2026-04-05 → 2026-04-01 (-4d) | 2026-07-08 → 2026-10-20 (+104d) |  |  |
| HFR1-05-2120 | Grounding system (conductors) | 2026-04-11 → 2026-04-01 A (-10d) | 2026-04-15 → 2026-09-06 A (+144d) | 0% → 100% | resources Labor [50 h]; Skilled Labor [100 h]; Electrician [200 h]; Grounding System for each block [0.2] → Grounding System for each block [0.2]; Labor [50 h]; Skilled Labor [100 h]; Electrician [200 h] |
| HFR1-05-2230 | Low voltage cables | 2026-06-25 → 2026-04-01 A (-85d) | 2026-07-01 → 2026-08-27 A (+57d) | 0% → 100% | resources Labor [60 h]; Skilled Labor [120 h]; Electrician [240 h]; Supply, install, test and commission Flexible ducts (Low Pressure), for connection to square exhaust diffuser and as per drawings and specification. [785] → Supply, install, test and commission Flexible ducts (Low Pressure), for connection to square exhaust diffuser and as per drawings and specification. [785]; Labor [60 h]; Skilled Labor [120 h]; Electrician [240 h] |
| HFR1-05-2190 | Power System and lighting and lightcurrent Preparation (Marking + Conduits + Boxes) | 2026-05-25 → 2026-04-05 A (-50d) | 2026-06-03 → 2026-08-22 A (+80d) | 0% → 100% | resources Labor [60 h]; Skilled Labor [120 h]; Electrician [240 h]; LP: Lighting Power Panel [1.76] → LP: Lighting Power Panel [1.76]; Labor [60 h]; Skilled Labor [120 h]; Electrician [240 h] |
| HFR1-05-2210 | Power System and lighting and lightcurrent Testing (Continuity + Insulation) & Final Inspection | 2026-06-11 → 2026-04-07 A (-65d) | 2026-06-17 → 2026-10-06 (+111d) | 0% → 95% | resources Labor [60 h]; Skilled Labor [120 h]; Electrician [240 h]; LP: Lighting Power Panel [8] → LP: Lighting Power Panel [8]; Labor [60 h]; Skilled Labor [120 h]; Electrician [240 h] |
| HFR1-05-2150 | Grounding system (cable from electrical & telecom systems | 2026-04-28 → 2026-04-09 A (-19d) | 2026-05-03 → 2026-08-12 A (+101d) | 0% → 100% | resources Labor [50 h]; Skilled Labor [100 h]; Electrician [200 h]; Grounding System for each block [0.2] → Grounding System for each block [0.2]; Labor [50 h]; Skilled Labor [100 h]; Electrician [200 h] |
| HFR1-05-2170 | Fire Alarm system ( pipes-wires -conduits | 2026-05-11 → 2026-04-11 A (-30d) | 2026-05-17 → 2026-08-01 A (+76d) | 0% → 100% | resources Labor [60 h]; Skilled Labor [120 h]; Electrician [240 h]; Wall mounted Addressable Fire Alarm Control Panel Complete [0.14] → Wall mounted Addressable Fire Alarm Control Panel Complete [0.14]; Labor [60 h]; Skilled Labor [120 h]; Electrician [240 h] |
| HFR1-05-2180 | Fire Alarm system Testing works | 2026-05-18 → 2026-04-14 A (-34d) | 2026-05-24 → 2026-09-29 (+128d) | 0% → 90% | resources Labor [60 h]; Skilled Labor [120 h]; Electrician [240 h]; Wall mounted Addressable Fire Alarm Control Panel Complete [0.14] → Wall mounted Addressable Fire Alarm Control Panel Complete [0.14]; Labor [60 h]; Skilled Labor [120 h]; Electrician [240 h] |
| HFR1-05-2130 | Light current devices installations & Final Inspection | 2026-04-16 → 2026-04-27 A (+11d) | 2026-04-21 → 2026-09-21 (+153d) | 0% → 95% | resources Labor [50 h]; Skilled Labor [100 h]; Electrician [200 h]; LP: Lighting Power Panel [2.18] → LP: Lighting Power Panel [2.18]; Labor [50 h]; Skilled Labor [100 h]; Electrician [200 h] |
| HFR1-05-2110 | Socket and Outlets accessiors &Disconnect Switches Installations | 2026-04-05 → 2026-04-28 A (+23d) | 2026-04-09 → 2026-09-08 A (+152d) | 0% → 100% | resources Labor [50 h]; Skilled Labor [100 h]; Electrician [200 h]; Wall mounted Duplex Socket [24.8] → Wall mounted Duplex Socket [24.8]; Labor [50 h]; Skilled Labor [100 h]; Electrician [200 h] |
| HFR1-05-2160 | Wiring Devices Sockets and outlets installations /all decices | 2026-05-04 → 2026-05-11 A (+7d) | 2026-05-10 → 2026-09-06 A (+119d) | 0% → 100% | resources Labor [60 h]; Skilled Labor [120 h]; Electrician [240 h]; Grounding System for each block [0.24] → Grounding System for each block [0.24]; Labor [60 h]; Skilled Labor [120 h]; Electrician [240 h] |
| HFR1-05-2200 | Cable tray works (supports | 2026-06-04 → 2026-06-14 A (+10d) | 2026-06-10 → 2026-08-10 A (+61d) | 0% → 100% | resources Labor [60 h]; Skilled Labor [120 h]; Electrician [240 h]; Perforated Cable Tray [52.7] → Perforated Cable Tray [52.7]; Labor [60 h]; Skilled Labor [120 h]; Electrician [240 h] |
| HFR1-05-2220 | Comission of Panel boards ( cables and testing) | 2026-06-18 → 2026-06-14 A (-4d) | 2026-06-24 → 2026-10-13 (+111d) | 0% → 95% | resources Labor [60 h]; Skilled Labor [120 h]; Electrician [240 h]; LP: Lighting Power Panel [8] → LP: Lighting Power Panel [8]; Labor [60 h]; Skilled Labor [120 h]; Electrician [240 h] |
| HFR1-05-2140 | Solar Power Plant (cable-inverter +panels | 2026-04-22 → 2026-06-25 A (+64d) | 2026-04-27 → 2026-08-15 A (+110d) | 0% → 100% | resources Labor [50 h]; Skilled Labor [100 h]; Electrician [200 h]; Solar Power Plant [0.15] → Solar Power Plant [0.15]; Labor [50 h]; Skilled Labor [100 h]; Electrician [200 h] |
| HFR1-05-2240 | Comission of Lighting Fixtures Installations /LED lighting | 2026-07-02 A | 2026-07-08 → 2026-10-20 (+104d) | 0% → 95% | resources Labor [60 h]; Skilled Labor [120 h]; Electrician [240 h]; Outdoor wall mounted LED lighting [76] → Outdoor wall mounted LED lighting [76]; Labor [60 h]; Skilled Labor [120 h]; Electrician [240 h] |
| 1 | **Septic Tank** | 2026-03-10 → 2026-02-14 (-24d) | 2026-06-28 → 2026-05-13 (-46d) |  |  |
| 1 | **Concrete Works** | 2026-03-10 → 2026-02-14 (-24d) | 2026-05-12 → 2026-03-25 (-48d) |  |  |
| HFR1-05-1110 | Tank Foundation Formwork | 2026-03-17 → 2026-02-14 A (-31d) | 2026-03-25 A | 0% → 100% | resources Labor [200 h]; Skilled Labor [100 h]; Carpenter [200 h]; LABOR [12.12 h]; Carpenter [12.12 h]; Tank Footing [5] → LABOR [12.12 h]; Carpenter [12.12 h]; Tank Footing [5]; Labor [200 h]; Skilled Labor [100 h]; Carpenter [200 h] |
| HFR1-05-1130 | Tank Foundation Concrete Pouring | 2026-03-30 → 2026-03-01 A (-29d) | 2026-04-01 → 2026-03-04 A (-28d) | 0% → 100% | resources Labor [120 h]; Skilled Labor [90 h]; Mason [120 h]; CONCRETE MIixer [6.06 h]; LABOR [12.12 h]; Tank Footing [9] → CONCRETE MIixer [6.06 h]; LABOR [12.12 h]; Tank Footing [9]; Labor [120 h]; Skilled Labor [90 h]; Mason [120 h] |
| HFR1-05-1100 | Tank FoundationRebar Fixing | 2026-03-10 → 2026-03-03 A (-7d) | 2026-03-16 → 2026-03-05 A (-11d) | 0% → 100% | resources Labor [240 h]; Skilled Labor [120 h]; Steel Fixer [240 h]; LABOR [12.12 h]; Steel Fixer [30.3 h]; Tank Footing [3] → LABOR [12.12 h]; Steel Fixer [30.3 h]; Tank Footing [3]; Labor [240 h]; Skilled Labor [120 h]; Steel Fixer [240 h] |
| HFR1-05-1120 | Tank Foundation Inspection | 2026-03-26 → 2026-03-04 A (-22d) | 2026-03-29 → 2026-03-05 A (-24d) | 0% → 100% | resources Skilled Labor [60 h]; LABOR [12.12 h]; Tank Footing [6.23] → LABOR [12.12 h]; Tank Footing [6.23]; Skilled Labor [60 h] |
| HFR1-05-1140 | Tank Foundation Curing | 2026-04-02 → 2026-03-05 A (-28d) | 2026-04-05 → 2026-03-07 A (-29d) | 0% → 100% | resources Labor [60 h]; LABOR [0.75 h]; Tank Footing [8] → LABOR [0.75 h]; Tank Footing [8]; Labor [60 h] |
| HFR1-05-1150 | Tank Walls Rebar Fixing | 2026-04-06 → 2026-03-05 A (-32d) | 2026-04-11 → 2026-03-10 A (-32d) | 0% → 100% | resources Labor [200 h]; Skilled Labor [100 h]; Steel Fixer [200 h]; LABOR [0.9 h]; Steel Fixer [30.3 h]; Tank Walls [6] → LABOR [0.9 h]; Steel Fixer [30.3 h]; Tank Walls [6]; Labor [200 h]; Skilled Labor [100 h]; Steel Fixer [200 h] |
| HFR1-05-1160 | Tank Walls Formwork | 2026-04-12 → 2026-03-08 A (-35d) | 2026-04-18 → 2026-03-10 A (-39d) | 0% → 100% | resources Labor [240 h]; Skilled Labor [120 h]; Carpenter [240 h]; LABOR [0.9 h]; Carpenter [0.9 h]; Tank Walls [4.11] → LABOR [0.9 h]; Carpenter [0.9 h]; Tank Walls [4.11]; Labor [240 h]; Skilled Labor [120 h]; Carpenter [240 h] |
| HFR1-05-1170 | Tank Walls Inspection | 2026-04-19 → 2026-03-09 A (-41d) | 2026-04-22 → 2026-03-11 A (-42d) | 0% → 100% | resources Skilled Labor [80 h]; LABOR [0.9 h]; Tank Walls [4.48] → LABOR [0.9 h]; Tank Walls [4.48]; Skilled Labor [80 h] |
| HFR1-05-1180 | Tank Walls Concrete Pouring | 2026-04-23 → 2026-03-09 A (-45d) | 2026-04-26 → 2026-03-12 A (-45d) | 0% → 100% | resources Labor [120 h]; Skilled Labor [90 h]; Mason [120 h]; CONCRETE MIixer [0.3 h]; LABOR [0.9 h]; Tank Walls [6] → CONCRETE MIixer [0.3 h]; LABOR [0.9 h]; Tank Walls [6]; Labor [120 h]; Skilled Labor [90 h]; Mason [120 h] |
| HFR1-05-1200 | Tank Slab Formwork | 2026-04-30 → 2026-03-13 A (-48d) | 2026-05-03 → 2026-03-15 A (-49d) | 0% → 100% | resources Labor [120 h]; Skilled Labor [60 h]; Carpenter [120 h]; LABOR [12.12 h]; Carpenter [12.12 h]; Tank Slab [2] → LABOR [12.12 h]; Carpenter [12.12 h]; Tank Slab [2]; Labor [120 h]; Skilled Labor [60 h]; Carpenter [120 h] |
| HFR1-05-1190 | Tank Slab Rebar Fixing | 2026-04-27 → 2026-03-14 A (-44d) | 2026-04-29 → 2026-03-16 A (-44d) | 0% → 100% | resources Labor [60 h]; LABOR [0.9 h]; Steel Fixer [0.9 h]; Tank Slab [1.99] → LABOR [0.9 h]; Steel Fixer [0.9 h]; Tank Slab [1.99]; Labor [60 h] |
| HFR1-05-1210 | Tank Slab Inspection | 2026-05-04 → 2026-03-16 A (-49d) | 2026-05-05 → 2026-03-17 A (-49d) | 0% → 100% | resources Skilled Labor [40 h]; LABOR [12.12 h]; Tank Slab [2] → LABOR [12.12 h]; Tank Slab [2]; Skilled Labor [40 h] |
| HFR1-05-1220 | Tank Slab Concrete Pouring | 2026-05-06 → 2026-03-17 A (-50d) | 2026-05-09 → 2026-03-18 A (-52d) | 0% → 100% | resources Labor [120 h]; Skilled Labor [90 h]; Mason [120 h]; CONCRETE MIixer [6.06 h]; LABOR [12.12 h]; Tank Slab [2] → CONCRETE MIixer [6.06 h]; LABOR [12.12 h]; Tank Slab [2]; Labor [120 h]; Skilled Labor [90 h]; Mason [120 h] |
| HFR1-05-1230 | Tank Slab Curing | 2026-05-10 → 2026-03-18 A (-53d) | 2026-05-12 → 2026-03-19 A (-54d) | 0% → 100% | resources Skilled Labor [60 h]; LABOR [12.12 h]; Tank Slab [2] → LABOR [12.12 h]; Tank Slab [2]; Skilled Labor [60 h] |
| 2 | **Insulation works** | 2026-05-13 → 2026-03-01 (-73d) | 2026-06-28 → 2026-05-13 (-46d) |  |  |
| HFR1-05-2280 | Polyurethane Waterproof Coating internal insulation | 2026-05-13 → 2026-03-01 A (-73d) | 2026-05-14 → 2026-03-05 A (-70d) | 0% → 100% | resources Labor [80 h]; Skilled Labor [40 h]; Carpenter [20 h]; Steel Fixer [20 h]; Mason [20 h]; LABOR [7.27 h]; Insulation Tection [7.23 h]; Insulation Tection [7.27 h]; Supply and install polyurethane waterpoof coating to internal surfaces of concrete trench [17.08] → LABOR [7.27 h]; Insulation Tection [7.23 h]; Insulation Tection [7.27 h]; Supply and install polyurethane waterpoof coating to internal surfaces of concrete trench [17.08]; Labor [80 h]; Skilled Labor [40 h]; Carpenter [20 h]; Steel Fixer [20 h]; Mason [20 h] |
| HFR1-05-2300 | Extruded polystyrene External insulation | 2026-05-18 → 2026-03-04 A (-75d) | 2026-05-23 → 2026-03-07 A (-77d) | 0% → 100% | resources Labor [200 h]; Skilled Labor [100 h]; Carpenter [50 h]; Steel Fixer [50 h]; Mason [50 h]; LABOR [12.12 h]; Insulation Tection [7.23 h]; Insulation Tection [12.12 h]; Supply and install 50mm thk rigid insulation (extruded polystyrene) [142.67] → LABOR [12.12 h]; Insulation Tection [7.23 h]; Insulation Tection [12.12 h]; Supply and install 50mm thk rigid insulation (extruded polystyrene) [142.67]; Labor [200 h]; Skilled Labor [100 h]; Carpenter [50 h]; Steel Fixer [50 h]; Mason [50 h] |
| HFR1-05-2320 | Protection board / insulation | 2026-06-03 → 2026-03-05 A (-90d) | 2026-06-09 → 2026-03-08 A (-93d) | 0% → 100% | resources Labor [240 h]; Skilled Labor [120 h]; Carpenter [60 h]; Steel Fixer [60 h]; Mason [60 h]; LABOR [7.23 h]; LABOR [7.27 h]; Insulation Tection [7.27 h]; Supply and install geotextile sheet [949.2] → LABOR [7.23 h]; LABOR [7.27 h]; Insulation Tection [7.27 h]; Supply and install geotextile sheet [949.2]; Labor [240 h]; Skilled Labor [120 h]; Carpenter [60 h]; Steel Fixer [60 h]; Mason [60 h] |
| HFR1-05-2310 | Geotextile sheet External insulation | 2026-05-24 → 2026-03-08 A (-77d) | 2026-06-02 → 2026-03-09 A (-85d) | 0% → 100% | resources Labor [240 h]; Skilled Labor [120 h]; Carpenter [60 h]; Steel Fixer [60 h]; Mason [60 h]; LABOR [12.12 h]; Insulation Tection [7.23 h]; Insulation Tection [12.12 h]; Supply and install geotextile sheet [226] → LABOR [12.12 h]; Insulation Tection [7.23 h]; Insulation Tection [12.12 h]; Supply and install geotextile sheet [226]; Labor [240 h]; Skilled Labor [120 h]; Carpenter [60 h]; Steel Fixer [60 h]; Mason [60 h] |
| HFR1-05-2290 | APP membrane 4mm External insulation | 2026-05-16 → 2026-03-09 A (-68d) | 2026-05-17 → 2026-03-10 A (-68d) | 0% → 100% | resources Labor [80 h]; Skilled Labor [40 h]; Carpenter [20 h]; Steel Fixer [20 h]; Mason [20 h]; LABOR [9.69 h]; Insulation Tection [9.69 h]; Supply and install 4mm thick APP modified bituminous membrane - single layer [226] → LABOR [9.69 h]; Insulation Tection [9.69 h]; Supply and install 4mm thick APP modified bituminous membrane - single layer [226]; Labor [80 h]; Skilled Labor [40 h]; Carpenter [20 h]; Steel Fixer [20 h]; Mason [20 h] |
| HFR1-05-9590 | Sewage tank | 2026-06-10 → 2026-03-09 A (-93d) | 2026-06-15 → 2026-03-10 A (-97d) | 0% → 100% | resources Labor [150 h]; Skilled Labor [100 h]; Plumber [100 h]; Pipe-Laying Worker [200 h]; LABOR [12.12 h]; Insulation Tection [12.12 h]; Sewage tank with dimensions (8x4x3m) [0.13] → LABOR [12.12 h]; Insulation Tection [12.12 h]; Sewage tank with dimensions (8x4x3m) [0.13]; Labor [150 h]; Skilled Labor [100 h]; Plumber [100 h]; Pipe-Laying Worker [200 h] |
| HFR1-05-9610 | Backfilling | 2026-06-21 → 2026-03-15 A (-98d) | 2026-06-28 → 2026-03-21 A (-99d) | 0% → 100% | resources Excavator [70 h]; Water Tanker [70 h]; Truck [350 h]; Bobcat [280 h]; Labor [210 h]; Eq. Operator [770 h]; LABOR [12.12 h]; Insulation Tection [12.12 h]; Backfilling [478.06] → LABOR [12.12 h]; Insulation Tection [12.12 h]; Backfilling [478.06]; Excavator [70 h]; Water Tanker [70 h]; Truck [350 h]; Bobcat [280 h]; Labor [210 h]; Eq. Operator [770 h] |
| HFR1-05-9600 | Heavy duty cover installations | 2026-06-16 → 2026-04-18 A (-59d) | 2026-06-20 → 2026-05-13 A (-38d) | 0% → 100% | resources Labor [40 h]; Skilled Labor [80 h]; Carpenter [40 h]; LABOR [12.12 h]; Insulation Tection [12.12 h]; install (D6) 3000*3500mm galvanized steel heavy duty industrial isolated type roll up shutter door [1.33] → LABOR [12.12 h]; Insulation Tection [12.12 h]; install (D6) 3000*3500mm galvanized steel heavy duty industrial isolated type roll up shutter door [1.33]; Labor [40 h]; Skilled Labor [80 h]; Carpenter [40 h] |
| 9 | **Mosque -elec room-Toilets Works** | 2026-03-26 → 2026-03-22 (-4d) | 2026-07-27 → 2026-11-14 (+110d) |  |  |
| 12 | **Concrete works** | 2026-03-26 → 2026-03-22 (-4d) | 2026-05-05 → 2026-05-31 (+26d) |  |  |
| HFR1-05-9670 | Beam-from work | 2026-03-31 → 2026-03-22 A (-9d) | 2026-04-04 → 2026-03-26 A (-9d) | 0% → 100% | resources Labor [160 h]; Skilled Labor [80 h]; Carpenter [160 h]; LABOR [12.12 h]; Carpenter [12.12 h]; Grade beams [3.35] → LABOR [12.12 h]; Carpenter [12.12 h]; Grade beams [3.35]; Labor [160 h]; Skilled Labor [80 h]; Carpenter [160 h] |
| HFR1-05-9660 | Beam--steel rebar | 2026-03-26 → 2026-03-25 A (-1d) | 2026-03-30 → 2026-04-01 A (+2d) | 0% → 100% | resources Labor [160 h]; Skilled Labor [80 h]; Steel Fixer [160 h]; CONCRETE MIixer [6.06 h]; LABOR [12.12 h]; Carpenter [12.12 h]; Grade beams [3.35] → CONCRETE MIixer [6.06 h]; LABOR [12.12 h]; Carpenter [12.12 h]; Grade beams [3.35]; Labor [160 h]; Skilled Labor [80 h]; Steel Fixer [160 h] |
| HFR1-05-9690 | Beam Concrete Pouring | 2026-04-06 → 2026-04-01 A (-5d) | 2026-04-08 → 2026-04-04 A (-4d) | 0% → 100% | resources Labor [120 h]; Skilled Labor [90 h]; Mason [120 h]; CONCRETE MIixer [6.06 h]; LABOR [12.12 h]; Grade beams [3] → CONCRETE MIixer [6.06 h]; LABOR [12.12 h]; Grade beams [3]; Labor [120 h]; Skilled Labor [90 h]; Mason [120 h] |
| HFR1-05-9680 | Beam-Inspection | 2026-04-05 → 2026-04-02 A (-3d) | 2026-04-05 A | 0% → 100% | resources Skilled Labor [20 h]; LABOR [12.12 h]; Grade beams [5.64] → LABOR [12.12 h]; Grade beams [5.64]; Skilled Labor [20 h] |
| HFR1-05-9700 | Beam-Curing | 2026-04-09 → 2026-04-04 A (-5d) | 2026-04-12 → 2026-04-05 A (-7d) | 0% → 100% | resources Labor [60 h]; LABOR [12.12 h]; Grade beams [4] → LABOR [12.12 h]; Grade beams [4]; Labor [60 h] |

| ID | Task | Start | Finish | Complete | Other |
| --- | --- | --- | --- | --- | --- |
| HFR1-05-9720 | Concrete works for slab -from work | 2026-04-19 → 2026-04-15 A (-4d) | 2026-04-22 → 2026-05-25 A (+33d) | 0% → 100% | resources Labor [160 h]; Skilled Labor [80 h]; Carpenter [160 h]; LABOR [12.12 h]; Carpenter [12.12 h]; Roof Slab [3] → LABOR [12.12 h]; Carpenter [12.12 h]; Roof Slab [3]; Labor [160 h]; Skilled Labor [80 h]; Carpenter [160 h] |
| HFR1-05-9710 | Concrete works for slab -steel rebar | 2026-04-13 → 2026-04-16 A (+3d) | 2026-04-18 → 2026-05-25 A (+37d) | 0% → 100% | resources Labor [200 h]; Skilled Labor [100 h]; Steel Fixer [200 h]; LABOR [12.12 h]; Steel Fixer [30.3 h]; Roof Slab [3] → LABOR [12.12 h]; Steel Fixer [30.3 h]; Roof Slab [3]; Labor [200 h]; Skilled Labor [100 h]; Steel Fixer [200 h] |
| HFR1-05-9730 | Slabs Inspection | 2026-04-23 → 2026-04-18 A (-5d) | 2026-04-25 → 2026-05-25 A (+30d) | 0% → 100% | resources Skilled Labor [40 h]; LABOR [12.12 h]; Roof Slab [3] → LABOR [12.12 h]; Roof Slab [3]; Skilled Labor [40 h] |
| HFR1-05-9750 | Slabs Curing | 2026-04-28 → 2026-05-21 A (+23d) | 2026-04-30 → 2026-05-25 A (+25d) | 0% → 100% | resources Labor [60 h]; LABOR [12.12 h]; Roof Slab [3] → LABOR [12.12 h]; Roof Slab [3]; Labor [60 h] |
| HFR1-05-9740 | Slabs Concrete Pouring | 2026-04-26 → 2026-05-23 A (+27d) | 2026-04-27 → 2026-05-25 A (+28d) | 0% → 100% | resources Labor [80 h]; Skilled Labor [60 h]; Mason [80 h]; LABOR [12.12 h]; Roof Slab [3] → LABOR [12.12 h]; Roof Slab [3]; Labor [80 h]; Skilled Labor [60 h]; Mason [80 h] |
| HFR1-05-9760 | SLab removal of form works | 2026-05-02 → 2026-05-24 A (+22d) | 2026-05-05 → 2026-05-31 A (+26d) | 0% → 100% | resources Labor [280 h]; LABOR [14.54 h]; Carpenter [14.54 h]; Roof Slab [3] → LABOR [14.54 h]; Carpenter [14.54 h]; Roof Slab [3]; Labor [280 h] |
| 4 | **Architectural** | 2026-05-02 → 2026-04-21 (-11d) | 2026-07-27 → 2026-11-14 (+110d) |  |  |
| 1 | **Finishes** | 2026-05-02 → 2026-04-21 (-11d) | 2026-07-12 → 2026-10-15 (+95d) |  |  |
| HFR1-05-3370 | Block works -internal | 2026-05-02 → 2026-04-21 A (-11d) | 2026-05-09 → 2026-05-25 A (+16d) | 0% → 100% | resources Labor [140 h]; Skilled Labor [70 h]; Mason [280 h]; LABOR [7.27 h]; Mason [18.18 h]; at internal walls (100mm thick) [104.44] → LABOR [7.27 h]; Mason [18.18 h]; at internal walls (100mm thick) [104.44]; Labor [140 h]; Skilled Labor [70 h]; Mason [280 h] |
| HFR1-05-3380 | Fire rated blocks for elec rooms | 2026-05-02 → 2026-04-30 A (-2d) | 2026-05-09 → 2026-05-23 A (+14d) | 0% → 100% | resources Labor [140 h]; Skilled Labor [140 h]; LABOR [12.12 h]; Mason [30.3 h]; at electrical room (200mm thick, 2 hr fire rated) [42.53] → LABOR [12.12 h]; Mason [30.3 h]; at electrical room (200mm thick, 2 hr fire rated) [42.53]; Labor [140 h]; Skilled Labor [140 h] |
| HFR1-05-3640 | Block works -External | 2026-06-02 → 2026-05-02 A (-31d) | 2026-06-07 → 2026-05-24 A (-14d) | 0% → 100% | resources Labor [100 h]; Skilled Labor [50 h]; Mason [200 h]; LABOR [12.12 h]; Mason [30.3 h]; at internal walls (100mm thick) [64.13] → LABOR [12.12 h]; Mason [30.3 h]; at internal walls (100mm thick) [64.13]; Labor [100 h]; Skilled Labor [50 h]; Mason [200 h] |
| HFR1-05-4080 | Roof drains | 2026-07-04 → 2026-06-01 A (-33d) | 2026-07-08 → 2026-06-22 A (-16d) | 0% → 100% | resources Labor [100 h]; Skilled Labor [100 h]; Plumber [100 h]; LABOR [12.12 h]; plumber [12.12 h]; Supply, installation , testing & commissioning of condensate drain piping, complete as per drawings, specifications and method of measurement. [18.67] → LABOR [12.12 h]; plumber [12.12 h]; Supply, installation , testing & commissioning of condensate drain piping, complete as per drawings, specifications and method of measurement. [18.67]; Labor [100 h]; Skilled Labor [100 h]; Plumber [100 h] |
| HFR1-05-3440 | External plaster | 2026-05-10 → 2026-06-09 A (+30d) | 2026-05-17 → 2026-06-29 A (+43d) | 0% → 100% | resources Labor [140 h]; Skilled Labor [70 h]; Mason [280 h]; LABOR [12.12 h]; mason plaster [12.12 h]; Supply and install internal plastering to walls and columns min. 15mm thick with cement mortar of specified grade including galvanized mesh, corner beads, angle beads, CE bonds to rough and smooth plaster complete the work as per drawing & specification. [290] → LABOR [12.12 h]; mason plaster [12.12 h]; Supply and install internal plastering to walls and columns min. 15mm thick with cement mortar of specified grade including galvanized mesh, corner beads, angle beads, CE bonds to rough and smooth plaster complete the work as per drawing & specification. [290]; Labor [140 h]; Skilled Labor [70 h]; Mason [280 h] |
| HFR1-05-3760 | Plaster Application (Scratch + Brown + Final) | 2026-06-14 → 2026-06-21 A (+7d) | 2026-06-18 → 2026-06-30 A (+12d) | 0% → 100% | resources Labor [100 h]; Skilled Labor [100 h]; Mason [200 h]; LABOR [4.85 h]; Supply and install external plastering to external walls min. 15mm thick with cement mortar of specified grade including galvanized mesh, corner beads, angle beads, CE bonds to rough and smooth plaster complete the work as per drawing & specification. [93.33] → LABOR [4.85 h]; Supply and install external plastering to external walls min. 15mm thick with cement mortar of specified grade including galvanized mesh, corner beads, angle beads, CE bonds to rough and smooth plaster complete the work as per drawing & specification. [93.33]; Labor [100 h]; Skilled Labor [100 h]; Mason [200 h] |
| HFR1-05-3710 | Plaster FIRST Fix -dotted and spalsh coats | 2026-06-08 → 2026-06-28 A (+20d) | 2026-06-13 → 2026-07-02 A (+19d) | 0% → 100% | resources Labor [100 h]; Electrician [250 h]; LABOR [12.12 h]; Supply and install internal plastering to walls and columns min. 15mm thick with cement mortar of specified grade including galvanized mesh, corner beads, angle beads, CE bonds to rough and smooth plaster complete the work as per drawing & specification. [56] → LABOR [12.12 h]; Supply and install internal plastering to walls and columns min. 15mm thick with cement mortar of specified grade including galvanized mesh, corner beads, angle beads, CE bonds to rough and smooth plaster complete the work as per drawing & specification. [56]; Labor [100 h]; Electrician [250 h] |
| HFR1-05-3520 | foam concrete screed 50mm | 2026-05-24 → 2026-07-01 A (+38d) | 2026-06-01 → 2026-07-07 A (+36d) | 0% → 100% | resources Labor [100 h]; Skilled Labor [100 h]; Mason [200 h]; LABOR [12.12 h]; FINSHING Techtion [30.3 h]; Supply and cast in place foam concrete screed 50mm thk minimum laid to fall and cross fall [317.16] → LABOR [12.12 h]; FINSHING Techtion [30.3 h]; Supply and cast in place foam concrete screed 50mm thk minimum laid to fall and cross fall [317.16]; Labor [100 h]; Skilled Labor [100 h]; Mason [200 h] |
| HFR1-05-4000 | Paint Primer + Putty + Final Coat INSIDE | 2026-06-25 → 2026-07-08 A (+13d) | 2026-06-30 → 2026-10-04 (+96d) | 0% → 95% | resources Labor [100 h]; Skilled Labor [100 h]; Mason [100 h]; LABOR [12.12 h]; Provide and apply 2 coats of bitumen waterproofing paint on concrete surface in contact with soil. [105.23] → LABOR [12.12 h]; Provide and apply 2 coats of bitumen waterproofing paint on concrete surface in contact with soil. [105.23]; Labor [100 h]; Skilled Labor [100 h]; Mason [100 h] |
| HFR1-05-4010 | Internal Paint Touch-up & Inspection INSIDE | 2026-06-25 → 2026-07-08 A (+13d) | 2026-06-30 → 2026-10-04 (+96d) | 0% → 95% | resources Labor [100 h]; Skilled Labor [100 h]; Mason [100 h]; LABOR [4.85 h]; Supply and install 2 coats of acrylic paint at external walls and parapet including one coat of primer and two coats of putty to give smooth Surface as a base for paint including fiberglass tape to joints and all other accessories as per Modon specificati [93.33] → LABOR [4.85 h]; Supply and install 2 coats of acrylic paint at external walls and parapet including one coat of primer and two coats of putty to give smooth Surface as a base for paint including fiberglass tape to joints and all other accessories as per Modon specificati [93.33]; Labor [100 h]; Skilled Labor [100 h]; Mason [100 h] |
| HFR1-05-3890 | APP modified bituminous membrane | 2026-06-20 → 2026-07-09 A (+19d) | 2026-06-24 → 2026-09-01 A (+69d) | 0% → 100% | resources Labor [100 h]; LABOR [12.12 h]; Insulation Tection [12.12 h]; Supply and install 4mm thick APP modified bituminous membrane - single layer [1050] → LABOR [12.12 h]; Insulation Tection [12.12 h]; Supply and install 4mm thick APP modified bituminous membrane - single layer [1050]; Labor [100 h] |
| HFR1-05-3900 | External Paint Surface Preparation | 2026-06-20 → 2026-07-09 A (+19d) | 2026-06-24 → 2026-09-28 (+96d) | 0% → 95% | resources Labor [100 h]; Skilled Labor [100 h]; Mason [100 h]; LABOR [9.69 h]; Supply and apply epoxy paint to concrete surface in the factory area as shown in the drawings and specifications [67.2] → LABOR [9.69 h]; Supply and apply epoxy paint to concrete surface in the factory area as shown in the drawings and specifications [67.2]; Labor [100 h]; Skilled Labor [100 h]; Mason [100 h] |
| HFR1-05-4120 | External Paint Primer + Final Coat | 2026-07-01 → 2026-07-09 A (+8d) | 2026-07-06 → 2026-10-10 (+96d) | 0% → 90% |  |
| HFR1-05-4230 | External Paint Touch-up & Inspection | 2026-07-07 → 2026-07-11 A (+4d) | 2026-07-12 → 2026-10-15 (+95d) | 0% → 90% |  |
| HFR1-05-3880 | Waterproofing for wet areas | 2026-06-20 → 2026-07-19 A (+29d) | 2026-06-28 → 2026-08-12 A (+45d) | 0% → 100% | resources Labor [160 h]; LABOR [4.85 h]; Insulation Tection [4.85 h]; liquid applied waterproofing membrane [39.49] → LABOR [4.85 h]; Insulation Tection [4.85 h]; liquid applied waterproofing membrane [39.49]; Labor [160 h] |
| HFR1-05-4070 | Ceramic walls for toilets | 2026-06-30 → 2026-07-19 A (+19d) | 2026-07-05 → 2026-08-09 A (+35d) | 0% → 100% | resources Labor [100 h]; Skilled Labor [100 h]; Mason [100 h]; Plumber [100 h]; LABOR [12.12 h]; Supply and install 300*300mm glazed ceramic wall tiles on cement mortar and including rough and smooth plaster, galvanized mesh, corner beads, angle beads, CE bonds (For Toilets) [58.85] → LABOR [12.12 h]; Supply and install 300*300mm glazed ceramic wall tiles on cement mortar and including rough and smooth plaster, galvanized mesh, corner beads, angle beads, CE bonds (For Toilets) [58.85]; Labor [100 h]; Skilled Labor [100 h]; Mason [100 h]; Plumber [100 h] |
| HFR1-05-4160 | Ceramic tiles for toilets | 2026-07-06 → 2026-07-20 A (+14d) | 2026-07-11 → 2026-08-13 A (+33d) | 0% → 100% |  |
| HFR1-05-4180 | geotextile sheets | 2026-07-06 → 2026-07-26 A (+20d) | 2026-07-11 → 2026-09-08 A (+59d) | 0% → 100% |  |
| HFR1-05-3860 | external Paint Surface Preparation INSIDE | 2026-06-20 → 2026-07-28 A (+38d) | 2026-06-24 → 2026-09-28 (+96d) | 0% → 95% | resources Labor [100 h]; Skilled Labor [100 h]; Mason [200 h]; LABOR [12.12 h]; Painter [24.24 h]; Supply and apply epoxy paint to concrete surface in the factory area as shown in the drawings and specifications [79.2] → LABOR [12.12 h]; Painter [24.24 h]; Supply and apply epoxy paint to concrete surface in the factory area as shown in the drawings and specifications [79.2]; Labor [100 h]; Skilled Labor [100 h]; Mason [200 h] |
| HFR1-05-3870 | Gypsum Sanding & Final Inspection | 2026-06-20 → 2026-08-05 A (+46d) | 2026-06-28 → 2026-08-23 A (+56d) | 0% → 100% | resources Labor [160 h]; Skilled Labor [160 h]; LABOR [12.12 h]; FINSHING Techtion [30.3 h]; Supply and install 12.5mm thk, moisture resistant gypsum board suspended ceiling including suspension system, paints as required specification and material as approved by the Client including frames supports, access openings and all other accessories to [12.39] → LABOR [12.12 h]; FINSHING Techtion [30.3 h]; Supply and install 12.5mm thk, moisture resistant gypsum board suspended ceiling including suspension system, paints as required specification and material as approved by the Client including frames supports, access openings and all other accessories to [12.39]; Labor [160 h]; Skilled Labor [160 h] |
| HFR1-05-4130 | Gypsum Framing Installation For mospue and toilets | 2026-07-01 → 2026-08-05 A (+35d) | 2026-07-06 → 2026-08-17 A (+42d) | 0% → 100% |  |
| HFR1-05-3980 | aluminum framed double glazed windows | 2026-06-25 → 2026-08-08 A (+44d) | 2026-06-30 → 2026-08-24 A (+55d) | 0% → 100% | resources Labor [100 h]; Skilled Labor [100 h]; LABOR [12.12 h]; Doors installer [30.3 h]; Supply and install aluminium cladding where material is approved by the Client, including sub-frames, all accessories and fittings, and whatever needed to do perfect work all as per drawing and specification. [26.54] → LABOR [12.12 h]; Doors installer [30.3 h]; Supply and install aluminium cladding where material is approved by the Client, including sub-frames, all accessories and fittings, and whatever needed to do perfect work all as per drawing and specification. [26.54]; Labor [100 h]; Skilled Labor [100 h] |
| HFR1-05-3950 | 300 micron polyethylene sheet | 2026-06-29 → 2026-08-09 A (+41d) | 2026-07-02 → 2026-08-24 A (+53d) | 0% → 100% | resources Labor [80 h]; Skilled Labor [80 h]; Mason [160 h]; LABOR [12.12 h]; Insulation Tection [12.12 h]; Polyisocynurate sandwich panel (100 mm) for external walls and roof and rock wool for internal wall fire rated for 1 Hour [0.01] → LABOR [12.12 h]; Insulation Tection [12.12 h]; Polyisocynurate sandwich panel (100 mm) for external walls and roof and rock wool for internal wall fire rated for 1 Hour [0.01]; Labor [80 h]; Skilled Labor [80 h]; Mason [160 h] |
| HFR1-05-4240 | Gypsum Boards Fixing + Joint Treatment | 2026-07-07 → 2026-08-10 A (+34d) | 2026-07-12 → 2026-08-20 A (+39d) | 0% → 100% |  |
| HFR1-05-3490 | granite Insulation (extruded polystyrene) | 2026-05-18 → 2026-08-15 A (+89d) | 2026-05-23 → 2026-09-21 (+121d) | 0% → 90% | resources Labor [100 h]; Skilled Labor [100 h]; LABOR [12.12 h]; Insulation Tection [12.12 h]; Supply and install granite tiles including mortar and sand fill and all the required accessories to complete the works as per drawings and specifications with approved quality by the Client [4.88] → LABOR [12.12 h]; Insulation Tection [12.12 h]; Supply and install granite tiles including mortar and sand fill and all the required accessories to complete the works as per drawings and specifications with approved quality by the Client [4.88]; Labor [100 h]; Skilled Labor [100 h] |
| HFR1-05-4220 | install fire rated door+ with hardware set type HW2 paint finish | 2026-07-07 → 2026-08-23 A (+47d) | 2026-07-12 → 2026-08-26 A (+45d) | 0% → 100% |  |
| HFR1-05-3970 | polyisocynurate cover board | 2026-06-29 → 2026-08-25 A (+57d) | 2026-07-04 → 2026-09-28 (+86d) | 0% → 90% | resources Labor [100 h]; Skilled Labor [100 h]; LABOR [12.12 h]; Insulation Tection [12.12 h]; Polyisocynurate sandwich panel (100 mm) for external walls and roof and rock wool for internal wall fire rated for 1 Hour [0.01] → LABOR [12.12 h]; Insulation Tection [12.12 h]; Polyisocynurate sandwich panel (100 mm) for external walls and roof and rock wool for internal wall fire rated for 1 Hour [0.01]; Labor [100 h]; Skilled Labor [100 h] |
| HFR1-05-4090 | 50mm thk loose gravel toppings | 2026-07-04 → 2026-09-10 A (+68d) | 2026-07-07 → 2026-09-27 (+82d) | 0% → 40% | resources Excavator [40 h]; Loader [40 h]; Water Tanker [40 h]; Grider [40 h]; Truck [160 h]; Labor [80 h]; Skilled Labor [80 h]; Eq. Operator [320 h]; LABOR [12.12 h]; Insulation Tection [12.12 h]; Supply and install 50mm thk loose gravel toppings [66.67] → Labor [80 h]; Skilled Labor [80 h]; Eq. Operator [320 h]; LABOR [12.12 h]; Insulation Tection [12.12 h]; Supply and install 50mm thk loose gravel toppings [66.67]; Excavator [40 h]; Loader [40 h]; Water Tanker [40 h]; Grider [40 h]; Truck [160 h] |
| HFR1-05-4020 | Supply and install carpet rolls | 2026-06-25 → 2026-09-22 (+89d) | 2026-06-30 → 2026-09-28 (+90d) |  | resources Labor [100 h]; Skilled Labor [100 h]; Mason [100 h]; LABOR [12.12 h]; Insulation Tection [12.12 h]; Supply and install carpet rolls to prayer room including all the accessories to complete the work with approved quality by the Client as shown in the drawings and specifications [68.84] → LABOR [12.12 h]; Insulation Tection [12.12 h]; Supply and install carpet rolls to prayer room including all the accessories to complete the work with approved quality by the Client as shown in the drawings and specifications [68.84]; Labor [100 h]; Skilled Labor [100 h]; Mason [100 h] |
| 2 | **Final installation works** | 2026-06-08 → 2026-07-08 (+30d) | 2026-07-27 → 2026-11-14 (+110d) |  |  |
| HFR1-05-3720 | AAC panels for internal wall including alignment and joint filling | 2026-06-08 → 2026-07-08 A (+30d) | 2026-06-13 → 2026-08-01 A (+49d) | 0% → 100% |  |
| HFR1-05-4170 | AAC panels for roof parapet including alignment and joint filling | 2026-07-09 → 2026-07-12 A (+3d) | 2026-07-14 → 2026-08-12 A (+29d) | 0% → 100% |  |
| HFR1-05-4340 | aluminum framed double glazed windows | 2026-07-18 → 2026-08-06 A (+19d) | 2026-07-22 → 2026-08-27 A (+36d) | 0% → 100% |  |
| HFR1-05-4270 | extruded aluminum flashing | 2026-07-15 → 2026-08-09 A (+25d) | 2026-07-20 → 2026-08-27 A (+38d) | 0% → 100% |  |
| HFR1-05-4350 | phenolic partitions with doors for toilets | 2026-07-18 → 2026-08-19 A (+32d) | 2026-07-22 → 2026-08-29 A (+38d) | 0% → 100% |  |
| HFR1-05-4290 | DOOrs installations with hardware set type HW1 paint finish | 2026-07-13 → 2026-08-20 A (+38d) | 2026-07-16 → 2026-08-29 A (+44d) | 0% → 100% |  |
| HFR1-05-4360 | Wood skirting works | 2026-07-19 → 2026-08-20 A (+32d) | 2026-07-27 → 2026-10-29 (+94d) | 0% → 95% |  |
| HFR1-05-4280 | Toilet accessiors installations | 2026-07-12 → 2026-09-01 A (+51d) | 2026-07-16 → 2026-09-08 A (+54d) | 0% → 100% |  |
| HFR1-05-3770 | External Metal stairs | 2026-06-14 → 2026-09-02 A (+80d) | 2026-06-16 → 2026-09-07 A (+83d) | 0% → 100% |  |
| HFR1-05-4250 | signs for toilets & prayer room | 2026-07-07 → 2026-09-12 A (+67d) | 2026-07-12 → 2026-11-14 (+125d) | 0% → 50% |  |
| HFR1-05-4300 | Mosque Arch Carpet | 2026-07-13 → 2026-10-05 (+84d) | 2026-07-18 → 2026-10-10 (+84d) |  |  |
| 1 | **Electromecanic** | 2026-06-17 → 2026-05-09 (-39d) | 2026-06-29 → 2026-10-05 (+98d) |  |  |
| HFR1-05-3830 | Exasut fans | 2026-06-17 → 2026-05-09 A (-39d) | 2026-06-23 → 2026-09-29 (+98d) | 0% → 80% |  |
| HFR1-05-3930 | Plumping fixtures | 2026-06-24 → 2026-05-09 A (-46d) | 2026-06-29 → 2026-10-05 (+98d) | 0% → 80% |  |
| 2 | **GRB Tank** | 2026-03-17 → 2026-03-26 (+9d) | 2026-08-12 → 2026-06-15 (-58d) |  |  |
| HFR1-05-1810 | Tank Foundation Rebar Fixing | 2026-03-17 → 2026-03-26 A (+9d) | 2026-03-29 → 2026-03-31 A (+2d) | 0% → 100% |  |
| HFR1-05-1820 | Tank Foundation Formwork | 2026-03-30 → 2026-03-26 A (-4d) | 2026-04-07 → 2026-03-31 A (-7d) | 0% → 100% |  |
| HFR1-05-1830 | Tank Foundation Inspection | 2026-04-08 → 2026-03-28 A (-11d) | 2026-04-12 → 2026-03-31 A (-12d) | 0% → 100% |  |
| HFR1-05-1920 | Tank Slab Inspection | 2026-07-12 → 2026-03-28 A (-106d) | 2026-07-15 → 2026-04-04 A (-102d) | 0% → 100% |  |
| HFR1-05-1840 | Tank Foundation Concrete Pouring | 2026-04-13 → 2026-03-31 A (-13d) | 2026-04-23 → 2026-03-31 A (-23d) | 0% → 100% |  |
| HFR1-05-1870 | Tank Walls Formwork | 2026-05-18 → 2026-03-31 A (-48d) | 2026-06-01 → 2026-04-01 A (-61d) | 0% → 100% |  |
| HFR1-05-1850 | Tank Foundation Curing | 2026-04-25 → 2026-04-01 A (-24d) | 2026-05-05 → 2026-04-01 A (-34d) | 0% → 100% |  |
| HFR1-05-1880 | Tank Walls Inspection | 2026-06-02 → 2026-04-01 A (-62d) | 2026-06-06 → 2026-04-02 A (-65d) | 0% → 100% |  |
| HFR1-05-1860 | Tank Walls Rebar Fixing | 2026-05-06 → 2026-04-02 A (-34d) | 2026-05-17 → 2026-04-04 A (-43d) | 0% → 100% |  |
| HFR1-05-1890 | Tank Walls Concrete Pouring | 2026-06-07 → 2026-04-02 A (-66d) | 2026-06-14 → 2026-04-04 A (-71d) | 0% → 100% |  |
| HFR1-05-1910 | Tank Slab Formwork | 2026-07-06 → 2026-04-02 A (-95d) | 2026-07-11 → 2026-04-04 A (-98d) | 0% → 100% |  |
| HFR1-05-1930 | Tank Slab Concrete Pouring | 2026-07-23 → 2026-04-02 A (-112d) | 2026-07-30 → 2026-04-07 A (-114d) | 0% → 100% |  |
| HFR1-05-1940 | Tank Slab Curing | 2026-08-01 → 2026-04-02 A (-121d) | 2026-08-08 → 2026-04-08 A (-122d) | 0% → 100% |  |
| HFR1-05-1900 | Tank Slab Rebar Fixing | 2026-06-30 → 2026-04-04 A (-87d) | 2026-07-05 → 2026-04-06 A (-90d) | 0% → 100% |  |
| HFR1-05-1950 | Tank Installations with Connection | 2026-08-09 → 2026-04-28 A (-103d) | 2026-08-12 → 2026-06-15 A (-58d) | 0% → 100% |  |
| 4 | **Pump room** | 2026-04-08 → 2026-03-11 (-28d) | 2026-07-20 → 2026-09-27 (+69d) |  |  |
| 1 | **Civil works** | 2026-04-08 → 2026-03-11 (-28d) | 2026-06-15 → 2026-09-27 (+104d) |  |  |

| ID | Task | Start | Finish | Complete |
| --- | --- | --- | --- | --- |
| HFR1-05-3120 | Structural steel members and plates | 2026-04-27 → 2026-03-11 A (-47d) | 2026-05-03 → 2026-05-26 A (+23d) | 0% → 100% |
| HFR1-05-3000 | SOG (Pump Rooms) Formwork / Edge Shuttering | 2026-04-08 → 2026-03-14 A (-25d) | 2026-04-14 → 2026-04-12 A (-2d) | 0% → 100% |
| HFR1-05-3190 | Concrete works for steel fence | 2026-05-13 → 2026-04-01 A (-42d) | 2026-05-19 → 2026-04-06 A (-43d) | 0% → 100% |
| HFR1-05-3040 | SOG (Pump Rooms) Rebar Mesh & MEP Sleeves | 2026-04-15 → 2026-04-12 A (-3d) | 2026-04-21 → 2026-04-14 A (-7d) | 0% → 100% |
| HFR1-05-3080 | SOG (Pump Rooms) Inspection | 2026-04-22 → 2026-04-12 A (-10d) | 2026-04-22 → 2026-04-15 A (-7d) | 0% → 100% |
| HFR1-05-3090 | SOG (Pump Rooms) Concrete Pouring & Finishing | 2026-04-23 → 2026-04-12 A (-11d) | 2026-04-26 → 2026-04-15 A (-11d) | 0% → 100% |
| HFR1-05-3100 | SOG (Pump Rooms) Curing | 2026-04-27 → 2026-04-12 A (-15d) | 2026-04-29 → 2026-04-15 A (-14d) | 0% → 100% |
| HFR1-05-3270 | install galvanized steel fence | 2026-06-13 → 2026-04-14 A (-60d) | 2026-06-15 → 2026-09-27 (+104d) | 0% → 40% |
| HFR1-05-3200 | Structural steel members and plates Pump Shed | 2026-05-13 → 2026-05-05 A (-8d) | 2026-05-19 → 2026-06-01 A (+13d) | 0% → 100% |
| HFR1-05-3160 | Corrugated glavanized steel roofing sheet 0.7mm thick for pump shed | 2026-05-06 → 2026-06-02 A (+27d) | 2026-05-12 → 2026-06-06 A (+25d) | 0% → 100% |
| HFR1-05-3130 | Cold formed steel secondary members | 2026-05-04 → 2026-06-14 A (+41d) | 2026-05-05 → 2026-06-17 A (+43d) | 0% → 100% |
| HFR1-05-3240 | steel fence gate | 2026-06-02 → 2026-09-16 (+106d) | 2026-06-08 → 2026-09-22 (+106d) |  |
| 2 | **Electromecanic** | 2026-05-06 → 2026-03-31 (-36d) | 2026-07-20 → 2026-09-20 (+62d) |  |
| HFR1-05-3560 | Install HDPE PE100 PN16 Pipes & Gate valve | 2026-05-06 → 2026-03-31 A (-36d) | 2026-05-11 → 2026-05-04 A (-7d) | 0% → 100% |
| HFR1-05-3650 | concrete wall for KWHM for pump room with foundations | 2026-05-12 → 2026-04-08 A (-34d) | 2026-05-17 → 2026-05-12 A (-5d) | 0% → 100% |
| HFR1-05-3730 | pipework within pump shade | 2026-05-24 → 2026-04-27 A (-27d) | 2026-06-01 → 2026-08-30 A (+90d) | 0% → 100% |
| HFR1-05-3790 | Power and lighting first fix works -Conduit works | 2026-06-07 → 2026-04-29 A (-39d) | 2026-06-11 → 2026-08-29 A (+79d) | 0% → 100% |
| HFR1-05-4050 | Power panel ( all works | 2026-07-09 → 2026-04-30 A (-70d) | 2026-07-14 → 2026-09-14 A (+62d) | 0% → 100% |
| HFR1-05-3780 | Testing firefighting | 2026-06-02 → 2026-05-18 A (-15d) | 2026-06-06 → 2026-09-20 (+106d) | 0% → 90% |
| HFR1-05-4040 | Motor circuit protector | 2026-07-04 → 2026-06-03 A (-31d) | 2026-07-08 → 2026-09-02 A (+56d) | 0% → 100% |
| HFR1-05-3660 | Fire Pump installations | 2026-05-18 → 2026-06-18 A (+31d) | 2026-05-23 → 2026-08-13 A (+82d) | 0% → 100% |
| HFR1-05-3910 | Wiring works | 2026-06-22 → 2026-06-29 A (+7d) | 2026-06-27 → 2026-09-12 A (+77d) | 0% → 100% |
| HFR1-05-3840 | Cable Tray | 2026-06-16 → 2026-06-30 A (+14d) | 2026-06-21 → 2026-08-25 A (+65d) | 0% → 100% |
| HFR1-05-4310 | switches installations | 2026-07-15 → 2026-08-29 A (+45d) | 2026-07-20 → 2026-09-10 A (+52d) | 0% → 100% |
| HFR1-05-4030 | Install lighting fixtures | 2026-06-28 → 2026-08-31 A (+64d) | 2026-07-02 → 2026-09-01 A (+61d) | 0% → 100% |
| 7 | **External WORKS-MEP** | 2026-03-01 → 2026-02-24 (-5d) | 2026-06-02 → 2026-10-03 (+123d) |  |
| 8 | **Plumping-FIRE-HVAC** | 2026-03-01 → 2026-02-24 (-5d) | 2026-04-21 → 2026-06-02 (+42d) |  |
| HFR1-05-3070 | Water SupplyPreparation (Excxavation-Pipes-backfilling | 2026-03-08 → 2026-02-24 A (-12d) | 2026-03-14 → 2026-03-05 A (-9d) | 0% → 100% |
| HFR1-05-3320 | Drainage Installation (Excxavation +Pipes + backfilling +House Connections) | 2026-04-01 → 2026-02-26 A (-34d) | 2026-04-07 → 2026-04-13 A (+6d) | 0% → 100% |
| HFR1-05-3060 | External FF Network Preparation (Excavation +Pipes + Valves + Hydrants | 2026-03-01 → 2026-02-28 A (-1d) | 2026-03-07 → 2026-03-04 A (-3d) | 0% → 100% |
| HFR1-05-3330 | Manholes works for Drainage works Excxavation -pipes-backfilling | 2026-04-08 → 2026-03-04 A (-35d) | 2026-04-12 → 2026-04-15 A (+3d) | 0% → 100% |
| HFR1-05-3140 | External FF Network Testing & Final Inspection | 2026-03-15 → 2026-04-01 A (+17d) | 2026-03-24 → 2026-06-01 A (+69d) | 0% → 100% |
| HFR1-05-3410 | Drainage Testing (Air/Water Test) & Final Inspection | 2026-04-13 → 2026-04-01 A (-12d) | 2026-04-16 → 2026-05-23 A (+37d) | 0% → 100% |
| HFR1-05-3150 | Water Supply Testing (Pressure Test) & Final Inspection | 2026-03-25 → 2026-04-12 A (+18d) | 2026-03-31 → 2026-06-02 A (+63d) | 0% → 100% |
| HFR1-05-3450 | GRP pipe service inspection chamber (Excavation+installation +backfilling ) | 2026-04-18 → 2026-04-13 A (-5d) | 2026-04-21 → 2026-05-31 A (+40d) | 0% → 100% |
| 1 | **Electric** | 2026-03-15 → 2026-02-24 (-19d) | 2026-06-02 → 2026-10-03 (+123d) |  |
| HFR1-05-3620 | Grounding System Preparation (Survey + Marking + Excavation) | 2026-04-15 → 2026-02-24 A (-50d) | 2026-04-18 → 2026-03-01 A (-48d) | 0% → 100% |
| HFR1-05-3800 | Grounding SystemInstallation (Earth Rods + Cables + Earth Pits) | 2026-05-03 → 2026-02-24 A (-68d) | 2026-05-05 → 2026-09-01 A (+119d) | 0% → 100% |
| HFR1-05-3740 | Grounding SystemTesting (Earth Resistance Test) & Final Inspection | 2026-04-20 → 2026-03-02 A (-49d) | 2026-05-02 → 2026-08-09 A (+99d) | 0% → 100% |
| HFR1-05-3530 | Manholes works for electric works with pipes -Excxavation -pipes-backfilling | 2026-04-05 → 2026-03-19 A (-17d) | 2026-04-07 → 2026-05-24 A (+47d) | 0% → 100% |
| HFR1-05-3940 | GROUNDING SYSTEM AT SITE (Pump Room | 2026-05-11 → 2026-04-01 A (-40d) | 2026-05-14 → 2026-04-05 A (-39d) | 0% → 100% |
| HFR1-05-3600 | Street Lighting Installation (Cables + Poles + Fixtures) | 2026-04-12 A | 2026-04-14 → 2026-09-05 A (+144d) | 0% → 100% |
| HFR1-05-3510 | Street Lighting Preparation (Trenches + Marking + Ducts) | 2026-03-30 → 2026-04-14 A (+15d) | 2026-04-04 → 2026-05-17 A (+43d) | 0% → 100% |
| HFR1-05-3590 | Road crossing duct bank for street lighting cables (pipes | 2026-04-08 → 2026-04-20 A (+12d) | 2026-04-11 → 2026-06-20 A (+70d) | 0% → 100% |
| HFR1-05-4190 | GROUNDING SYSTEM AT SITE (Street lighting Poles | 2026-05-21 → 2026-04-21 A (-30d) | 2026-05-24 → 2026-07-01 A (+38d) | 0% → 100% |
| HFR1-05-3680 | KWHM for street lighting feeder pillar (foundations+KWH Meter & Electrical Works | 2026-04-15 → 2026-04-25 A (+10d) | 2026-04-19 → 2026-06-25 A (+67d) | 0% → 100% |
| HFR1-05-4150 | Street Lighting Testing (Megger + Lighting Test) & Final Inspection | 2026-05-19 → 2026-04-27 A (-22d) | 2026-05-20 → 2026-10-03 (+136d) | 0% → 90% |
| HFR1-05-3470 | Security Fence for elec substation | 2026-03-24 → 2026-05-06 A (+43d) | 2026-03-29 → 2026-06-03 A (+66d) | 0% → 100% |
| HFR1-05-3420 | Concrete foundation for electrical substation | 2026-03-15 → 2026-05-11 A (+57d) | 2026-03-23 → 2026-06-11 A (+80d) | 0% → 100% |
| HFR1-05-3820 | GROUNDING SYSTEM AT SITE (Feeder pillars | 2026-05-06 → 2026-05-12 A (+6d) | 2026-05-10 → 2026-07-21 A (+72d) | 0% → 100% |
| HFR1-05-4110 | GROUNDING SYSTEM AT SITE (KWHM's | 2026-05-16 → 2026-05-14 A (-2d) | 2026-05-18 → 2026-07-23 A (+66d) | 0% → 100% |
| HFR1-05-4200 | Skylight fixtures installations | 2026-05-25 → 2026-07-21 A (+57d) | 2026-06-02 → 2026-08-10 A (+69d) | 0% → 100% |
| 5 | **External Works landscape** | 2026-07-02 → 2026-03-04 (-120d) | 2026-09-12 → 2026-12-15 (+94d) |  |
| HFR1-05-3480 | ROAD Excavation and casting lean concrete base for Precast Concrete Curbstone | 2026-07-02 → 2026-03-04 A (-120d) | 2026-07-08 → 2026-08-09 A (+32d) | 0% → 100% |
| HFR1-05-3580 | ROAD Backfilling, compaction, and acceptance for precast curbstone | 2026-07-16 → 2026-03-11 A (-127d) | 2026-07-22 → 2026-07-01 A (-21d) | 0% → 100% |
| HFR1-05-3810 | ROAD Watering and compaction for Base Course Layer | 2026-08-06 → 2026-05-31 A (-67d) | 2026-08-12 → 2026-08-01 A (-11d) | 0% → 100% |
| HFR1-05-3690 | ROAD execute base course layer -Leveling and shaping | 2026-07-30 → 2026-06-01 A (-59d) | 2026-08-05 → 2026-08-15 A (+10d) | 0% → 100% |
| HFR1-05-3610 | ROAD execute subgrade layer including Watering and compaction | 2026-07-23 → 2026-06-13 A (-40d) | 2026-07-29 → 2026-11-09 (+103d) | 0% → 95% |
| HFR1-05-3540 | ROAD subgrade material up to the full width of the road | 2026-07-09 → 2026-07-07 A (-2d) | 2026-07-15 → 2026-08-30 A (+46d) | 0% → 100% |
| HFR1-05-4560 | Concrete Works external steps | 2026-09-05 → 2026-07-21 A (-46d) | 2026-09-10 → 2026-12-14 (+95d) | 0% → 90% |
| HFR1-05-4470 | ROAD Subbase install precast concrete curbstone | 2026-08-31 → 2026-07-26 A (-36d) | 2026-09-05 → 2026-08-29 A (-7d) | 0% → 100% |
| HFR1-05-4460 | ROAD lean concrete base For concrete curbstone | 2026-08-31 → 2026-07-28 A (-34d) | 2026-09-05 → 2026-08-12 A (-24d) | 0% → 100% |
| HFR1-05-4550 | ROAD subgrade laye Interlocking Paving Blocks | 2026-09-06 → 2026-08-06 A (-31d) | 2026-09-12 → 2026-12-15 (+94d) | 0% → 90% |
| HFR1-05-4500 | ROAD InterlockWalkway -pedestrian interlocking block pavers | 2026-08-31 → 2026-08-12 A (-19d) | 2026-09-12 → 2026-12-15 (+94d) | 0% → 90% |
| HFR1-05-4480 | ROAD interlocking block pavers | 2026-09-02 → 2026-08-25 A (-8d) | 2026-09-12 → 2026-12-15 (+94d) | 0% → 95% |
| HFR1-05-4510 | ROAD Interlock install concrete parking bumpers | 2026-09-06 → 2026-08-25 A (-12d) | 2026-09-10 → 2026-12-14 (+95d) | 0% → 90% |
| HFR1-05-4570 | Outdoor Granite works | 2026-09-05 → 2026-09-01 A (-4d) | 2026-09-10 → 2026-12-14 (+95d) | 0% → 70% |
| HFR1-05-3990 | ROAD Application of prime coat | 2026-08-06 → 2026-09-06 A (+31d) | 2026-08-12 → 2026-11-21 (+101d) | 0% → 60% |
| HFR1-05-4140 | ROAD execute bituminous base course asphalt layer | 2026-08-13 → 2026-09-07 A (+25d) | 2026-08-18 → 2026-11-26 (+100d) | 0% → 80% |
| HFR1-05-4440 | ROAD Bituminous Wearing Course Asphalt | 2026-08-31 → 2026-09-07 A (+7d) | 2026-09-05 → 2026-12-14 (+100d) | 0% → 80% |

| ID | Task | Start | Finish | Complete |
| --- | --- | --- | --- | --- |
| HFR1-05-4320 | ROAD Laying bituminous second asphalt base layer | 2026-08-19 → 2026-09-10 A (+22d) | 2026-08-24 → 2026-12-02 (+100d) | 0% → 40% |
| HFR1-05-4530 | ROAD single I.P.E. post Road signs-Asphalt install traffic signs | 2026-09-05 → 2026-09-10 A (+5d) | 2026-09-10 → 2026-12-14 (+95d) | 0% → 50% |
| HFR1-05-4390 | ROADTack Coat (RC2) | 2026-08-25 → 2026-12-03 (+100d) | 2026-08-30 → 2026-12-08 (+100d) |  |
| HFR1-05-4540 | ROAD Road Marking thermoplastic traffic lines | 2026-09-05 → 2026-12-08 (+94d) | 2026-09-10 → 2026-12-14 (+95d) |  |
| HFR1-05-4520 | ROAD Asphalt Reflective Road Markings | 2026-09-06 → 2026-12-09 (+94d) | 2026-09-10 → 2026-12-14 (+95d) |  |
| 10 | **Testing and comissiong** | 2026-04-01 → 2026-04-26 (+25d) | 2026-09-26 → 2026-12-28 (+93d) |  |
| 1 | **Testing and comissiong** | 2026-04-01 → 2026-04-26 (+25d) | 2026-09-26 → 2026-12-28 (+93d) |  |
| HFR1-05-4600 | Test For Water Utilities | 2026-04-01 → 2026-04-26 A (+25d) | 2026-04-14 → 2026-09-30 (+169d) | 0% → 95% |
| HFR1-05-4430 | Test For Pump Room | 2026-07-21 → 2026-06-14 A (-37d) | 2026-08-03 → 2026-11-03 (+92d) | 0% → 85% |
| HFR1-05-4630 | Test For Electrical Works | 2026-09-03 → 2026-06-22 A (-73d) | 2026-09-16 → 2026-11-21 (+66d) | 0% → 75% |
| HFR1-05-4420 | Test For Roads | 2026-09-13 → 2026-06-23 A (-82d) | 2026-09-26 → 2026-12-28 (+93d) | 0% → 80% |
| 11 | **Close Out** | 2026-09-17 → 2026-11-22 (+66d) | 2026-09-26 → 2026-11-29 (+64d) |  |
| HFR1-05-4680 | As-Built Documentation Final Submission | 2026-09-17 → 2026-11-22 (+66d) | 2026-09-24 → 2026-11-28 (+65d) |  |
| HFR1-05-4690 | O&M Manuals and Warranties Final Submission | 2026-09-17 → 2026-11-22 (+66d) | 2026-09-22 → 2026-11-26 (+65d) |  |
| HFR1-05-4700 | Final Handover MODON Inspection & Approval | 2026-09-17 → 2026-11-22 (+66d) | 2026-09-26 → 2026-11-29 (+64d) |  |

## Version 3 (data date 2026-09-22, saved 2026-09-22, file HFR1-05-03.xml)

Last finish 2026-12-28 → 2026-11-07 (-51d). Complete tasks 816 → 854.

Changed:

| ID | Task | Start | Finish | Complete |
| --- | --- | --- | --- | --- |
| 1 | **Project Milestones** |  | 2026-12-28 → 2026-11-07 (-51d) |  |
| 2 | **Project milestones** |  | 2026-12-28 → 2026-11-07 (-51d) |  |
| HFR1-05-2985 | Project Finish | 2026-12-28 → 2026-11-07 (-51d) | 2026-12-28 → 2026-11-07 (-51d) |  |
| 1 | **Contratual milestones** |  | 2026-12-28 → 2026-11-07 (-51d) |  |
| HFR1-05-2990 | Completion of Engneering and Material | 2026-09-15 → 2026-07-20 A (-57d) | 2026-09-15 → 2026-07-20 A (-57d) | 0% → 100% |
| HFR1-05-4380 | Procurement Complete | 2026-09-15 → 2026-09-19 A (+4d) | 2026-09-15 → 2026-09-19 A (+4d) | 0% → 100% |
| HFR1-05-3390 | Main Buildings Structure Completed | 2026-09-20 → 2026-09-22 (+2d) | 2026-09-20 → 2026-09-22 (+2d) |  |
| HFR1-05-4620 | Main Buildings Architectural Completed | 2026-10-15 → 2026-10-10 (-5d) | 2026-10-15 → 2026-10-10 (-5d) |  |
| HFR1-05-4400 | Mosque Works Completed | 2026-11-14 → 2026-10-11 (-34d) | 2026-11-14 → 2026-10-11 (-34d) |  |
| HFR1-05-4590 | Site Works & External Networks Completed | 2026-12-15 → 2026-10-22 (-54d) | 2026-12-15 → 2026-10-22 (-54d) |  |
| HFR1-05-4650 | Main Buildings MEP Completed | 2026-12-02 → 2026-10-29 (-34d) | 2026-12-02 → 2026-10-29 (-34d) |  |
| HFR1-05-4660 | All Testing & Commissioning Completed | 2026-12-28 → 2026-10-29 (-60d) | 2026-12-28 → 2026-10-29 (-60d) |  |
| HFR1-05-4670 | Substantial Completion (Ready for Handing Over) | 2026-12-28 → 2026-11-07 (-51d) | 2026-12-28 → 2026-11-07 (-51d) |  |
| HFR1-05-4720 | Completion Milestone | 2026-12-28 → 2026-11-07 (-51d) | 2026-12-28 → 2026-11-07 (-51d) |  |
| 5 | **Procurement** |  | 2026-11-08 → 2026-09-17 (-52d) |  |
| 2 | **Short Lead Item** |  | 2026-11-08 → 2026-09-17 (-52d) |  |
| 1 | **Road Works - Civil** |  | 2026-11-02 → 2026-09-17 (-46d) |  |
| 4 | **Aggregate Base Course** |  | 2026-09-17 → 2026-09-16 (-1d) |  |
| HFR1-05-5570 | Material Delivery for Aggregate Base Course |  | 2026-09-17 → 2026-09-16 A (-1d) | 90% → 100% |
| 9 | **Pavement Markings** |  | 2026-11-02 → 2026-09-17 (-46d) |  |
| HFR1-05-9130 | Material Delivery for Pavement Markings |  | 2026-11-02 → 2026-09-17 A (-46d) | 80% → 100% |
| 7 | **Civil Works - Buildings** |  | 2026-11-08 → 2026-09-17 (-52d) |  |
| 13 | **Logo** |  | 2026-11-08 → 2026-09-17 (-52d) |  |
| HFR1-05-9390 | Material Delivery for Logo |  | 2026-11-08 → 2026-09-17 A (-52d) | 80% → 100% |
| 3 | **Construction phase** |  | 2026-12-15 → 2026-10-29 (-47d) |  |
| 12 | **Hunger -1** |  | 2026-11-28 → 2026-10-17 (-42d) |  |
| 4 | **Architectural** |  | 2026-10-20 → 2026-10-11 (-9d) |  |
| HFR1-05-2720 | Finishes floor Installation |  | 2026-09-22 → 2026-09-16 A (-6d) | 95% → 100% |
| HFR1-05-2630 | External Paint Primer + Final Coat |  | 2026-09-24 → 2026-10-01 (+7d) | 85% → 90% |
| HFR1-05-2730 | External Paint Touch-up & Inspection |  |  | 85% → 90% |
| HFR1-05-2690 | Cladding |  | 2026-10-01 → 2026-09-17 A (-14d) | 95% → 100% |
| HFR1-05-2640 | Epoxy Paint |  | 2026-10-04 → 2026-09-16 A (-18d) | 85% → 100% |
| HFR1-05-2600 | Paint Primer + Putty + Final Coat INSIDE |  | 2026-09-26 → 2026-10-03 (+7d) | 80% → 90% |
| HFR1-05-2820 | Specialites Fittings |  | 2026-10-20 → 2026-10-11 (-9d) | 95% → 90% |
| HFR1-05-2790 | Signage Layout & Marking Locations |  | 2026-10-15 → 2026-09-21 A (-24d) | 45% → 100% |
| 5 | **MEP WORKS** |  | 2026-11-28 → 2026-10-17 (-42d) |  |
| 1 | **Plumping-FIRE-HVAC** |  | 2026-11-28 → 2026-10-11 (-48d) |  |
| HFR1-05-2910 | Fire Fighting Testing (Hydrostatic Test) & Final Inspection |  | 2026-11-28 → 2026-10-11 (-48d) | 85% → 95% |
| HFR1-05-2900 | Testing plumping system & Final Inspection |  | 2026-11-18 → 2026-10-04 (-45d) |  |
| HFR1-05-2700 | Water sprinkles |  | 2026-09-26 → 2026-09-16 A (-10d) | 95% → 100% |
| 2 | **Electrical Works** |  | 2026-11-07 → 2026-10-17 (-21d) |  |
| HFR1-05-2070 | Power System and lighting and lightcurrent Testing (Continuity + Insulation) & Final Inspection |  | 2026-10-27 → 2026-10-11 (-16d) |  |
| HFR1-05-2040 | Fire Alarm system Testing works |  | 2026-09-30 → 2026-09-19 A (-11d) | 85% → 100% |
| HFR1-05-1990 | Light current devices installations & Final Inspection |  | 2026-09-20 → 2026-09-19 A (-1d) | 95% → 100% |
| HFR1-05-2080 | Comission of Panel boards ( cables and testing) |  | 2026-11-02 → 2026-10-15 (-18d) |  |
| HFR1-05-2100 | Comission of Lighting Fixtures Installations /LED lighting |  | 2026-11-07 → 2026-10-17 (-21d) |  |
| 3 | **Hunger -2** |  | 2026-12-02 → 2026-10-29 (-34d) |  |
| 4 | **Architectural** |  | 2026-10-25 → 2026-10-11 (-14d) |  |
| HFR1-05-1520 | Finishes floor Installation |  | 2026-09-22 → 2026-09-17 A (-5d) | 95% → 100% |
| HFR1-05-1530 | External Paint Touch-up & Inspection |  |  | 85% → 90% |
| HFR1-05-1480 | External Paint Primer + Final Coat |  | 2026-09-24 → 2026-10-01 (+7d) | 85% → 90% |
| HFR1-05-1510 | Cladding |  | 2026-10-01 → 2026-09-16 A (-15d) | 95% → 100% |
| HFR1-05-1490 | Epoxy Paint |  | 2026-10-04 → 2026-09-15 A (-19d) | 85% → 100% |
| HFR1-05-1450 | Paint Primer + Putty + Final Coat INSIDE |  | 2026-09-26 → 2026-10-03 (+7d) | 70% → 90% |
| HFR1-05-1570 | Specialites Fittings |  | 2026-10-25 → 2026-10-11 (-14d) | 95% → 90% |
| HFR1-05-1560 | Signage Layout & Marking Locations |  | 2026-10-15 → 2026-09-21 A (-24d) | 45% → 100% |
| 5 | **MEP WORKS** |  | 2026-12-02 → 2026-10-29 (-34d) |  |
| 1 | **Plumping-FIRE-HVAC** |  | 2026-12-02 → 2026-10-29 (-34d) |  |
| HFR1-05-1790 | Testing plumping system & Final Inspection |  | 2026-11-12 → 2026-10-11 (-32d) |  |
| HFR1-05-1800 | Fire Fighting Testing (Hydrostatic Test) & Final Inspection |  | 2026-12-02 → 2026-10-29 (-34d) | 90% → 95% |
| HFR1-05-1650 | Water sprinkles |  | 2026-09-28 → 2026-09-15 A (-13d) | 90% → 100% |
| 2 | **Electrical Works** |  | 2026-10-20 → 2026-10-01 (-19d) |  |
| HFR1-05-2210 | Power System and lighting and lightcurrent Testing (Continuity + Insulation) & Final Inspection |  | 2026-10-06 → 2026-09-24 (-12d) |  |
| HFR1-05-2180 | Fire Alarm system Testing works |  | 2026-09-29 → 2026-09-17 A (-12d) | 90% → 100% |
| HFR1-05-2130 | Light current devices installations & Final Inspection |  | 2026-09-21 → 2026-09-19 A (-2d) | 95% → 100% |
| HFR1-05-2220 | Comission of Panel boards ( cables and testing) |  | 2026-10-13 → 2026-09-30 (-13d) |  |
| HFR1-05-2240 | Comission of Lighting Fixtures Installations /LED lighting |  | 2026-10-20 → 2026-10-01 (-19d) |  |
| 9 | **Mosque -elec room-Toilets Works** |  | 2026-11-14 → 2026-10-11 (-34d) |  |
| 4 | **Architectural** |  | 2026-11-14 → 2026-10-11 (-34d) |  |
| 1 | **Finishes** |  | 2026-10-15 → 2026-10-11 (-4d) |  |

| ID | Task | Start | Finish | Complete |
| --- | --- | --- | --- | --- |
| HFR1-05-4000 | Paint Primer + Putty + Final Coat INSIDE |  | 2026-10-04 → 2026-10-05 (+1d) | 95% → 90% |
| HFR1-05-4010 | Internal Paint Touch-up & Inspection INSIDE |  | 2026-10-04 → 2026-09-17 A (-17d) | 95% → 100% |
| HFR1-05-3900 | External Paint Surface Preparation |  | 2026-09-28 → 2026-09-29 (+1d) | 95% → 90% |
| HFR1-05-4120 | External Paint Primer + Final Coat |  | 2026-10-10 → 2026-10-05 (-5d) | 90% → 95% |
| HFR1-05-4230 | External Paint Touch-up & Inspection |  | 2026-10-15 → 2026-10-11 (-4d) | 90% → 95% |
| HFR1-05-3860 | external Paint Surface Preparation INSIDE |  | 2026-09-28 → 2026-09-15 A (-13d) | 95% → 100% |
| HFR1-05-3490 | granite Insulation (extruded polystyrene) |  | 2026-09-21 → 2026-09-15 A (-6d) | 90% → 100% |
| HFR1-05-3970 | polyisocynurate cover board |  | 2026-09-28 → 2026-09-17 A (-11d) | 90% → 100% |
| HFR1-05-4090 | 50mm thk loose gravel toppings |  | 2026-09-27 → 2026-09-16 A (-11d) | 40% → 100% |
| HFR1-05-4020 | Supply and install carpet rolls | 2026-09-22 → 2026-09-19 A (-3d) | 2026-09-28 → 2026-09-29 (+1d) | 0% → 30% |
| 2 | **Final installation works** |  | 2026-11-14 → 2026-10-05 (-40d) |  |
| HFR1-05-4360 | Wood skirting works |  | 2026-10-29 → 2026-09-14 A (-45d) | 95% → 100% |
| HFR1-05-4250 | signs for toilets & prayer room |  | 2026-11-14 → 2026-09-19 A (-56d) | 50% → 100% |
| HFR1-05-4300 | Mosque Arch Carpet | 2026-10-05 → 2026-09-19 A (-16d) | 2026-10-10 → 2026-10-05 (-5d) | 0% → 30% |
| 1 | **Electromecanic** |  | 2026-10-05 → 2026-09-29 (-6d) |  |
| HFR1-05-3830 | Exasut fans |  | 2026-09-29 → 2026-09-17 A (-12d) | 80% → 100% |
| HFR1-05-3930 | Plumping fixtures |  | 2026-10-05 → 2026-09-29 (-6d) |  |
| 4 | **Pump room** |  | 2026-09-27 → 2026-10-04 (+7d) |  |
| 1 | **Civil works** |  | 2026-09-27 → 2026-10-04 (+7d) |  |
| HFR1-05-3270 | install galvanized steel fence |  | 2026-09-27 → 2026-10-04 (+7d) |  |
| HFR1-05-3240 | steel fence gate | 2026-09-16 → 2026-09-17 A (+1d) | 2026-09-22 → 2026-09-30 (+8d) | 0% → 40% |
| HFR1-05-3780 | Testing firefighting |  | 2026-09-20 A | 90% → 100% |
| 7 | **External WORKS-MEP** |  | 2026-10-03 → 2026-09-24 (-9d) |  |
| 1 | **Electric** |  | 2026-10-03 → 2026-09-24 (-9d) |  |
| HFR1-05-4150 | Street Lighting Testing (Megger + Lighting Test) & Final Inspection |  | 2026-10-03 → 2026-09-24 (-9d) | 90% → 85% |
| 5 | **External Works landscape** |  | 2026-12-15 → 2026-10-22 (-54d) |  |
| HFR1-05-3610 | ROAD execute subgrade layer including Watering and compaction |  | 2026-11-09 → 2026-09-14 A (-56d) | 95% → 100% |
| HFR1-05-4560 | Concrete Works external steps |  | 2026-12-14 → 2026-09-17 A (-88d) | 90% → 100% |
| HFR1-05-4550 | ROAD subgrade laye Interlocking Paving Blocks |  | 2026-12-15 → 2026-09-14 A (-92d) | 90% → 100% |
| HFR1-05-4500 | ROAD InterlockWalkway -pedestrian interlocking block pavers |  | 2026-12-15 → 2026-09-17 A (-89d) | 90% → 100% |
| HFR1-05-4480 | ROAD interlocking block pavers |  | 2026-12-15 → 2026-09-16 A (-90d) | 95% → 100% |
| HFR1-05-4510 | ROAD Interlock install concrete parking bumpers |  | 2026-12-14 → 2026-10-22 (-53d) | 90% → 80% |
| HFR1-05-4570 | Outdoor Granite works |  | 2026-12-14 → 2026-09-21 A (-84d) | 70% → 100% |
| HFR1-05-3990 | ROAD Application of prime coat |  | 2026-11-21 → 2026-09-21 A (-61d) | 60% → 100% |
| HFR1-05-4140 | ROAD execute bituminous base course asphalt layer |  | 2026-11-26 → 2026-09-16 A (-71d) | 80% → 100% |
| HFR1-05-4440 | ROAD Bituminous Wearing Course Asphalt |  | 2026-12-14 → 2026-09-16 A (-89d) | 80% → 100% |
| HFR1-05-4320 | ROAD Laying bituminous second asphalt base layer |  | 2026-12-02 → 2026-09-16 A (-77d) | 40% → 100% |
| HFR1-05-4530 | ROAD single I.P.E. post Road signs-Asphalt install traffic signs |  | 2026-12-14 → 2026-10-22 (-53d) |  |
| HFR1-05-4390 | ROADTack Coat (RC2) | 2026-12-03 → 2026-09-17 A (-77d) | 2026-12-08 → 2026-10-17 (-52d) | 0% → 95% |
| HFR1-05-4520 | ROAD Asphalt Reflective Road Markings | 2026-12-09 → 2026-09-17 A (-83d) | 2026-12-14 → 2026-10-22 (-53d) | 0% → 60% |
| HFR1-05-4540 | ROAD Road Marking thermoplastic traffic lines | 2026-12-08 → 2026-09-17 A (-82d) | 2026-12-14 → 2026-10-22 (-53d) | 0% → 50% |
| 10 | **Testing and comissiong** |  | 2026-12-28 → 2026-10-29 (-60d) |  |
| 1 | **Testing and comissiong** |  | 2026-12-28 → 2026-10-29 (-60d) |  |
| HFR1-05-4600 | Test For Water Utilities |  | 2026-09-30 → 2026-09-24 (-6d) | 95% → 85% |
| HFR1-05-4430 | Test For Pump Room |  | 2026-11-03 → 2026-10-11 (-23d) |  |
| HFR1-05-4630 | Test For Electrical Works |  | 2026-11-21 → 2026-10-29 (-23d) | 75% → 85% |
| HFR1-05-4420 | Test For Roads |  | 2026-12-28 → 2026-10-29 (-60d) | 80% → 90% |
| 11 | **Close Out** | 2026-11-22 → 2026-09-15 (-68d) | 2026-11-29 → 2026-11-07 (-22d) |  |
| HFR1-05-4680 | As-Built Documentation Final Submission | 2026-11-22 → 2026-09-15 A (-68d) | 2026-11-28 → 2026-11-05 (-23d) |  |
| HFR1-05-4690 | O&M Manuals and Warranties Final Submission | 2026-11-22 → 2026-09-16 A (-67d) | 2026-11-26 → 2026-11-04 (-22d) |  |
| HFR1-05-4700 | Final Handover MODON Inspection & Approval | 2026-11-22 → 2026-09-19 A (-64d) | 2026-11-29 → 2026-11-07 (-22d) |  |
